# Programa de Modernización del AIES ES-L1173

Schedule from MS Project XML, 2026-02-02 to 2030-04-01.

## Calendars

- Lunes a viernes 08:00-17:00: Mon-Fri 08:00-12:00, 13:00-17:00; Sat-Sun off.

## Schedule

| ID | WBS | Task | Duration | Start | Finish | Predecessors | OPS_TaskDurationUnit |
| --- | --- | --- | --- | --- | --- | --- | --- |
| 1 | 1 | **Obras y adecuaciones** | 835d | 2026-05-18 | 2029-07-27 |  | days |
| 2 | 1.1 | **Diseños de las obras aprobados** | 338d | 2026-05-18 | 2027-09-01 |  | days |
| 3 | 1.1.1 | **Diseños de la terminal revisados y aprobados** | 338d | 2026-05-18 | 2027-09-01 |  | days |
| 4 | 1.1.1-01 | Revisar técnicamente el expediente de diseño de la terminal (planos, especificaciones y cantidades) | 31d | 2026-05-18 | 2026-06-29 | 242 | days |
| 5 | 1.1.1-02 | Ajustar los diseños y el presupuesto de la terminal con la firma diseñadora (FIDS, CUTE, puentes de abordaje y observaciones de la revisión) | 32d | 2026-06-30 | 2026-08-12 | 4 | days |
| 6 | 1.1.1-03 | Revisar la coordinación del modelo BIM de la terminal con los planos y las especificaciones | 16d | 2026-07-22 | 2026-08-12 | 4SS+10d, 5FF | days |
| 7 | 1.1.1-04 | Aprobar el expediente de diseño de la terminal | 11d | 2026-09-04 | 2026-09-18 | 5, 6, 55, 56 | days |
| 8 | 1.1.1-05 | Emitir la no objeción del BID a las especificaciones técnicas y los planos de la licitación de la terminal | 6d | 2026-09-21 | 2026-09-28 | 7 | days |
| 9 | 1.1.1-06 | Elaborar el diseño final de la fachada sur de la terminal (tres salas de espera y sus puentes de abordaje) en el modelo BIM | 62d | 2027-05-10 | 2027-08-03 | 311FS+10d | days |
| 10 | 1.1.1-07 | Revisar con la supervisión el diseño de la fachada sur y validar su integración con el diseño de la fachada norte | 16d | 2027-08-04 | 2027-08-25 | 9, 124 | days |
| 11 | 1.1.1-08 | Aprobar el diseño de la fachada sur de la terminal | 5d | 2027-08-26 | 2027-09-01 | 10 | days |
| 12 | 1.1.2 | **Diseños de plataformas y calle Foxtrot revisados y aprobados** | 127d | 2026-05-18 | 2026-11-10 |  | days |
| 13 | 1.1.2-01 | Realizar sondeos geotécnicos en las tres posiciones remotas y verificar el diseño de pavimentos | 32d | 2026-05-18 | 2026-06-30 | 242 | days |
| 14 | 1.1.2-02 | Revisar técnicamente los diseños de plataformas, calle Foxtrot, drenaje y ayudas visuales | 31d | 2026-06-30 | 2026-08-11 | 4, 242 | days |
| 15 | 1.1.2-03 | Revisar con la AAC la geometría del lado aire y el plan de fases de las obras | 22d | 2026-08-12 | 2026-09-10 | 14 | days |
| 16 | 1.1.2-04 | Ajustar los diseños y el presupuesto de plataformas y calle Foxtrot con la firma diseñadora | 26d | 2026-09-11 | 2026-10-16 | 13, 15 | days |
| 17 | 1.1.2-05 | Aprobar los diseños de plataformas y calle Foxtrot | 11d | 2026-10-19 | 2026-11-02 | 16 | days |
| 18 | 1.1.2-06 | Emitir la no objeción del BID a las especificaciones técnicas y los planos de la licitación de plataformas y Foxtrot | 6d | 2026-11-03 | 2026-11-10 | 17 | days |
| 19 | 1.1.3 | **Diseños del estacionamiento y del sistema solar revisados y aprobados** | 71d | 2026-05-18 | 2026-08-24 |  | days |
| 20 | 1.1.3-01 | Revisar técnicamente el expediente de diseño del estacionamiento (estructura, circulaciones y accesibilidad universal) | 32d | 2026-05-18 | 2026-06-30 | 242 | days |
| 21 | 1.1.3-02 | Revisar el diseño del sistema fotovoltaico y su conexión eléctrica | 13d | 2026-06-01 | 2026-06-17 | 20SS+10d | days |
| 22 | 1.1.3-03 | Ajustar los diseños y el presupuesto del estacionamiento con la firma diseñadora | 22d | 2026-07-01 | 2026-07-30 | 20, 21 | days |
| 23 | 1.1.3-04 | Aprobar el expediente de diseño del estacionamiento | 11d | 2026-07-31 | 2026-08-14 | 22 | days |
| 24 | 1.1.3-05 | Emitir la no objeción del BID a las especificaciones técnicas y los planos de la licitación del estacionamiento | 6d | 2026-08-17 | 2026-08-24 | 23 | days |

Notes:
- 3: Ejecutado por el personal de la UEP, sin costo adicional en la línea base.
- 4: Fase: Planificación. Responsable: Especialista en ingeniería aeroportuaria. PERT: O 20, M 30, P 45 días laborables; De = 30.8. Técnica: Juicio de expertos.
- 5: Fase: Planificación. Responsable: Firma consultora. PERT: O 20, M 30, P 50 días laborables; De = 31.7. Técnica: Juicio de expertos.
- 6: Fase: Planificación. Responsable: Especialista en ingeniería aeroportuaria. PERT: O 10, M 15, P 25 días laborables; De = 15.8. Técnica: Juicio de expertos.
- 7: Fase: Planificación. Responsable: CEPA. PERT: O 5, M 10, P 20 días laborables; De = 10.8. Técnica: Juicio de expertos.
- 8: Fase: Planificación. Responsable: BID. PERT: O 3, M 5, P 10 días laborables; De = 5.5. Técnica: Dato del programa.
- 9: Fase: Ejecución. Responsable: Contratista de obra. PERT: O 40, M 60, P 90 días laborables; De = 61.7. Técnica: Juicio de expertos.
- 10: Fase: Monitoreo y control. Responsable: Firma de supervisión. PERT: O 10, M 15, P 25 días laborables; De = 15.8. Técnica: Juicio de expertos.
- 11: Fase: Planificación. Responsable: CEPA. PERT: O 3, M 5, P 8 días laborables; De = 5.2. Técnica: Juicio de expertos.
- 12: Ejecutado por el personal de la UEP, sin costo adicional en la línea base.
- 13: Fase: Planificación. Responsable: Firma consultora. PERT: O 20, M 30, P 50 días laborables; De = 31.7. Técnica: Juicio de expertos.
- 14: Fase: Planificación. Responsable: Especialista en ingeniería aeroportuaria. PERT: O 20, M 30, P 45 días laborables; De = 30.8. Técnica: Juicio de expertos.
- 15: Fase: Planificación. Responsable: AAC. PERT: O 10, M 20, P 40 días laborables; De = 21.7. Técnica: Juicio de expertos.
- 16: Fase: Planificación. Responsable: Firma consultora. PERT: O 15, M 25, P 40 días laborables; De = 25.8. Técnica: Juicio de expertos.
- 17: Fase: Planificación. Responsable: CEPA. PERT: O 5, M 10, P 20 días laborables; De = 10.8. Técnica: Juicio de expertos.
- 18: Fase: Planificación. Responsable: BID. PERT: O 3, M 5, P 10 días laborables; De = 5.5. Técnica: Dato del programa.
- 19: Ejecutado por el personal de la UEP, sin costo adicional en la línea base.
- 20: Fase: Planificación. Responsable: Especialista en ingeniería aeroportuaria. PERT: O 25, M 30, P 45 días laborables; De = 31.7. Técnica: Juicio de expertos.
- 21: Fase: Planificación. Responsable: Especialista en ingeniería aeroportuaria. PERT: O 8, M 12, P 20 días laborables; De = 12.7. Técnica: Juicio de expertos.
- 22: Fase: Planificación. Responsable: Firma consultora. PERT: O 15, M 20, P 35 días laborables; De = 21.7. Técnica: Juicio de expertos.
- 23: Fase: Planificación. Responsable: CEPA. PERT: O 5, M 10, P 20 días laborables; De = 10.8. Técnica: Juicio de expertos.
- 24: Fase: Planificación. Responsable: BID. PERT: O 3, M 5, P 10 días laborables; De = 5.5. Técnica: Dato del programa.

| ID | WBS | Task | Duration | Start | Finish | Predecessors | OPS_TaskDurationUnit |
| --- | --- | --- | --- | --- | --- | --- | --- |
| 25 | 1.1.4 | **Diseños del SSEI revisados y aprobados** | 70d | 2026-07-01 | 2026-10-06 |  | days |
| 26 | 1.1.4-01 | Revisar técnicamente el diseño del edificio del SSEI y de sus vías de acceso | 21d | 2026-07-01 | 2026-07-29 | 20, 242 | days |
| 27 | 1.1.4-02 | Validar con el SSEI y la AAC el emplazamiento, los tiempos de respuesta y la continuidad del servicio | 16d | 2026-07-30 | 2026-08-20 | 26 | days |
| 28 | 1.1.4-03 | Ajustar el diseño del SSEI con la firma diseñadora | 16d | 2026-08-21 | 2026-09-11 | 27 | days |
| 29 | 1.1.4-04 | Aprobar el diseño del SSEI | 11d | 2026-09-14 | 2026-09-28 | 28 | days |
| 30 | 1.1.4-05 | Emitir la no objeción del BID a las especificaciones técnicas y los planos de la licitación del SSEI | 6d | 2026-09-29 | 2026-10-06 | 29 | days |
| 31 | 1.2 | **Terminal de pasajeros ampliada** | 677d | 2026-08-13 | 2029-03-16 |  | days |
| 32 | 1.2.1 | **Estructura y envolvente de la terminal construidas** | 278d | 2027-05-27 | 2028-06-19 |  | days |
| 33 | 1.2.1-01 | Movilizar al contratista e instalar cerramientos, accesos y obras provisionales con la terminal en operación | 31d | 2027-05-27 | 2027-07-08 | 8, 124SS+5d, 139, 289, 311FS+10d, 336, 284 | days |
| 34 | 1.2.1-02 | Ejecutar la demolición, el movimiento de tierra y la cimentación de la terminal | 78d | 2027-07-09 | 2027-10-26 | 33 | days |
| 35 | 1.2.1-03 | Construir la estructura de concreto de los niveles 1 a 3 de la terminal | 133d | 2027-09-03 | 2028-03-07 | 34SS+40d | days |
| 36 | 1.2.1-04 | Montar la estructura metálica y la cubierta de la terminal | 77d | 2028-01-14 | 2028-05-01 | 35SS+95d | days |
| 37 | 1.2.1-05 | Instalar las fachadas de vidrio y los cerramientos exteriores de la terminal | 82d | 2028-02-25 | 2028-06-19 | 36SS+30d, 11 | days |
| 38 | 1.2.2 | **Salas de espera, circulación y áreas de apoyo terminadas** | 162d | 2028-03-10 | 2028-10-23 |  | days |
| 39 | 1.2.2-01 | Construir las divisiones, la mampostería liviana y los cielos de los tres niveles | 96d | 2028-03-10 | 2028-07-21 | 36SS+40d | days |
| 40 | 1.2.2-02 | Aplicar los acabados de pisos y paredes de las seis salas de espera, los pasillos, los locales y el salón VIP | 107d | 2028-05-19 | 2028-10-16 | 37SS+30d, 39SS+50d | days |
| 41 | 1.2.2-03 | Integrar la ampliación con la terminal de la Etapa 1 y habilitar las circulaciones de pasajeros | 46d | 2028-08-21 | 2028-10-23 | 40FF+5d | days |
| 42 | 1.2.3 | **Instalaciones eléctricas, hidráulicas, climatización y contra incendio recibidas** | 192d | 2028-02-25 | 2028-11-20 |  | days |
| 43 | 1.2.3-01 | Instalar las redes eléctricas, de agua, de drenaje y los ductos de climatización por nivel | 116d | 2028-02-25 | 2028-08-04 | 35SS+60d, 39FF+10d | days |
| 44 | 1.2.3-02 | Instalar la subestación, los tableros, la planta de emergencia y los equipos de climatización | 78d | 2028-05-02 | 2028-08-17 | 36, 43SS+40d | days |
| 45 | 1.2.3-03 | Instalar la detección y supresión de incendios, la voz y datos y el control de acceso | 72d | 2028-05-11 | 2028-08-18 | 39FF+20d, 43SS+50d | days |
| 46 | 1.2.3-04 | Realizar las pruebas, el balanceo y la puesta en marcha de las instalaciones de la terminal | 52d | 2028-09-08 | 2028-11-20 | 40SS+80d, 44, 45 | days |
| 47 | 1.2.4 | **Puentes de abordaje, mobiliario y equipos instalados** | 402d | 2027-09-02 | 2029-03-16 |  | days |
| 48 | 1.2.4-01 | Elaborar y aprobar los planos de taller de los seis puentes de abordaje | 42d | 2027-09-02 | 2027-10-29 | 33FS+30d, 11 | days |
| 49 | 1.2.4-02 | Fabricar y entregar en sitio los seis puentes de abordaje | 132d | 2027-11-01 | 2028-05-02 | 48 | days |
| 50 | 1.2.4-03 | Instalar y conectar los seis puentes de abordaje a la terminal y a la plataforma | 52d | 2028-10-24 | 2029-01-03 | 37, 49, 67 | days |
| 51 | 1.2.4-04 | Instalar el mobiliario, los escáneres de seguridad y los sistemas de información de vuelo | 37d | 2028-09-29 | 2028-11-20 | 40FF+25d | days |
| 52 | 1.2.4-05 | Probar los equipos, capacitar al personal de CEPA y entregar los manuales | 31d | 2029-01-04 | 2029-02-15 | 46, 50, 51 | days |
| 53 | 1.2.4-06 | Realizar las pruebas integradas de operación de la terminal con las aerolíneas y las autoridades | 21d | 2029-02-16 | 2029-03-16 | 41, 52, 57, 58, 68 | days |

Notes:
- 25: Ejecutado por el personal de la UEP, sin costo adicional en la línea base.
- 26: Fase: Planificación. Responsable: Especialista en ingeniería aeroportuaria. PERT: O 15, M 20, P 30 días laborables; De = 20.8. Técnica: Juicio de expertos.
- 27: Fase: Planificación. Responsable: AAC. PERT: O 8, M 15, P 30 días laborables; De = 16.3. Técnica: Juicio de expertos.
- 28: Fase: Planificación. Responsable: Firma consultora. PERT: O 10, M 15, P 25 días laborables; De = 15.8. Técnica: Juicio de expertos.
- 29: Fase: Planificación. Responsable: CEPA. PERT: O 5, M 10, P 20 días laborables; De = 10.8. Técnica: Juicio de expertos.
- 30: Fase: Planificación. Responsable: BID. PERT: O 3, M 5, P 10 días laborables; De = 5.5. Técnica: Dato del programa.
- 32: Costo en la línea base: US$ 31.943 millones, de los cuales US$ 2.238 millones son contingencia.
- 33: Fase: Ejecución. Responsable: Contratista de obra. PERT: O 20, M 30, P 45 días laborables; De = 30.8. Técnica: Juicio de expertos.
- 34: Fase: Ejecución. Responsable: Contratista de obra. PERT: O 55, M 75, P 110 días laborables; De = 77.5. Técnica: Paramétrica.
- 35: Fase: Ejecución. Responsable: Contratista de obra. PERT: O 105, M 130, P 170 días laborables; De = 132.5. Técnica: Paramétrica.
- 36: Fase: Ejecución. Responsable: Contratista de obra. PERT: O 55, M 75, P 105 días laborables; De = 76.7. Técnica: Paramétrica.
- 37: Fase: Ejecución. Responsable: Contratista de obra. PERT: O 60, M 80, P 110 días laborables; De = 81.7. Técnica: Paramétrica.
- 38: Costo en la línea base: US$ 9.391 millones, de los cuales US$ 0.522 millones son contingencia.
- 39: Fase: Ejecución. Responsable: Contratista de obra. PERT: O 70, M 95, P 125 días laborables; De = 95.8. Técnica: Paramétrica.
- 40: Fase: Ejecución. Responsable: Contratista de obra. PERT: O 80, M 105, P 140 días laborables; De = 106.7. Técnica: Paramétrica.
- 41: Fase: Ejecución. Responsable: Contratista de obra. PERT: O 25, M 45, P 70 días laborables; De = 45.8. Técnica: Juicio de expertos.
- 42: Costo en la línea base: US$ 21.760 millones, de los cuales US$ 1.210 millones son contingencia.
- 43: Fase: Ejecución. Responsable: Contratista de obra. PERT: O 85, M 115, P 150 días laborables; De = 115.8. Técnica: Paramétrica.
- 44: Fase: Ejecución. Responsable: Contratista de obra. PERT: O 55, M 75, P 110 días laborables; De = 77.5. Técnica: Juicio de expertos.
- 45: Fase: Ejecución. Responsable: Contratista de obra. PERT: O 50, M 70, P 100 días laborables; De = 71.7. Técnica: Juicio de expertos.
- 46: Fase: Ejecución. Responsable: Contratista de obra. PERT: O 30, M 50, P 80 días laborables; De = 51.7. Técnica: Juicio de expertos.
- 47: Costo en la línea base: US$ 20.218 millones, de los cuales US$ 1.628 millones son contingencia.
- 48: Fase: Ejecución. Responsable: Contratista de obra. PERT: O 25, M 40, P 65 días laborables; De = 41.7. Técnica: Juicio de expertos.
- 49: Fase: Ejecución. Responsable: Contratista de obra. PERT: O 100, M 130, P 170 días laborables; De = 131.7. Técnica: Análoga.
- 50: Fase: Ejecución. Responsable: Contratista de obra. PERT: O 35, M 50, P 75 días laborables; De = 51.7. Técnica: Análoga.
- 51: Fase: Ejecución. Responsable: Contratista de obra. PERT: O 25, M 35, P 55 días laborables; De = 36.7. Técnica: Juicio de expertos.
- 52: Fase: Ejecución. Responsable: Contratista de obra. PERT: O 20, M 30, P 45 días laborables; De = 30.8. Técnica: Juicio de expertos.
- 53: Fase: Ejecución. Responsable: CEPA. PERT: O 10, M 20, P 35 días laborables; De = 20.8. Técnica: Juicio de expertos.

| ID | WBS | Task | Duration | Start | Finish | Predecessors | OPS_TaskDurationUnit |
| --- | --- | --- | --- | --- | --- | --- | --- |
| 54 | 1.2.5 | **Accesibilidad universal, movilidad del cuidado y criterios de sostenibilidad incorporados** | 598d | 2026-08-13 | 2028-11-27 |  | days |
| 55 | 1.2.5-01 | Verificar en los planos aprobados los recorridos de accesibilidad universal y de movilidad del cuidado | 16d | 2026-08-13 | 2026-09-03 | 5 | days |
| 56 | 1.2.5-02 | Verificar en el diseño aprobado las metas EDGE Advanced de energía, agua y carbono incorporado | 16d | 2026-08-13 | 2026-09-03 | 5 | days |
| 57 | 1.2.5-03 | Verificar en obra la ejecución de los recorridos accesibles y de los espacios de movilidad del cuidado | 21d | 2028-10-02 | 2028-10-30 | 39SS+30d, 59FF+5d | days |
| 58 | 1.2.5-04 | Verificar en obra las medidas de eficiencia y reunir las evidencias para la auditoría EDGE | 19d | 2028-11-01 | 2028-11-27 | 46FF+5d, 60 | days |
| 59 | 1.2.5-05 | Instalar el transporte vertical accesible y la señalética de los recorridos accesibles y habilitar los espacios de movilidad del cuidado de la terminal | 62d | 2028-07-28 | 2028-10-23 | 55, 39SS+30d, 40FF+5d | days |
| 60 | 1.2.5-06 | Instalar y poner en marcha las medidas de eficiencia EDGE de la terminal (iluminación, griferías y accesorios de bajo consumo, aislamiento y control solar) | 46d | 2028-06-20 | 2028-08-22 | 56, 37, 44SS+20d | days |
| 61 | 1.3 | **Plataformas de contacto y remotas** | 375d | 2027-08-11 | 2029-01-16 |  | days |
| 62 | 1.3.1 | **Plataforma de posiciones de contacto construida** | 319d | 2027-08-11 | 2028-10-30 |  | days |
| 63 | 1.3.1-01 | Movilizar al contratista de plataformas y Foxtrot e instalar el cerramiento y los accesos del lado aire | 31d | 2027-08-11 | 2027-09-22 | 18, 131SS+5d, 141, 289, 323FS+10d, 348, 284 | days |
| 64 | 1.3.1-02 | Construir la terracería, el drenaje y la base de la fase 1 de la plataforma de contacto | 52d | 2027-09-23 | 2027-12-03 | 63 | days |
| 65 | 1.3.1-03 | Colar el pavimento de concreto de la fase 1 de la plataforma de contacto y sellar las juntas | 87d | 2027-12-06 | 2028-04-04 | 64 | days |
| 66 | 1.3.1-04 | Construir la terracería, el drenaje y la base de la fase 2 de la plataforma de contacto | 52d | 2028-04-12 | 2028-06-22 | 65FS+5d | days |
| 67 | 1.3.1-05 | Colar el pavimento de concreto de la fase 2 de la plataforma de contacto y sellar las juntas | 87d | 2028-06-23 | 2028-10-23 | 66 | days |
| 68 | 1.3.1-06 | Instalar los ductos y los servicios de apoyo a aeronaves de la plataforma de contacto | 26d | 2028-09-25 | 2028-10-30 | 67FF+5d | days |
| 69 | 1.3.2 | **Plataforma de posiciones remotas construida** | 135d | 2028-02-25 | 2028-08-31 |  | days |
| 70 | 1.3.2-01 | Demoler el SSEI antiguo y despejar la huella de la plataforma remota | 21d | 2028-02-25 | 2028-03-24 | 63, 119 | days |
| 71 | 1.3.2-02 | Ejecutar la terracería y la capa de suelo cemento de 30 cm de la plataforma remota | 42d | 2028-03-27 | 2028-05-23 | 70 | days |
| 72 | 1.3.2-03 | Modificar los canales existentes y construir el drenaje y las obras de paso de la plataforma remota | 31d | 2028-04-24 | 2028-06-05 | 71SS+20d | days |
| 73 | 1.3.2-04 | Colar el pavimento de concreto de 34 cm de la plataforma remota y sellar las juntas | 58d | 2028-06-06 | 2028-08-24 | 71, 72 | days |
| 74 | 1.3.2-05 | Construir el pavimento asfáltico de los márgenes y las zonas de apoyo terrestre de la plataforma remota | 26d | 2028-07-27 | 2028-08-31 | 73FF+5d | days |
| 75 | 1.3.3 | **Señalización, luces y torres de iluminación de plataforma instaladas** | 129d | 2028-07-20 | 2029-01-16 |  | days |
| 76 | 1.3.3-01 | Instalar los ductos, las torres de iluminación y las luces de la plataforma de contacto | 41d | 2028-09-25 | 2028-11-20 | 67FF+20d | days |
| 77 | 1.3.3-02 | Instalar las luces de borde y las torres de iluminación de la plataforma remota | 36d | 2028-07-20 | 2028-09-07 | 73FF+10d | days |
| 78 | 1.3.3-03 | Pintar la señalización horizontal de las plataformas nuevas | 13d | 2028-11-28 | 2028-12-14 | 67FS+25d, 74 | days |
| 79 | 1.3.3-04 | Probar las luces y la señalización de las plataformas nuevas | 11d | 2028-12-15 | 2028-12-29 | 76, 77, 78 | days |
| 80 | 1.3.3-05 | Autorizar la puesta en servicio de las plataformas nuevas | 12d | 2029-01-01 | 2029-01-16 | 79 | days |

Notes:
- 54: Costo en la línea base: US$ 0.288 millones, de los cuales US$ 0.016 millones son contingencia.
- 55: Fase: Planificación. Responsable: Especialista socioambiental. PERT: O 10, M 15, P 25 días laborables; De = 15.8. Técnica: Juicio de expertos.
- 56: Fase: Planificación. Responsable: Especialista socioambiental. PERT: O 10, M 15, P 25 días laborables; De = 15.8. Técnica: Juicio de expertos.
- 57: Fase: Ejecución. Responsable: Especialista socioambiental. PERT: O 15, M 20, P 30 días laborables; De = 20.8. Técnica: Juicio de expertos.
- 58: Fase: Ejecución. Responsable: Especialista socioambiental. PERT: O 12, M 18, P 28 días laborables; De = 18.7. Técnica: Juicio de expertos.
- 59: Fase: Ejecución. Responsable: Contratista de obra. PERT: O 45, M 60, P 85 días laborables; De = 61.7. Técnica: Juicio de expertos.
- 60: Fase: Ejecución. Responsable: Contratista de obra. PERT: O 30, M 45, P 65 días laborables; De = 45.8. Técnica: Juicio de expertos.
- 62: Costo en la línea base: US$ 7.312 millones, de los cuales US$ 0.342 millones son contingencia.
- 63: Fase: Ejecución. Responsable: Contratista de obra. PERT: O 20, M 30, P 45 días laborables; De = 30.8. Técnica: Juicio de expertos.
- 64: Fase: Ejecución. Responsable: Contratista de obra. PERT: O 40, M 50, P 70 días laborables; De = 51.7. Técnica: Paramétrica.
- 65: Fase: Ejecución. Responsable: Contratista de obra. PERT: O 65, M 85, P 115 días laborables; De = 86.7. Técnica: Paramétrica.
- 66: Fase: Ejecución. Responsable: Contratista de obra. PERT: O 40, M 50, P 70 días laborables; De = 51.7. Técnica: Juicio de expertos.
- 67: Fase: Ejecución. Responsable: Contratista de obra. PERT: O 65, M 85, P 115 días laborables; De = 86.7. Técnica: Paramétrica.
- 68: Fase: Ejecución. Responsable: Contratista de obra. PERT: O 18, M 25, P 40 días laborables; De = 26.3. Técnica: Juicio de expertos.
- 69: Costo en la línea base: US$ 5.024 millones, de los cuales US$ 0.228 millones son contingencia.
- 70: Fase: Ejecución. Responsable: Contratista de obra. PERT: O 12, M 20, P 35 días laborables; De = 21.2. Técnica: Juicio de expertos.
- 71: Fase: Ejecución. Responsable: Contratista de obra. PERT: O 30, M 40, P 60 días laborables; De = 41.7. Técnica: Paramétrica.
- 72: Fase: Ejecución. Responsable: Contratista de obra. PERT: O 20, M 30, P 45 días laborables; De = 30.8. Técnica: Juicio de expertos.
- 73: Fase: Ejecución. Responsable: Contratista de obra. PERT: O 40, M 55, P 90 días laborables; De = 58.3. Técnica: Paramétrica.
- 74: Fase: Ejecución. Responsable: Contratista de obra. PERT: O 18, M 25, P 40 días laborables; De = 26.3. Técnica: Paramétrica.
- 75: Costo en la línea base: US$ 1.114 millones, de los cuales US$ 0.150 millones son contingencia.
- 76: Fase: Ejecución. Responsable: Contratista de obra. PERT: O 28, M 40, P 60 días laborables; De = 41.3. Técnica: Juicio de expertos.
- 77: Fase: Ejecución. Responsable: Contratista de obra. PERT: O 25, M 35, P 50 días laborables; De = 35.8. Técnica: Juicio de expertos.
- 78: Fase: Ejecución. Responsable: Contratista de obra. PERT: O 8, M 12, P 20 días laborables; De = 12.7. Técnica: Juicio de expertos.
- 79: Fase: Ejecución. Responsable: Contratista de obra. PERT: O 6, M 10, P 18 días laborables; De = 10.7. Técnica: Juicio de expertos.
- 80: Fase: Ejecución. Responsable: AAC. PERT: O 5, M 10, P 25 días laborables; De = 11.7. Técnica: Juicio de expertos.

| ID | WBS | Task | Duration | Start | Finish | Predecessors | OPS_TaskDurationUnit |
| --- | --- | --- | --- | --- | --- | --- | --- |
| 81 | 1.4 | **Calle de rodaje Foxtrot** | 158d | 2028-04-05 | 2028-11-10 |  | days |
| 82 | 1.4.1 | **Pavimento y hombros de la calle Foxtrot construidos** | 104d | 2028-04-05 | 2028-08-28 |  | days |
| 83 | 1.4.1-01 | Ejecutar la terracería, la base granular y el drenaje de la calle Foxtrot | 52d | 2028-04-05 | 2028-06-15 | 63, 65 | days |
| 84 | 1.4.1-02 | Pavimentar con concreto asfáltico la calle Foxtrot y los hombros | 31d | 2028-06-16 | 2028-07-28 | 83 | days |
| 85 | 1.4.1-03 | Construir la intersección de Foxtrot con la calle de rodaje Alfa en ventanas de cierre nocturnas | 32d | 2028-07-14 | 2028-08-28 | 84SS+20d | days |
| 86 | 1.4.2 | **Señalización y balizamiento de la calle Foxtrot instalados** | 54d | 2028-08-29 | 2028-11-10 |  | days |
| 87 | 1.4.2-01 | Instalar los ductos, el cableado y las luces de borde y de los puntos de espera de la calle Foxtrot | 31d | 2028-08-29 | 2028-10-10 | 84SS+10d, 85 | days |
| 88 | 1.4.2-02 | Pintar la señalización horizontal de la calle Foxtrot | 10d | 2028-08-29 | 2028-09-11 | 85 | days |
| 89 | 1.4.2-03 | Probar el balizamiento y la iluminación de la calle Foxtrot | 11d | 2028-10-11 | 2028-10-25 | 87, 88 | days |
| 90 | 1.4.2-04 | Autorizar la puesta en servicio de la calle Foxtrot | 12d | 2028-10-26 | 2028-11-10 | 89 | days |
| 91 | 1.5 | **Estacionamiento y energía solar** | 337d | 2027-02-16 | 2028-05-31 |  | days |
| 92 | 1.5.1 | **Edificio de estacionamiento construido** | 296d | 2027-02-16 | 2028-04-04 |  | days |
| 93 | 1.5.1-01 | Movilizar al contratista e instalar los cerramientos y las obras provisionales del sitio del estacionamiento | 31d | 2027-02-16 | 2027-03-30 | 24, 126SS+5d, 138, 305FS+10d, 330, 284 | days |
| 94 | 1.5.1-02 | Construir la cimentación del edificio de estacionamiento | 72d | 2027-03-31 | 2027-07-08 | 93 | days |
| 95 | 1.5.1-03 | Construir la estructura de los niveles 1 y 2 del estacionamiento | 127d | 2027-05-12 | 2027-11-04 | 94SS+30d | days |
| 96 | 1.5.1-04 | Construir la estructura del nivel superior, la cubierta y las rampas del estacionamiento | 68d | 2027-09-08 | 2027-12-10 | 95SS+85d | days |
| 97 | 1.5.1-05 | Instalar las redes eléctricas, de iluminación, de drenaje y de protección contra incendios del estacionamiento | 111d | 2027-07-30 | 2027-12-31 | 95SS+55d, 96FF+15d | days |
| 98 | 1.5.1-06 | Construir los acabados, los ascensores, las rutas accesibles y la señalización vial del estacionamiento | 105d | 2027-11-10 | 2028-04-04 | 96SS+45d, 97FF+15d | days |
| 99 | 1.5.2 | **Sistemas de acceso, tráfico y áreas de alquiler instalados** | 77d | 2027-11-24 | 2028-03-09 |  | days |
| 100 | 1.5.2-01 | Instalar el control de acceso, las barreras, el cobro y la guía de plazas del estacionamiento | 52d | 2027-12-01 | 2028-02-10 | 98SS+15d | days |
| 101 | 1.5.2-02 | Habilitar las áreas de alquiler de vehículos y la gestión del tráfico interno | 41d | 2027-11-24 | 2028-01-19 | 98SS+10d | days |
| 102 | 1.5.2-03 | Probar los sistemas de acceso y tráfico y capacitar al personal de operación | 20d | 2028-02-11 | 2028-03-09 | 100, 101 | days |
| 103 | 1.5.3 | **Sistema de generación solar instalado** | 277d | 2027-05-11 | 2028-05-31 |  | days |
| 104 | 1.5.3-01 | Tramitar la autorización de interconexión del sistema solar con la red de distribución | 38d | 2027-05-11 | 2027-07-01 | 93SS+60d | days |
| 105 | 1.5.3-02 | Instalar las estructuras de soporte y los paneles fotovoltaicos en la cubierta del estacionamiento | 46d | 2028-02-08 | 2028-04-11 | 96SS+50d, 98FF+5d | days |
| 106 | 1.5.3-03 | Instalar los inversores, el cableado, los tableros y los medidores del sistema solar | 31d | 2028-03-14 | 2028-04-25 | 105FF+10d | days |
| 107 | 1.5.3-04 | Probar y energizar el sistema solar y entregar el estacionamiento con sus manuales | 26d | 2028-04-26 | 2028-05-31 | 98, 102, 104, 106 | days |

Notes:
- 82: Costo en la línea base: US$ 3.152 millones, de los cuales US$ 0.161 millones son contingencia.
- 83: Fase: Ejecución. Responsable: Contratista de obra. PERT: O 35, M 50, P 75 días laborables; De = 51.7. Técnica: Paramétrica.
- 84: Fase: Ejecución. Responsable: Contratista de obra. PERT: O 22, M 30, P 45 días laborables; De = 31.2. Técnica: Paramétrica.
- 85: Fase: Ejecución. Responsable: Contratista de obra. PERT: O 20, M 30, P 50 días laborables; De = 31.7. Técnica: Juicio de expertos.
- 86: Costo en la línea base: US$ 0.281 millones, de los cuales US$ 0.038 millones son contingencia.
- 87: Fase: Ejecución. Responsable: Contratista de obra. PERT: O 22, M 30, P 45 días laborables; De = 31.2. Técnica: Juicio de expertos.
- 88: Fase: Ejecución. Responsable: Contratista de obra. PERT: O 6, M 10, P 15 días laborables; De = 10.2. Técnica: Juicio de expertos.
- 89: Fase: Ejecución. Responsable: Contratista de obra. PERT: O 6, M 10, P 18 días laborables; De = 10.7. Técnica: Juicio de expertos.
- 90: Fase: Ejecución. Responsable: AAC. PERT: O 5, M 10, P 25 días laborables; De = 11.7. Técnica: Juicio de expertos.
- 92: Costo en la línea base: US$ 33.411 millones, de los cuales US$ 3.019 millones son contingencia.
- 93: Fase: Ejecución. Responsable: Contratista de obra. PERT: O 20, M 30, P 45 días laborables; De = 30.8. Técnica: Juicio de expertos.
- 94: Fase: Ejecución. Responsable: Contratista de obra. PERT: O 55, M 70, P 95 días laborables; De = 71.7. Técnica: Paramétrica.
- 95: Fase: Ejecución. Responsable: Contratista de obra. PERT: O 100, M 125, P 160 días laborables; De = 126.7. Técnica: Paramétrica.
- 96: Fase: Ejecución. Responsable: Contratista de obra. PERT: O 50, M 65, P 95 días laborables; De = 67.5. Técnica: Paramétrica.
- 97: Fase: Ejecución. Responsable: Contratista de obra. PERT: O 80, M 110, P 145 días laborables; De = 110.8. Técnica: Juicio de expertos.
- 98: Fase: Ejecución. Responsable: Contratista de obra. PERT: O 75, M 105, P 135 días laborables; De = 105.0. Técnica: Juicio de expertos.
- 99: Costo en la línea base: US$ 3.962 millones, de los cuales US$ 0.358 millones son contingencia.
- 100: Fase: Ejecución. Responsable: Contratista de obra. PERT: O 35, M 50, P 75 días laborables; De = 51.7. Técnica: Juicio de expertos.
- 101: Fase: Ejecución. Responsable: Contratista de obra. PERT: O 25, M 40, P 60 días laborables; De = 40.8. Técnica: Juicio de expertos.
- 102: Fase: Ejecución. Responsable: Contratista de obra. PERT: O 12, M 20, P 30 días laborables; De = 20.3. Técnica: Juicio de expertos.
- 103: Costo en la línea base: US$ 2.993 millones, de los cuales US$ 0.172 millones son contingencia.
- 104: Fase: Ejecución. Responsable: CEPA. PERT: O 20, M 35, P 70 días laborables; De = 38.3. Técnica: Juicio de expertos.
- 105: Fase: Ejecución. Responsable: Contratista de obra. PERT: O 30, M 45, P 65 días laborables; De = 45.8. Técnica: Paramétrica.
- 106: Fase: Ejecución. Responsable: Contratista de obra. PERT: O 20, M 30, P 45 días laborables; De = 30.8. Técnica: Juicio de expertos.
- 107: Fase: Ejecución. Responsable: Contratista de obra. PERT: O 15, M 25, P 40 días laborables; De = 25.8. Técnica: Juicio de expertos.

| ID | WBS | Task | Duration | Start | Finish | Predecessors | OPS_TaskDurationUnit |
| --- | --- | --- | --- | --- | --- | --- | --- |
| 108 | 1.6 | **SSEI reubicado y en operación** | 180d | 2027-06-18 | 2028-02-24 |  | days |
| 109 | 1.6.1 | **Edificio del SSEI y vías de acceso construidos** | 137d | 2027-06-18 | 2027-12-27 |  | days |
| 110 | 1.6.1-01 | Movilizar al contratista e instalar los cerramientos y los accesos del sitio del SSEI | 20d | 2027-06-18 | 2027-07-15 | 30, 133SS+5d, 140, 289, 317FS+10d, 342, 284 | days |
| 111 | 1.6.1-02 | Construir la cimentación y la estructura del edificio del SSEI | 51d | 2027-07-16 | 2027-09-24 | 110 | days |
| 112 | 1.6.1-03 | Construir la cubierta, los cerramientos y las instalaciones del edificio del SSEI | 56d | 2027-08-27 | 2027-11-12 | 111SS+30d | days |
| 113 | 1.6.1-04 | Construir las vías de acceso y de salida a la plataforma del SSEI | 41d | 2027-08-13 | 2027-10-08 | 111SS+20d | days |
| 114 | 1.6.1-05 | Instalar los acabados, los sistemas de alarma y comunicaciones y probar el edificio del SSEI | 41d | 2027-11-01 | 2027-12-27 | 112FS-10d, 113 | days |
| 115 | 1.6.2 | **SSEI en funcionamiento en la nueva ubicación** | 130d | 2027-08-27 | 2028-02-24 |  | days |
| 116 | 1.6.2-01 | Preparar el plan de traslado y de cobertura del servicio durante el traslado del SSEI | 21d | 2027-08-27 | 2027-09-24 | 112SS | days |
| 117 | 1.6.2-02 | Dar la conformidad a la cobertura de protección contra incendios durante el traslado del SSEI | 11d | 2027-09-27 | 2027-10-11 | 116 | days |
| 118 | 1.6.2-03 | Trasladar al personal y los vehículos del SSEI al edificio nuevo ya equipado | 9d | 2028-01-28 | 2028-02-09 | 117, 148, 121 | days |
| 119 | 1.6.2-04 | Realizar las pruebas de tiempo de respuesta y declarar en operación el SSEI nuevo | 11d | 2028-02-10 | 2028-02-24 | 118 | days |
| 120 | 1.6.2-05 | Suministrar e instalar el equipamiento del edificio nuevo del SSEI (equipos de rescate y de comunicaciones, mobiliario y talleres) | 31d | 2027-11-29 | 2028-01-10 | 114SS+20d | days |
| 121 | 1.6.2-06 | Probar el equipamiento del SSEI, capacitar al personal en su uso y entregar los manuales | 13d | 2028-01-11 | 2028-01-27 | 120, 114 | days |
| 122 | 1.7 | **Supervisión, PGAS de obra y recepción** | 652d | 2027-01-28 | 2029-07-27 |  | days |
| 123 | 1.7.1 | **Supervisión de la terminal y del estacionamiento ejecutada** | 647d | 2027-02-04 | 2029-07-27 |  | days |
| 124 | 1.7.1-01 | Movilizar a la firma de supervisión de la terminal | 11d | 2027-05-20 | 2027-06-03 | 336 | days |
| 125 | 1.7.1-02 | Supervisar la construcción de la terminal | 487d | 2027-06-04 | 2029-04-16 | 124 | days |
| 126 | 1.7.1-03 | Movilizar a la firma de supervisión del estacionamiento | 11d | 2027-02-04 | 2027-02-18 | 330 | days |
| 127 | 1.7.1-04 | Supervisar la construcción del estacionamiento y del sistema solar | 347d | 2027-02-19 | 2028-06-19 | 126 | days |
| 128 | 1.7.1-05 | Presentar el informe final de supervisión de la terminal | 16d | 2029-07-06 | 2029-07-27 | 149 | days |
| 129 | 1.7.1-06 | Presentar el informe final de supervisión del estacionamiento | 16d | 2028-08-17 | 2028-09-07 | 150 | days |
| 130 | 1.7.2 | **Supervisión de plataformas, calle Foxtrot y SSEI ejecutada** | 489d | 2027-06-11 | 2029-04-25 |  | days |
| 131 | 1.7.2-01 | Movilizar a la firma de supervisión de plataformas y calle Foxtrot | 11d | 2027-07-29 | 2027-08-12 | 348 | days |
| 132 | 1.7.2-02 | Supervisar la construcción de plataformas y de la calle Foxtrot | 386d | 2027-08-13 | 2029-02-02 | 131 | days |
| 133 | 1.7.2-03 | Movilizar a la firma de supervisión del SSEI | 9d | 2027-06-11 | 2027-06-23 | 342 | days |
| 134 | 1.7.2-04 | Supervisar la construcción del edificio del SSEI | 142d | 2027-06-24 | 2028-01-07 | 133 | days |
| 135 | 1.7.2-05 | Presentar el informe final de supervisión de plataformas y calle Foxtrot | 16d | 2029-04-04 | 2029-04-25 | 151 | days |
| 136 | 1.7.2-06 | Presentar el informe final de supervisión del SSEI | 13d | 2028-02-22 | 2028-03-09 | 152 | days |

Notes:
- 109: Costo en la línea base: US$ 5.339 millones, de los cuales US$ 0.717 millones son contingencia.
- 110: Fase: Ejecución. Responsable: Contratista de obra. PERT: O 12, M 20, P 30 días laborables; De = 20.3. Técnica: Juicio de expertos.
- 111: Fase: Ejecución. Responsable: Contratista de obra. PERT: O 35, M 50, P 70 días laborables; De = 50.8. Técnica: Juicio de expertos.
- 112: Fase: Ejecución. Responsable: Contratista de obra. PERT: O 40, M 55, P 75 días laborables; De = 55.8. Técnica: Juicio de expertos.
- 113: Fase: Ejecución. Responsable: Contratista de obra. PERT: O 28, M 40, P 55 días laborables; De = 40.5. Técnica: Juicio de expertos.
- 114: Fase: Ejecución. Responsable: Contratista de obra. PERT: O 28, M 40, P 55 días laborables; De = 40.5. Técnica: Juicio de expertos.
- 115: Costo en la línea base: US$ 0.281 millones, de los cuales US$ 0.038 millones son contingencia.
- 116: Fase: Planificación. Responsable: CEPA. PERT: O 12, M 20, P 35 días laborables; De = 21.2. Técnica: Juicio de expertos.
- 117: Fase: Ejecución. Responsable: AAC. PERT: O 5, M 10, P 20 días laborables; De = 10.8. Técnica: Juicio de expertos.
- 118: Fase: Ejecución. Responsable: CEPA. PERT: O 5, M 8, P 15 días laborables; De = 8.7. Técnica: Juicio de expertos.
- 119: Fase: Ejecución. Responsable: CEPA. PERT: O 5, M 10, P 20 días laborables; De = 10.8. Técnica: Juicio de expertos.
- 120: Fase: Ejecución. Responsable: Contratista de obra. PERT: O 20, M 30, P 45 días laborables; De = 30.8. Técnica: Juicio de expertos.
- 121: Fase: Ejecución. Responsable: Contratista de obra. PERT: O 8, M 12, P 20 días laborables; De = 12.7. Técnica: Juicio de expertos.
- 123: Costo en la línea base: US$ 5.058 millones, de los cuales US$ 0.464 millones son contingencia.
- 124: Fase: Ejecución. Responsable: Firma de supervisión. PERT: O 7, M 10, P 18 días laborables; De = 10.8. Técnica: Juicio de expertos.
- 125: Fase: Monitoreo y control. Responsable: Firma de supervisión. Nivel de esfuerzo: su duración se fijó para terminar con 1.7.4-01.
- 126: Fase: Ejecución. Responsable: Firma de supervisión. PERT: O 7, M 10, P 18 días laborables; De = 10.8. Técnica: Juicio de expertos.
- 127: Fase: Monitoreo y control. Responsable: Firma de supervisión. Nivel de esfuerzo: su duración se fijó para terminar con 1.7.4-02.
- 128: Fase: Cierre. Responsable: Firma de supervisión. PERT: O 10, M 15, P 25 días laborables; De = 15.8. Técnica: Juicio de expertos.
- 129: Fase: Cierre. Responsable: Firma de supervisión. PERT: O 10, M 15, P 25 días laborables; De = 15.8. Técnica: Juicio de expertos.
- 130: Costo en la línea base: US$ 0.918 millones, de los cuales US$ 0.084 millones son contingencia.
- 131: Fase: Ejecución. Responsable: Firma de supervisión. PERT: O 7, M 10, P 18 días laborables; De = 10.8. Técnica: Juicio de expertos.
- 132: Fase: Monitoreo y control. Responsable: Firma de supervisión. Nivel de esfuerzo: su duración se fijó para terminar con 1.7.4-03.
- 133: Fase: Ejecución. Responsable: Firma de supervisión. PERT: O 5, M 8, P 15 días laborables; De = 8.7. Técnica: Juicio de expertos.
- 134: Fase: Monitoreo y control. Responsable: Firma de supervisión. Nivel de esfuerzo: su duración se fijó para terminar con 1.7.4-04.
- 135: Fase: Cierre. Responsable: Firma de supervisión. PERT: O 10, M 15, P 25 días laborables; De = 15.8. Técnica: Juicio de expertos.
- 136: Fase: Cierre. Responsable: Firma de supervisión. PERT: O 8, M 12, P 20 días laborables; De = 12.7. Técnica: Juicio de expertos.

| ID | WBS | Task | Duration | Start | Finish | Predecessors | OPS_TaskDurationUnit |
| --- | --- | --- | --- | --- | --- | --- | --- |
| 137 | 1.7.3 | **PGAS de construcción implementado** | 594d | 2027-01-28 | 2029-05-08 |  | days |
| 138 | 1.7.3-01 | Revisar y aprobar el PGAS de construcción del contratista del estacionamiento | 13d | 2027-01-28 | 2027-02-15 | 282, 305 | days |
| 139 | 1.7.3-02 | Revisar y aprobar el PGAS de construcción del contratista de la terminal | 16d | 2027-04-26 | 2027-05-17 | 282, 311 | days |
| 140 | 1.7.3-03 | Revisar y aprobar el PGAS de construcción del contratista del SSEI | 9d | 2027-05-28 | 2027-06-09 | 282, 317 | days |
| 141 | 1.7.3-04 | Revisar y aprobar el PGAS de construcción del contratista de plataformas y Foxtrot | 13d | 2027-07-23 | 2027-08-10 | 282, 323 | days |
| 142 | 1.7.3-05 | Dar seguimiento al cumplimiento del PGAS durante las obras | 565d | 2027-02-16 | 2029-04-16 | 138 | days |
| 143 | 1.7.3-06 | Verificar el cierre de las instalaciones temporales y la restauración de los sitios de obra | 16d | 2029-04-17 | 2029-05-08 | 145, 146, 147, 148 | days |
| 144 | 1.7.4 | **Planos de obra ejecutada y actas de recepción aprobados** | 398d | 2027-12-28 | 2029-07-05 |  | days |
| 145 | 1.7.4-01 | Realizar la recepción provisional de la terminal y levantar la lista de pendientes | 21d | 2029-03-19 | 2029-04-16 | 53, 80 | days |
| 146 | 1.7.4-02 | Realizar la recepción provisional del estacionamiento y del sistema solar y levantar la lista de pendientes | 13d | 2028-06-01 | 2028-06-19 | 107 | days |
| 147 | 1.7.4-03 | Realizar la recepción provisional de las plataformas y de la calle Foxtrot y levantar la lista de pendientes | 13d | 2029-01-17 | 2029-02-02 | 80, 90 | days |
| 148 | 1.7.4-04 | Realizar la recepción provisional del edificio del SSEI y levantar la lista de pendientes | 9d | 2027-12-28 | 2028-01-07 | 114 | days |
| 149 | 1.7.4-05 | Verificar la subsanación de pendientes, recibir los planos de obra ejecutada y firmar el acta de recepción definitiva de la terminal | 58d | 2029-04-17 | 2029-07-05 | 145 | days |
| 150 | 1.7.4-06 | Verificar la subsanación de pendientes, recibir los planos de obra ejecutada y firmar el acta de recepción definitiva del estacionamiento y el sistema solar | 42d | 2028-06-20 | 2028-08-16 | 146 | days |
| 151 | 1.7.4-07 | Verificar la subsanación de pendientes, recibir los planos de obra ejecutada y firmar el acta de recepción definitiva de las plataformas y la calle Foxtrot | 42d | 2029-02-05 | 2029-04-03 | 147 | days |
| 152 | 1.7.4-08 | Verificar la subsanación de pendientes, recibir los planos de obra ejecutada y firmar el acta de recepción definitiva del edificio del SSEI | 31d | 2028-01-10 | 2028-02-21 | 148 | days |
| 153 | 2 | **Fortalecimiento institucional** | 603d | 2027-04-21 | 2029-08-10 |  | days |
| 154 | 2.1 | **Plan estratégico del sistema aeronáutico aprobado** | 120d | 2027-05-26 | 2027-11-09 |  | days |
| 155 | 2.1-01 | Elaborar el plan de trabajo y el informe inicial del plan estratégico | 11d | 2027-05-26 | 2027-06-09 | 357 | days |
| 156 | 2.1-02 | Elaborar el diagnóstico del sistema aeronáutico, su marco normativo y su infraestructura | 36d | 2027-06-10 | 2027-07-29 | 155 | days |
| 157 | 2.1-03 | Formular la visión, los lineamientos y el plan de acción y redactar el borrador del plan estratégico | 41d | 2027-07-30 | 2027-09-24 | 156 | days |
| 158 | 2.1-04 | Revisar el borrador del plan estratégico y consolidar las observaciones de CEPA y del BID | 13d | 2027-09-27 | 2027-10-13 | 157 | days |
| 159 | 2.1-05 | Incorporar las observaciones y entregar la versión final del plan estratégico | 11d | 2027-10-14 | 2027-10-28 | 158 | days |
| 160 | 2.1-06 | Aprobar el plan estratégico final y remitirlo al BID | 8d | 2027-10-29 | 2027-11-09 | 159 | days |

Notes:
- 137: Ejecutado por el personal de la UEP, sin costo adicional en la línea base.
- 138: Fase: Monitoreo y control. Responsable: Especialista socioambiental. PERT: O 8, M 12, P 20 días laborables; De = 12.7. Técnica: Juicio de expertos.
- 139: Fase: Monitoreo y control. Responsable: Especialista socioambiental. PERT: O 10, M 15, P 25 días laborables; De = 15.8. Técnica: Juicio de expertos.
- 140: Fase: Monitoreo y control. Responsable: Especialista socioambiental. PERT: O 5, M 8, P 15 días laborables; De = 8.7. Técnica: Juicio de expertos.
- 141: Fase: Monitoreo y control. Responsable: Especialista socioambiental. PERT: O 8, M 12, P 20 días laborables; De = 12.7. Técnica: Juicio de expertos.
- 142: Fase: Monitoreo y control. Responsable: Especialista socioambiental. Nivel de esfuerzo: su duración se fijó para terminar con 1.7.4-01, 1.7.4-02, 1.7.4-03, 1.7.4-04.
- 143: Fase: Cierre. Responsable: Especialista socioambiental. PERT: O 10, M 15, P 25 días laborables; De = 15.8. Técnica: Juicio de expertos.
- 144: Ejecutado por el personal de la UEP, sin costo adicional en la línea base.
- 145: Fase: Cierre. Responsable: Coordinador general de obra. PERT: O 12, M 20, P 35 días laborables; De = 21.2. Técnica: Juicio de expertos.
- 146: Fase: Cierre. Responsable: Coordinador general de obra. PERT: O 8, M 12, P 22 días laborables; De = 13.0. Técnica: Juicio de expertos.
- 147: Fase: Cierre. Responsable: Coordinador general de obra. PERT: O 8, M 12, P 22 días laborables; De = 13.0. Técnica: Juicio de expertos.
- 148: Fase: Cierre. Responsable: Coordinador general de obra. PERT: O 5, M 8, P 15 días laborables; De = 8.7. Técnica: Juicio de expertos.
- 149: Fase: Cierre. Responsable: Coordinador general de obra. PERT: O 40, M 55, P 85 días laborables; De = 57.5. Técnica: Juicio de expertos.
- 150: Fase: Cierre. Responsable: Coordinador general de obra. PERT: O 30, M 40, P 60 días laborables; De = 41.7. Técnica: Juicio de expertos.
- 151: Fase: Cierre. Responsable: Coordinador general de obra. PERT: O 30, M 40, P 60 días laborables; De = 41.7. Técnica: Juicio de expertos.
- 152: Fase: Cierre. Responsable: Coordinador general de obra. PERT: O 20, M 30, P 45 días laborables; De = 30.8. Técnica: Juicio de expertos.
- 154: Costo en la línea base: US$ 0.873 millones, de los cuales US$ 0.171 millones son contingencia.
- 155: Fase: Planificación. Responsable: Firma consultora. PERT: O 8, M 10, P 15 días laborables; De = 10.5. Técnica: Juicio de expertos.
- 156: Fase: Ejecución. Responsable: Firma consultora. PERT: O 25, M 35, P 50 días laborables; De = 35.8. Técnica: Juicio de expertos.
- 157: Fase: Ejecución. Responsable: Firma consultora. PERT: O 30, M 40, P 55 días laborables; De = 40.8. Técnica: Juicio de expertos.
- 158: Fase: Monitoreo y control. Responsable: Especialista de planificación y monitoreo. PERT: O 10, M 12, P 20 días laborables; De = 13.0. Técnica: Juicio de expertos.
- 159: Fase: Ejecución. Responsable: Firma consultora. PERT: O 8, M 10, P 15 días laborables; De = 10.5. Técnica: Juicio de expertos.
- 160: Fase: Cierre. Responsable: CEPA. PERT: O 5, M 7, P 12 días laborables; De = 7.5. Técnica: Juicio de expertos.

| ID | WBS | Task | Duration | Start | Finish | Predecessors | OPS_TaskDurationUnit |
| --- | --- | --- | --- | --- | --- | --- | --- |
| 161 | 2.2 | **Plan Maestro actualizado y funcionarios capacitados** | 316d | 2027-05-26 | 2028-08-09 |  | days |
| 162 | 2.2.1 | **Plan Maestro Aeroportuario actualizado y aprobado** | 260d | 2027-05-26 | 2028-05-23 |  | days |
| 163 | 2.2.1-01 | Elaborar el plan de trabajo y el informe inicial del Plan Maestro | 15d | 2027-05-26 | 2027-06-15 | 363 | days |
| 164 | 2.2.1-02 | Elaborar el inventario, el diagnóstico de instalaciones y el pronóstico de demanda | 77d | 2027-06-16 | 2027-09-30 | 163 | days |
| 165 | 2.2.1-03 | Determinar los requerimientos, evaluar alternativas y redactar el borrador del Plan Maestro con su plan de implementación y financiero | 109d | 2027-10-01 | 2028-03-01 | 157, 164 | days |
| 166 | 2.2.1-04 | Revisar el borrador del Plan Maestro y consolidar las observaciones de CEPA, la AAC y el BID | 27d | 2028-03-02 | 2028-04-07 | 165 | days |
| 167 | 2.2.1-05 | Incorporar las observaciones y las recomendaciones del estudio de conectividad y entregar la versión final del Plan Maestro | 21d | 2028-04-10 | 2028-05-08 | 166, 192 | days |
| 168 | 2.2.1-06 | Aprobar el Plan Maestro actualizado y entregarlo al BID | 11d | 2028-05-09 | 2028-05-23 | 160FF+10d, 167 | days |
| 169 | 2.2.2 | **Funcionarios capacitados en planificación, gestión y operación** | 115d | 2028-03-02 | 2028-08-09 |  | days |
| 170 | 2.2.2-01 | Preparar el programa, los materiales y la lista de participantes de la capacitación en planificación, gestión y operación | 21d | 2028-03-02 | 2028-03-30 | 165 | days |
| 171 | 2.2.2-02 | Impartir los cursos de planificación, gestión y operación aeroportuaria al menos a 21 funcionarios | 42d | 2028-05-24 | 2028-07-20 | 168, 170 | days |
| 172 | 2.2.2-03 | Aplicar las evaluaciones y los talleres de cierre a los participantes | 7d | 2028-07-21 | 2028-07-31 | 171 | days |
| 173 | 2.2.2-04 | Certificar a los funcionarios aprobados y registrar el indicador R2.1 | 7d | 2028-08-01 | 2028-08-09 | 172 | days |
| 174 | 2.3 | **Estrategia y capacitación BIM** | 146d | 2027-05-26 | 2027-12-15 |  | days |
| 175 | 2.3.1 | **Estrategia BIM aprobada** | 88d | 2027-05-26 | 2027-09-24 |  | days |
| 176 | 2.3.1-01 | Elaborar el plan de trabajo y el informe inicial de la estrategia BIM | 11d | 2027-05-26 | 2027-06-09 | 368 | days |
| 177 | 2.3.1-02 | Diagnosticar la madurez BIM de CEPA, sus procesos de diseño y sus herramientas | 21d | 2027-06-10 | 2027-07-08 | 176 | days |
| 178 | 2.3.1-03 | Formular la estrategia BIM (usos, roles, entorno común de datos y requisitos de información) y redactar el borrador | 30d | 2027-07-09 | 2027-08-19 | 177 | days |
| 179 | 2.3.1-04 | Revisar el borrador de la estrategia BIM y consolidar las observaciones de CEPA | 11d | 2027-08-20 | 2027-09-03 | 178 | days |
| 180 | 2.3.1-05 | Incorporar las observaciones y entregar la versión final de la estrategia BIM | 8d | 2027-09-06 | 2027-09-15 | 179 | days |
| 181 | 2.3.1-06 | Aprobar la estrategia BIM final | 7d | 2027-09-16 | 2027-09-24 | 180 | days |
| 182 | 2.3.2 | **Personal de ingeniería capacitado en BIM** | 65d | 2027-09-16 | 2027-12-15 |  | days |
| 183 | 2.3.2-01 | Preparar el programa y los materiales de la capacitación en BIM | 15d | 2027-09-16 | 2027-10-06 | 180 | days |
| 184 | 2.3.2-02 | Impartir los cursos de BIM al personal de ingeniería de CEPA | 36d | 2027-10-07 | 2027-11-25 | 181, 183 | days |
| 185 | 2.3.2-03 | Evaluar a los participantes en BIM | 7d | 2027-11-26 | 2027-12-06 | 184 | days |
| 186 | 2.3.2-04 | Entregar los materiales y el registro de la capacitación en BIM | 7d | 2027-12-07 | 2027-12-15 | 185 | days |

Notes:
- 162: Costo en la línea base: US$ 1.505 millones, de los cuales US$ 0.216 millones son contingencia.
- 163: Fase: Planificación. Responsable: Firma consultora. PERT: O 10, M 15, P 20 días laborables; De = 15.0. Técnica: Análoga.
- 164: Fase: Ejecución. Responsable: Firma consultora. PERT: O 60, M 75, P 100 días laborables; De = 76.7. Técnica: Análoga.
- 165: Fase: Ejecución. Responsable: Firma consultora. PERT: O 85, M 110, P 130 días laborables; De = 109.2. Técnica: Análoga.
- 166: Fase: Monitoreo y control. Responsable: Especialista de planificación y monitoreo. PERT: O 20, M 25, P 40 días laborables; De = 26.7. Técnica: Juicio de expertos.
- 167: Fase: Ejecución. Responsable: Firma consultora. PERT: O 15, M 20, P 30 días laborables; De = 20.8. Técnica: Juicio de expertos.
- 168: Fase: Cierre. Responsable: CEPA. PERT: O 5, M 10, P 20 días laborables; De = 10.8. Técnica: Juicio de expertos.
- 169: Costo en la línea base: US$ 0.034 millones, de los cuales US$ 0.004 millones son contingencia.
- 170: Fase: Planificación. Responsable: Firma consultora. PERT: O 15, M 20, P 30 días laborables; De = 20.8. Técnica: Juicio de expertos.
- 171: Fase: Ejecución. Responsable: Firma consultora. PERT: O 30, M 40, P 60 días laborables; De = 41.7. Técnica: Paramétrica.
- 172: Fase: Monitoreo y control. Responsable: Firma consultora. PERT: O 5, M 7, P 10 días laborables; De = 7.2. Técnica: Juicio de expertos.
- 173: Fase: Cierre. Responsable: Especialista de planificación y monitoreo. PERT: O 5, M 7, P 10 días laborables; De = 7.2. Técnica: Juicio de expertos.
- 175: Costo en la línea base: US$ 0.205 millones, de los cuales US$ 0.024 millones son contingencia.
- 176: Fase: Planificación. Responsable: Firma consultora. PERT: O 8, M 10, P 15 días laborables; De = 10.5. Técnica: Juicio de expertos.
- 177: Fase: Ejecución. Responsable: Firma consultora. PERT: O 15, M 20, P 30 días laborables; De = 20.8. Técnica: Juicio de expertos.
- 178: Fase: Ejecución. Responsable: Firma consultora. PERT: O 20, M 30, P 40 días laborables; De = 30.0. Técnica: Juicio de expertos.
- 179: Fase: Monitoreo y control. Responsable: Especialista en ingeniería aeroportuaria. PERT: O 8, M 10, P 15 días laborables; De = 10.5. Técnica: Juicio de expertos.
- 180: Fase: Ejecución. Responsable: Firma consultora. PERT: O 6, M 8, P 12 días laborables; De = 8.3. Técnica: Juicio de expertos.
- 181: Fase: Cierre. Responsable: CEPA. PERT: O 5, M 7, P 10 días laborables; De = 7.2. Técnica: Juicio de expertos.
- 182: Costo en la línea base: US$ 0.088 millones, de los cuales US$ 0.010 millones son contingencia.
- 183: Fase: Planificación. Responsable: Firma consultora. PERT: O 10, M 15, P 20 días laborables; De = 15.0. Técnica: Juicio de expertos.
- 184: Fase: Ejecución. Responsable: Firma consultora. PERT: O 25, M 35, P 50 días laborables; De = 35.8. Técnica: Paramétrica.
- 185: Fase: Monitoreo y control. Responsable: Firma consultora. PERT: O 5, M 7, P 10 días laborables; De = 7.2. Técnica: Juicio de expertos.
- 186: Fase: Cierre. Responsable: Especialista en ingeniería aeroportuaria. PERT: O 5, M 7, P 10 días laborables; De = 7.2. Técnica: Juicio de expertos.

| ID | WBS | Task | Duration | Start | Finish | Predecessors | OPS_TaskDurationUnit |
| --- | --- | --- | --- | --- | --- | --- | --- |
| 187 | 2.4 | **Estudio de conectividad terrestre entregado** | 130d | 2027-05-26 | 2027-11-23 |  | days |
| 188 | 2.4-01 | Elaborar el plan de trabajo y el informe inicial del estudio de conectividad terrestre | 11d | 2027-05-26 | 2027-06-09 | 374 | days |
| 189 | 2.4-02 | Diagnosticar el acceso terrestre al AIES con aforos, encuestas y análisis de los modos de transporte | 41d | 2027-06-10 | 2027-08-05 | 188 | days |
| 190 | 2.4-03 | Evaluar alternativas de acceso hacia San Salvador y los destinos turísticos y redactar el borrador del estudio | 46d | 2027-08-06 | 2027-10-08 | 189 | days |
| 191 | 2.4-04 | Revisar el borrador del estudio de conectividad y consolidar las observaciones de CEPA | 13d | 2027-10-11 | 2027-10-27 | 190 | days |
| 192 | 2.4-05 | Incorporar las observaciones y entregar el informe final del estudio de conectividad | 11d | 2027-10-28 | 2027-11-11 | 191 | days |
| 193 | 2.4-06 | Aprobar el informe final del estudio de conectividad | 8d | 2027-11-12 | 2027-11-23 | 192 | days |
| 194 | 2.5 | **Estudio de diversificación de destinos entregado** | 124d | 2027-04-21 | 2027-10-11 |  | days |
| 195 | 2.5-01 | Elaborar el plan de trabajo y el informe inicial del estudio de diversificación de destinos | 11d | 2027-04-21 | 2027-05-05 | 379 | days |
| 196 | 2.5-02 | Diagnosticar el mercado actual del AIES (tráfico, aerolíneas, rutas y zona de influencia) | 35d | 2027-05-06 | 2027-06-23 | 195 | days |
| 197 | 2.5-03 | Analizar los mercados de origen y destino y las aerolíneas potenciales, priorizarlos y redactar el borrador del estudio | 46d | 2027-06-24 | 2027-08-26 | 196 | days |
| 198 | 2.5-04 | Revisar el borrador del estudio de diversificación y consolidar las observaciones de CEPA | 13d | 2027-08-27 | 2027-09-14 | 197 | days |
| 199 | 2.5-05 | Incorporar las observaciones y entregar el informe final del estudio de diversificación | 11d | 2027-09-15 | 2027-09-29 | 198 | days |
| 200 | 2.5-06 | Aprobar el informe final del estudio de diversificación | 8d | 2027-09-30 | 2027-10-11 | 199 | days |
| 201 | 2.6 | **Auditoría y capacitación EDGE** | 556d | 2027-04-21 | 2029-06-06 |  | days |
| 202 | 2.6.1 | **Auditoría para la certificación EDGE realizada** | 556d | 2027-04-21 | 2029-06-06 |  | days |
| 203 | 2.6.1-01 | Registrar los proyectos de terminal y estacionamiento en EDGE y elaborar la autoevaluación | 21d | 2027-04-21 | 2027-05-19 | 8, 24, 384 | days |
| 204 | 2.6.1-02 | Realizar la auditoría de diseño y obtener el certificado preliminar EDGE | 36d | 2027-05-20 | 2027-07-08 | 203 | days |
| 205 | 2.6.1-03 | Acompañar a CEPA y a los contratistas para conservar las medidas EDGE durante la construcción | 441d | 2027-07-09 | 2029-03-16 | 204 | days |
| 206 | 2.6.1-04 | Realizar la auditoría en sitio de las medidas EDGE de la terminal y del estacionamiento terminados | 26d | 2029-03-19 | 2029-04-23 | 53, 107, 205 | days |
| 207 | 2.6.1-05 | Atender las observaciones del proveedor de certificación y presentar el informe de auditoría | 26d | 2029-04-24 | 2029-05-29 | 206 | days |
| 208 | 2.6.1-06 | Recibir el certificado EDGE final y el informe de auditoría | 6d | 2029-05-30 | 2029-06-06 | 207 | days |
| 209 | 2.6.2 | **Personal capacitado en certificación EDGE** | 496d | 2027-07-09 | 2029-06-01 |  | days |
| 210 | 2.6.2-01 | Preparar el programa y los materiales de la capacitación en EDGE | 11d | 2027-07-09 | 2027-07-23 | 204 | days |
| 211 | 2.6.2-02 | Impartir el curso de EDGE al personal previsto | 16d | 2029-04-24 | 2029-05-15 | 206, 210 | days |
| 212 | 2.6.2-03 | Evaluar y certificar a los participantes en EDGE | 7d | 2029-05-16 | 2029-05-24 | 211 | days |
| 213 | 2.6.2-04 | Entregar el registro de la capacitación en EDGE | 6d | 2029-05-25 | 2029-06-01 | 212 | days |

Notes:
- 187: Costo en la línea base: US$ 0.257 millones, de los cuales US$ 0.034 millones son contingencia.
- 188: Fase: Planificación. Responsable: Firma consultora. PERT: O 8, M 10, P 15 días laborables; De = 10.5. Técnica: Juicio de expertos.
- 189: Fase: Ejecución. Responsable: Firma consultora. PERT: O 30, M 40, P 55 días laborables; De = 40.8. Técnica: Juicio de expertos.
- 190: Fase: Ejecución. Responsable: Firma consultora. PERT: O 35, M 45, P 60 días laborables; De = 45.8. Técnica: Juicio de expertos.
- 191: Fase: Monitoreo y control. Responsable: Especialista de planificación y monitoreo. PERT: O 10, M 12, P 20 días laborables; De = 13.0. Técnica: Juicio de expertos.
- 192: Fase: Ejecución. Responsable: Firma consultora. PERT: O 8, M 10, P 15 días laborables; De = 10.5. Técnica: Juicio de expertos.
- 193: Fase: Cierre. Responsable: CEPA. PERT: O 5, M 7, P 12 días laborables; De = 7.5. Técnica: Juicio de expertos.
- 194: Costo en la línea base: US$ 0.191 millones, de los cuales US$ 0.014 millones son contingencia.
- 195: Fase: Planificación. Responsable: Firma consultora. PERT: O 8, M 10, P 15 días laborables; De = 10.5. Técnica: Juicio de expertos.
- 196: Fase: Ejecución. Responsable: Firma consultora. PERT: O 25, M 35, P 45 días laborables; De = 35.0. Técnica: Juicio de expertos.
- 197: Fase: Ejecución. Responsable: Firma consultora. PERT: O 35, M 45, P 60 días laborables; De = 45.8. Técnica: Juicio de expertos.
- 198: Fase: Monitoreo y control. Responsable: Especialista de planificación y monitoreo. PERT: O 10, M 12, P 20 días laborables; De = 13.0. Técnica: Juicio de expertos.
- 199: Fase: Ejecución. Responsable: Firma consultora. PERT: O 8, M 10, P 15 días laborables; De = 10.5. Técnica: Juicio de expertos.
- 200: Fase: Cierre. Responsable: CEPA. PERT: O 5, M 7, P 12 días laborables; De = 7.5. Técnica: Juicio de expertos.
- 202: Costo en la línea base: US$ 0.020 millones, de los cuales US$ 0.002 millones son contingencia.
- 203: Fase: Planificación. Responsable: Firma consultora. PERT: O 15, M 20, P 30 días laborables; De = 20.8. Técnica: Juicio de expertos.
- 204: Fase: Ejecución. Responsable: Firma consultora. PERT: O 25, M 35, P 50 días laborables; De = 35.8. Técnica: Análoga.
- 205: Fase: Monitoreo y control. Responsable: Firma consultora. Nivel de esfuerzo: su duración se fijó para terminar con 1.2.4-06, 1.5.3-04.
- 206: Fase: Ejecución. Responsable: Firma consultora. PERT: O 20, M 25, P 35 días laborables; De = 25.8. Técnica: Análoga.
- 207: Fase: Ejecución. Responsable: Firma consultora. PERT: O 20, M 25, P 35 días laborables; De = 25.8. Técnica: Análoga.
- 208: Fase: Cierre. Responsable: CEPA. PERT: O 5, M 5, P 10 días laborables; De = 5.8. Técnica: Juicio de expertos.
- 209: Costo en la línea base: US$ 0.004 millones, de los cuales US$ 0.000 millones son contingencia.
- 210: Fase: Planificación. Responsable: Firma consultora. PERT: O 8, M 10, P 15 días laborables; De = 10.5. Técnica: Juicio de expertos.
- 211: Fase: Ejecución. Responsable: Firma consultora. PERT: O 10, M 15, P 25 días laborables; De = 15.8. Técnica: Paramétrica.
- 212: Fase: Monitoreo y control. Responsable: Firma consultora. PERT: O 5, M 7, P 10 días laborables; De = 7.2. Técnica: Juicio de expertos.
- 213: Fase: Cierre. Responsable: Especialista en ingeniería aeroportuaria. PERT: O 5, M 5, P 8 días laborables; De = 5.5. Técnica: Juicio de expertos.

| ID | WBS | Task | Duration | Start | Finish | Predecessors | Constraint | OPS_TaskDurationUnit |
| --- | --- | --- | --- | --- | --- | --- | --- | --- |
| 214 | 2.7 | **Estudio de separación de flujos entregado** | 88d | 2027-04-21 | 2027-08-20 |  |  | days |
| 215 | 2.7-01 | Elaborar el plan de trabajo y el informe inicial del estudio de separación de flujos | 11d | 2027-04-21 | 2027-05-05 | 389 |  | days |
| 216 | 2.7-02 | Diagnosticar los flujos de llegadas y salidas de la terminal antigua mediante levantamiento y observación | 21d | 2027-05-06 | 2027-06-03 | 215 |  | days |
| 217 | 2.7-03 | Identificar y priorizar las intervenciones de separación de flujos y redactar el borrador del estudio | 30d | 2027-06-04 | 2027-07-15 | 8, 216 |  | days |
| 218 | 2.7-04 | Revisar el borrador del estudio de separación de flujos y consolidar las observaciones de CEPA | 11d | 2027-07-16 | 2027-07-30 | 217 |  | days |
| 219 | 2.7-05 | Incorporar las observaciones y entregar el informe final del estudio de separación de flujos | 8d | 2027-08-02 | 2027-08-11 | 218 |  | days |
| 220 | 2.7-06 | Aprobar el informe final del estudio de separación de flujos | 7d | 2027-08-12 | 2027-08-20 | 219 |  | days |
| 221 | 2.8 | **Estudio de movilidad interna entregado** | 103d | 2027-04-21 | 2027-09-10 |  |  | days |
| 222 | 2.8-01 | Elaborar el plan de trabajo y el informe inicial del estudio de movilidad interna | 11d | 2027-04-21 | 2027-05-05 | 394 |  | days |
| 223 | 2.8-02 | Diagnosticar el tráfico de las vías internas con aforos en horas pico y en el dejar y recoger pasajeros | 30d | 2027-05-06 | 2027-06-16 | 222 |  | days |
| 224 | 2.8-03 | Analizar los puntos de conflicto, definir las medidas y redactar el borrador del estudio | 36d | 2027-06-17 | 2027-08-05 | 24, 223 |  | days |
| 225 | 2.8-04 | Revisar el borrador del estudio de movilidad interna y consolidar las observaciones de CEPA | 11d | 2027-08-06 | 2027-08-20 | 224 |  | days |
| 226 | 2.8-05 | Incorporar las observaciones y entregar el informe final del estudio de movilidad interna | 8d | 2027-08-23 | 2027-09-01 | 225 |  | days |
| 227 | 2.8-06 | Aprobar el informe final del estudio de movilidad interna | 7d | 2027-09-02 | 2027-09-10 | 226 |  | days |
| 228 | 2.9 | **Programa de igualdad e inclusión ejecutado** | 603d | 2027-04-21 | 2029-08-10 |  |  | days |
| 229 | 2.9-01 | Elaborar el diagnóstico de necesidades, el programa y los materiales de capacitación en igualdad e inclusión | 30d | 2027-04-21 | 2027-06-01 | 399 |  | days |
| 230 | 2.9-02 | Impartir la capacitación a la primera cohorte de 100 funcionarios y evaluarla | 35d | 2027-06-02 | 2027-07-20 | 229 |  | days |
| 231 | 2.9-03 | Impartir la capacitación a la segunda cohorte de 100 funcionarios y evaluarla | 35d | 2028-05-31 | 2028-07-18 | 230SS+260d |  | days |
| 232 | 2.9-04 | Impartir la capacitación a la tercera cohorte de 100 funcionarios y evaluarla | 35d | 2029-05-30 | 2029-07-17 | 231SS+260d |  | days |
| 233 | 2.9-05 | Emitir las constancias de los 300 funcionarios aprobados y entregar el informe final del programa | 11d | 2029-07-18 | 2029-08-01 | 232 |  | days |
| 234 | 2.9-06 | Aprobar el informe final y registrar el indicador T2 en el informe semestral | 7d | 2029-08-02 | 2029-08-10 | 233 |  | days |
| 235 | 3 | **Administración, evaluación y auditorías** | 1086d | 2026-02-02 | 2030-04-01 |  |  | days |
| 236 | 3.1 | **Condiciones de arranque cumplidas** | 1023d | 2026-04-16 | 2030-03-18 |  |  | days |
| 237 | 3.1.1 | **Unidad ejecutora conformada y en funciones** | 1023d | 2026-04-16 | 2030-03-18 |  |  | days |
| 238 | 3.1.1-01 | Incorporar al Coordinador del Programa, al Coordinador general de obra y al Especialista de planificación y monitoreo | 5d | 2026-04-16 | 2026-04-22 | 417 | start no earlier than 2026-04-16 | days |
| 239 | 3.1.1-02 | Incorporar al Especialista de adquisiciones | 5d | 2026-04-23 | 2026-04-29 | 417 | start no earlier than 2026-04-23 | days |
| 240 | 3.1.1-03 | Incorporar al Especialista en ingeniería aeroportuaria, al Especialista financiero y al Especialista socioambiental | 5d | 2026-05-04 | 2026-05-08 | 417 | start no earlier than 2026-05-04 | days |
| 241 | 3.1.1-04 | Registrar las firmas autorizadas del programa ante el BID | 5d | 2026-04-23 | 2026-04-29 | 238 |  | days |
| 242 | 3.1.1-05 | Documentar ante el BID la conformación de la UEP con dedicación exclusiva | 5d | 2026-05-11 | 2026-05-15 | 238, 239, 240, 241 |  | days |
| 243 | 3.1.1-06 | Administrar el programa desde la Unidad Ejecutora | 1023d | 2026-04-16 | 2030-03-18 | 238SS |  | days |

Notes:
- 214: Costo en la línea base: US$ 0.185 millones, de los cuales US$ 0.025 millones son contingencia.
- 215: Fase: Planificación. Responsable: Firma consultora. PERT: O 8, M 10, P 15 días laborables; De = 10.5. Técnica: Juicio de expertos.
- 216: Fase: Ejecución. Responsable: Firma consultora. PERT: O 15, M 20, P 30 días laborables; De = 20.8. Técnica: Juicio de expertos.
- 217: Fase: Ejecución. Responsable: Firma consultora. PERT: O 20, M 30, P 40 días laborables; De = 30.0. Técnica: Juicio de expertos.
- 218: Fase: Monitoreo y control. Responsable: Especialista en ingeniería aeroportuaria. PERT: O 8, M 10, P 15 días laborables; De = 10.5. Técnica: Juicio de expertos.
- 219: Fase: Ejecución. Responsable: Firma consultora. PERT: O 5, M 8, P 12 días laborables; De = 8.2. Técnica: Juicio de expertos.
- 220: Fase: Cierre. Responsable: CEPA. PERT: O 5, M 7, P 10 días laborables; De = 7.2. Técnica: Juicio de expertos.
- 221: Costo en la línea base: US$ 0.185 millones, de los cuales US$ 0.025 millones son contingencia.
- 222: Fase: Planificación. Responsable: Firma consultora. PERT: O 8, M 10, P 15 días laborables; De = 10.5. Técnica: Juicio de expertos.
- 223: Fase: Ejecución. Responsable: Firma consultora. PERT: O 20, M 30, P 40 días laborables; De = 30.0. Técnica: Juicio de expertos.
- 224: Fase: Ejecución. Responsable: Firma consultora. PERT: O 25, M 35, P 50 días laborables; De = 35.8. Técnica: Juicio de expertos.
- 225: Fase: Monitoreo y control. Responsable: Especialista en ingeniería aeroportuaria. PERT: O 8, M 10, P 15 días laborables; De = 10.5. Técnica: Juicio de expertos.
- 226: Fase: Ejecución. Responsable: Firma consultora. PERT: O 5, M 8, P 12 días laborables; De = 8.2. Técnica: Juicio de expertos.
- 227: Fase: Cierre. Responsable: CEPA. PERT: O 5, M 7, P 10 días laborables; De = 7.2. Técnica: Juicio de expertos.
- 228: Costo en la línea base: US$ 0.039 millones, de los cuales US$ 0.005 millones son contingencia.
- 229: Fase: Planificación. Responsable: Firma consultora. PERT: O 20, M 30, P 40 días laborables; De = 30.0. Técnica: Juicio de expertos.
- 230: Fase: Ejecución. Responsable: Firma consultora. PERT: O 25, M 35, P 45 días laborables; De = 35.0. Técnica: Juicio de expertos.
- 231: Fase: Ejecución. Responsable: Firma consultora. PERT: O 25, M 35, P 45 días laborables; De = 35.0. Técnica: Juicio de expertos.
- 232: Fase: Ejecución. Responsable: Firma consultora. PERT: O 25, M 35, P 45 días laborables; De = 35.0. Técnica: Juicio de expertos.
- 233: Fase: Cierre. Responsable: Firma consultora. PERT: O 8, M 10, P 15 días laborables; De = 10.5. Técnica: Juicio de expertos.
- 234: Fase: Cierre. Responsable: Especialista socioambiental. PERT: O 5, M 7, P 10 días laborables; De = 7.2. Técnica: Juicio de expertos.
- 237: Costo en la línea base: US$ 3.860 millones, de los cuales US$ 0.156 millones son contingencia.
- 238: Fase: Inicio. Responsable: CEPA. PERT: O 4, M 5, P 6 días laborables; De = 5.0. Técnica: Dato del programa.
- 239: Fase: Inicio. Responsable: CEPA. PERT: O 4, M 5, P 6 días laborables; De = 5.0. Técnica: Dato del programa.
- 240: Fase: Inicio. Responsable: CEPA. PERT: O 4, M 5, P 6 días laborables; De = 5.0. Técnica: Dato del programa.
- 241: Fase: Inicio. Responsable: Especialista financiero. PERT: O 4, M 5, P 6 días laborables; De = 5.0. Técnica: Juicio de expertos.
- 242: Fase: Inicio. Responsable: Coordinador del Programa. PERT: O 4, M 5, P 6 días laborables; De = 5.0. Técnica: Juicio de expertos.
- 243: Fase: Monitoreo y control. Responsable: Coordinador del Programa. Nivel de esfuerzo: su duración se fijó para terminar con 3.5.4-04.

| ID | WBS | Task | Duration | Start | Finish | Predecessors | Constraint | OPS_TaskDurationUnit |
| --- | --- | --- | --- | --- | --- | --- | --- | --- |
| 244 | 3.1.2 | **Reglamento operativo vigente** | 30d | 2026-06-01 | 2026-07-10 |  |  | days |
| 245 | 3.1.2-01 | Ajustar el borrador del ROP acordado con el BID a la estructura de la UEP y a las cifras del PA | 15d | 2026-06-01 | 2026-06-19 | 238, 279 |  | days |
| 246 | 3.1.2-02 | Obtener la no objeción del BID al ROP ajustado | 10d | 2026-06-22 | 2026-07-03 | 245 |  | days |
| 247 | 3.1.2-03 | Aprobar el ROP en CEPA mediante resolución de la autoridad superior | 5d | 2026-07-06 | 2026-07-10 | 246 |  | days |
| 248 | 3.1.3 | **Convenio de transferencia de recursos vigente** | 35d | 2026-05-18 | 2026-07-03 |  |  | days |
| 249 | 3.1.3-01 | Redactar el convenio de transferencia de recursos entre la República y CEPA | 20d | 2026-05-18 | 2026-06-12 | 242 |  | days |
| 250 | 3.1.3-02 | Obtener la no objeción del BID al texto del convenio | 5d | 2026-06-15 | 2026-06-19 | 249 |  | days |
| 251 | 3.1.3-03 | Suscribir el convenio y ponerlo en vigencia | 10d | 2026-06-22 | 2026-07-03 | 250 |  | days |
| 252 | 3.1.4 | **Cuenta especial aperturada** | 25d | 2026-04-30 | 2026-06-03 |  |  | days |
| 253 | 3.1.4-01 | Solicitar a la Dirección General de Tesorería la apertura de la cuenta especial en el BCR | 10d | 2026-04-30 | 2026-05-13 | 241 |  | days |
| 254 | 3.1.4-02 | Abrir y habilitar la cuenta especial para recibir desembolsos | 10d | 2026-05-14 | 2026-05-27 | 253 |  | days |
| 255 | 3.1.4-03 | Registrar la cuenta especial ante el BID | 5d | 2026-05-28 | 2026-06-03 | 254 |  | days |
| 256 | 3.2 | **Planes de ejecución aprobados** | 1003d | 2026-02-02 | 2029-12-05 |  |  | days |
| 257 | 3.2.1 | **Plan de ejecución plurianual aprobado** | 35d | 2026-04-23 | 2026-06-10 |  |  | days |
| 258 | 3.2.1-01 | Actualizar la EDT, el cronograma y el presupuesto del PEP de noviembre de 2025 con las fechas reales del préstamo | 20d | 2026-04-23 | 2026-05-20 | 238 |  | days |
| 259 | 3.2.1-02 | Integrar al PEP el calendario de adquisiciones, hitos y desembolsos por componente | 10d | 2026-05-21 | 2026-06-03 | 258, 272 |  | days |
| 260 | 3.2.1-03 | Aprobar el PEP en CEPA y presentarlo al BID | 5d | 2026-06-04 | 2026-06-10 | 259 |  | days |
| 261 | 3.2.2 | **Planes operativos anuales aprobados** | 808d | 2026-11-02 | 2029-12-05 |  |  | days |
| 262 | 3.2.2-01 | Elaborar el POA 2027 con metas, cronograma físico y financiero y presupuesto por producto | 20d | 2026-11-02 | 2026-11-27 | 260 | start no earlier than 2026-11-02 | days |
| 263 | 3.2.2-02 | Aprobar el POA 2027 en CEPA y presentarlo al BID antes del inicio del año | 5d | 2026-11-30 | 2026-12-04 | 262 |  | days |
| 264 | 3.2.2-03 | Elaborar el POA 2028 con metas, cronograma físico y financiero y presupuesto por producto | 20d | 2027-11-01 | 2027-11-26 | 263 | start no earlier than 2027-11-01 | days |
| 265 | 3.2.2-04 | Aprobar el POA 2028 en CEPA y presentarlo al BID antes del inicio del año | 5d | 2027-11-29 | 2027-12-03 | 264 |  | days |
| 266 | 3.2.2-05 | Elaborar el POA 2029 con metas, cronograma físico y financiero y presupuesto por producto | 20d | 2028-11-01 | 2028-11-28 | 265 | start no earlier than 2028-11-01 | days |
| 267 | 3.2.2-06 | Aprobar el POA 2029 en CEPA y presentarlo al BID antes del inicio del año | 5d | 2028-11-29 | 2028-12-05 | 266 |  | days |
| 268 | 3.2.2-07 | Elaborar el POA 2030 con metas, cronograma físico y financiero y presupuesto por producto | 20d | 2029-11-01 | 2029-11-28 | 267 | start no earlier than 2029-11-01 | days |
| 269 | 3.2.2-08 | Aprobar el POA 2030 en CEPA y presentarlo al BID antes del inicio del año | 5d | 2029-11-29 | 2029-12-05 | 268 |  | days |

Notes:
- 244: Ejecutado por el personal de la UEP, sin costo adicional en la línea base.
- 245: Fase: Inicio. Responsable: Coordinador del Programa. PERT: O 12, M 15, P 18 días laborables; De = 15.0. Técnica: Juicio de expertos.
- 246: Fase: Inicio. Responsable: BID. PERT: O 5, M 10, P 15 días laborables; De = 10.0. Técnica: Juicio de expertos.
- 247: Fase: Inicio. Responsable: CEPA. PERT: O 4, M 5, P 6 días laborables; De = 5.0. Técnica: Juicio de expertos.
- 248: Ejecutado por el personal de la UEP, sin costo adicional en la línea base.
- 249: Fase: Inicio. Responsable: Coordinador del Programa. PERT: O 16, M 20, P 24 días laborables; De = 20.0. Técnica: Juicio de expertos.
- 250: Fase: Inicio. Responsable: BID. PERT: O 3, M 5, P 7 días laborables; De = 5.0. Técnica: Dato del programa.
- 251: Fase: Inicio. Responsable: CEPA. PERT: O 8, M 10, P 12 días laborables; De = 10.0. Técnica: Juicio de expertos.
- 252: Ejecutado por el personal de la UEP, sin costo adicional en la línea base.
- 253: Fase: Inicio. Responsable: Especialista financiero. PERT: O 8, M 10, P 12 días laborables; De = 10.0. Técnica: Juicio de expertos.
- 254: Fase: Inicio. Responsable: CEPA. PERT: O 8, M 10, P 12 días laborables; De = 10.0. Técnica: Juicio de expertos.
- 255: Fase: Inicio. Responsable: Especialista financiero. PERT: O 4, M 5, P 6 días laborables; De = 5.0. Técnica: Juicio de expertos.
- 257: Ejecutado por el personal de la UEP, sin costo adicional en la línea base.
- 258: Fase: Planificación. Responsable: Especialista de planificación y monitoreo. PERT: O 16, M 20, P 24 días laborables; De = 20.0. Técnica: Juicio de expertos.
- 259: Fase: Planificación. Responsable: Especialista de planificación y monitoreo. PERT: O 8, M 10, P 12 días laborables; De = 10.0. Técnica: Juicio de expertos.
- 260: Fase: Planificación. Responsable: Coordinador del Programa. PERT: O 4, M 5, P 6 días laborables; De = 5.0. Técnica: Juicio de expertos.
- 261: Ejecutado por el personal de la UEP, sin costo adicional en la línea base.
- 262: Fase: Planificación. Responsable: Especialista de planificación y monitoreo. PERT: O 16, M 20, P 24 días laborables; De = 20.0. Técnica: Juicio de expertos.
- 263: Fase: Planificación. Responsable: Coordinador del Programa. PERT: O 4, M 5, P 6 días laborables; De = 5.0. Técnica: Juicio de expertos.
- 264: Fase: Planificación. Responsable: Especialista de planificación y monitoreo. PERT: O 16, M 20, P 24 días laborables; De = 20.0. Técnica: Juicio de expertos.
- 265: Fase: Planificación. Responsable: Coordinador del Programa. PERT: O 4, M 5, P 6 días laborables; De = 5.0. Técnica: Juicio de expertos.
- 266: Fase: Planificación. Responsable: Especialista de planificación y monitoreo. PERT: O 16, M 20, P 24 días laborables; De = 20.0. Técnica: Juicio de expertos.
- 267: Fase: Planificación. Responsable: Coordinador del Programa. PERT: O 4, M 5, P 6 días laborables; De = 5.0. Técnica: Juicio de expertos.
- 268: Fase: Planificación. Responsable: Especialista de planificación y monitoreo. PERT: O 16, M 20, P 24 días laborables; De = 20.0. Técnica: Juicio de expertos.
- 269: Fase: Planificación. Responsable: Coordinador del Programa. PERT: O 4, M 5, P 6 días laborables; De = 5.0. Técnica: Juicio de expertos.

| ID | WBS | Task | Duration | Start | Finish | Predecessors | Constraint | OPS_TaskDurationUnit |
| --- | --- | --- | --- | --- | --- | --- | --- | --- |
| 270 | 3.2.3 | **Plan de adquisiciones aprobado** | 908d | 2026-02-02 | 2029-07-25 |  |  | days |
| 271 | 3.2.3-01 | Elaborar el Plan de Adquisiciones inicial 2026-1 con estacionamiento, su supervisión, la UEP y la auditoría del año 1 | 30d | 2026-02-02 | 2026-03-13 |  |  | days |
| 272 | 3.2.3-02 | Obtener la no objeción del BID al Plan de Adquisiciones 2026-1 | 5d | 2026-04-07 | 2026-04-13 | 271 | start no earlier than 2026-04-07 | days |
| 273 | 3.2.3-03 | Actualizar el Plan de Adquisiciones a la versión 2026-2 con terminal, SSEI, plataformas y las tres supervisiones restantes | 20d | 2026-04-14 | 2026-05-11 | 272 |  | days |
| 274 | 3.2.3-04 | Obtener la no objeción del BID al Plan de Adquisiciones 2026-2 | 5d | 2026-07-08 | 2026-07-14 | 273 | start no earlier than 2026-07-08 | days |
| 275 | 3.2.3-05 | Mantener el Plan de Adquisiciones actualizado en el sistema del BID cada vez que cambie un proceso | 791d | 2026-07-15 | 2029-07-25 | 274 |  | days |
| 276 | 3.2.3-06 | Publicar el Aviso General de Adquisiciones del programa en el portal del BID | 5d | 2026-04-29 | 2026-05-05 | 272 | start no earlier than 2026-04-29 | days |
| 277 | 3.3 | **Condiciones socioambientales y de seguridad operacional** | 839d | 2026-05-11 | 2029-07-26 |  |  | days |
| 278 | 3.3.1 | **Sistema de gestión ambiental y social y plan de acción vigentes** | 169d | 2026-05-11 | 2026-12-31 |  |  | days |
| 279 | 3.3.1-01 | Revisar el PAAS del 8 de octubre de 2025 y ajustar el SGAS a la organización de la UEP | 15d | 2026-05-11 | 2026-05-29 | 240 |  | days |
| 280 | 3.3.1-02 | Elaborar los procedimientos y formatos del SGAS: selección de obra, reporte de incidentes e informe de cumplimiento | 20d | 2026-06-01 | 2026-06-26 | 279 |  | days |
| 281 | 3.3.1-03 | Obtener la no objeción del BID al SGAS y al PAAS actualizados | 10d | 2026-06-29 | 2026-07-10 | 280 |  | days |
| 282 | 3.3.1-04 | Incorporar el SGAS y el PAAS como anexos del ROP aprobado | 5d | 2026-07-13 | 2026-07-17 | 247, 281 |  | days |
| 283 | 3.3.1-05 | Elaborar el Plan de Gestión del Riesgo de Desastres y Cambio Climático final con los diseños aprobados | 31d | 2026-11-11 | 2026-12-23 | 282, 8, 18, 24, 30 |  | days |
| 284 | 3.3.1-06 | Presentar al BID el Plan de Gestión del Riesgo de Desastres y Cambio Climático final | 6d | 2026-12-24 | 2026-12-31 | 283 |  | days |
| 285 | 3.3.2 | **Protocolo de seguridad operacional aprobado por la AAC** | 87d | 2026-11-11 | 2027-03-11 |  |  | days |
| 286 | 3.3.2-01 | Evaluar el riesgo operacional y definir las fases de trabajo del lado aire junto con la operación aeroportuaria | 20d | 2026-11-11 | 2026-12-08 | 18, 282 |  | days |
| 287 | 3.3.2-02 | Elaborar el protocolo de seguridad operacional para obras del lado aire, de uso de contratistas y supervisión | 30d | 2026-12-09 | 2027-01-19 | 286 |  | days |
| 288 | 3.3.2-03 | Presentar el protocolo a la AAC y atender sus observaciones | 15d | 2027-01-20 | 2027-02-09 | 287 |  | days |
| 289 | 3.3.2-04 | Aprobar el protocolo de seguridad operacional de las obras del lado aire | 22d | 2027-02-10 | 2027-03-11 | 288 |  | days |
| 290 | 3.3.3 | **Mecanismo de quejas y reclamos en operación** | 695d | 2026-07-20 | 2029-03-16 |  |  | days |
| 291 | 3.3.3-01 | Diseñar el procedimiento del mecanismo de quejas y reclamos: canales, plazos de respuesta y registro de casos | 15d | 2026-07-20 | 2026-08-07 | 282 |  | days |
| 292 | 3.3.3-02 | Instalar y difundir los canales del mecanismo entre trabajadores, usuarios, arrendatarios, aerolíneas y comunidades | 20d | 2026-08-10 | 2026-09-04 | 291 |  | days |
| 293 | 3.3.3-03 | Operar el mecanismo, registrar los casos y dar respuesta durante las obras | 660d | 2026-09-07 | 2029-03-16 | 292 |  | days |

Notes:
- 270: Ejecutado por el personal de la UEP, sin costo adicional en la línea base.
- 271: Fase: Planificación. Responsable: CEPA. PERT: O 20, M 30, P 40 días laborables; De = 30.0. Técnica: Juicio de expertos.
- 272: Fase: Planificación. Responsable: BID. PERT: O 3, M 5, P 7 días laborables; De = 5.0. Técnica: Dato del programa.
- 273: Fase: Planificación. Responsable: Especialista de adquisiciones. PERT: O 16, M 20, P 24 días laborables; De = 20.0. Técnica: Juicio de expertos.
- 274: Fase: Planificación. Responsable: BID. PERT: O 3, M 5, P 7 días laborables; De = 5.0. Técnica: Dato del programa.
- 275: Fase: Monitoreo y control. Responsable: Especialista de adquisiciones. Nivel de esfuerzo: su duración se fijó para terminar con 3.4.1-06, 3.4.1-12, 3.4.1-18, 3.4.1-24, 3.4.2-06, 3.4.2-12, 3.4.2-18, 3.4.2-24, 3.4.3-08, 3.4.3-14, 3.4.3-19, 3.4.3-25, 3.4.3-30, 3.4.3-35, 3.4.3-40, 3.4.3-45, 3.4.3-50, 3.4.4-05, 3.4.4-10, 3.4.4-15, 3.4.4-20, 3.4.4-25, 3.4.4-30, 3.4.4-35, 3.4.4-40.
- 276: Fase: Ejecución. Responsable: Especialista de adquisiciones. PERT: O 4, M 5, P 6 días laborables; De = 5.0. Técnica: Dato del programa.
- 278: Ejecutado por el personal de la UEP, sin costo adicional en la línea base.
- 279: Fase: Planificación. Responsable: Especialista socioambiental. PERT: O 12, M 15, P 18 días laborables; De = 15.0. Técnica: Juicio de expertos.
- 280: Fase: Planificación. Responsable: Especialista socioambiental. PERT: O 16, M 20, P 24 días laborables; De = 20.0. Técnica: Juicio de expertos.
- 281: Fase: Planificación. Responsable: BID. PERT: O 5, M 10, P 15 días laborables; De = 10.0. Técnica: Juicio de expertos.
- 282: Fase: Planificación. Responsable: Especialista socioambiental. PERT: O 4, M 5, P 6 días laborables; De = 5.0. Técnica: Juicio de expertos.
- 283: Fase: Planificación. Responsable: Especialista socioambiental. PERT: O 20, M 30, P 45 días laborables; De = 30.8. Técnica: Juicio de expertos.
- 284: Fase: Planificación. Responsable: Coordinador del Programa. PERT: O 3, M 5, P 10 días laborables; De = 5.5. Técnica: Juicio de expertos.
- 285: Ejecutado por el personal de la UEP, sin costo adicional en la línea base.
- 286: Fase: Planificación. Responsable: Especialista en ingeniería aeroportuaria. PERT: O 16, M 20, P 24 días laborables; De = 20.0. Técnica: Juicio de expertos.
- 287: Fase: Planificación. Responsable: Coordinador general de obra. PERT: O 24, M 30, P 36 días laborables; De = 30.0. Técnica: Análoga.
- 288: Fase: Planificación. Responsable: Coordinador general de obra. PERT: O 12, M 15, P 18 días laborables; De = 15.0. Técnica: Juicio de expertos.
- 289: Fase: Planificación. Responsable: AAC. PERT: O 10, M 20, P 40 días laborables; De = 21.7. Técnica: Juicio de expertos.
- 290: Ejecutado por el personal de la UEP, sin costo adicional en la línea base.
- 291: Fase: Planificación. Responsable: Especialista socioambiental. PERT: O 12, M 15, P 18 días laborables; De = 15.0. Técnica: Juicio de expertos.
- 292: Fase: Ejecución. Responsable: Especialista socioambiental. PERT: O 16, M 20, P 24 días laborables; De = 20.0. Técnica: Juicio de expertos.
- 293: Fase: Monitoreo y control. Responsable: Especialista socioambiental. Nivel de esfuerzo: su duración se fijó para terminar con 1.2.4-06, 1.3.3-05, 1.4.2-04, 1.5.3-04, 1.6.2-04.

| ID | WBS | Task | Duration | Start | Finish | Predecessors | Constraint | OPS_TaskDurationUnit |
| --- | --- | --- | --- | --- | --- | --- | --- | --- |
| 294 | 3.3.4 | **Informes de cumplimiento socioambiental presentados** | 789d | 2026-07-20 | 2029-07-26 |  |  | days |
| 295 | 3.3.4-01 | Acordar con el BID el formato del informe de cumplimiento ambiental y social semestral | 10d | 2026-07-20 | 2026-07-31 | 282 |  | days |
| 296 | 3.3.4-02 | Presentar los informes semestrales de cumplimiento ambiental y social junto con el informe de progreso | 544d | 2027-02-16 | 2029-03-16 | 93SS, 295 |  | days |
| 297 | 3.3.4-03 | Presentar al BID el informe final ambiental y social del programa | 15d | 2029-07-06 | 2029-07-26 | 296, 149, 150, 151, 152 |  | days |
| 298 | 3.4 | **Contratos del programa firmados** | 908d | 2026-02-02 | 2029-07-25 |  |  | days |
| 299 | 3.4.1 | **Contratos de obras del Componente I firmados** | 283d | 2026-06-23 | 2027-07-22 |  |  | days |
| 300 | 3.4.1-01 | Preparar los documentos de licitación del estacionamiento y el sistema solar | 45d | 2026-06-23 | 2026-08-24 | 24FF, 239, 272 |  | days |
| 301 | 3.4.1-02 | Obtener la no objeción del BID a los documentos de licitación del estacionamiento y el sistema solar | 5d | 2026-08-25 | 2026-08-31 | 282, 300 |  | days |
| 302 | 3.4.1-03 | Publicar el aviso específico de adquisiciones del estacionamiento y el sistema solar y recibir ofertas hasta la apertura | 31d | 2026-09-04 | 2026-10-16 | 247, 301, 276 | start no earlier than 2026-09-04 | days |
| 303 | 3.4.1-04 | Evaluar las ofertas del estacionamiento y el sistema solar y elaborar el informe de evaluación | 29d | 2026-10-19 | 2026-11-26 | 302 |  | days |
| 304 | 3.4.1-05 | Obtener la no objeción del BID a la evaluación y a la recomendación de adjudicación del estacionamiento y el sistema solar | 5d | 2026-11-27 | 2026-12-03 | 303 |  | days |
| 305 | 3.4.1-06 | Adjudicar y firmar el contrato de obra del estacionamiento y el sistema solar | 39d | 2026-12-04 | 2027-01-27 | 304 |  | days |
| 306 | 3.4.1-07 | Preparar los documentos de licitación de la terminal de pasajeros | 45d | 2026-07-28 | 2026-09-28 | 8FF, 239, 274 |  | days |
| 307 | 3.4.1-08 | Obtener la no objeción del BID a los documentos de licitación de la terminal de pasajeros | 5d | 2026-09-29 | 2026-10-05 | 282, 306 |  | days |
| 308 | 3.4.1-09 | Publicar el aviso específico de adquisiciones de la terminal de pasajeros y recibir ofertas hasta la apertura | 32d | 2026-10-08 | 2026-11-20 | 247, 307, 276 | start no earlier than 2026-10-08 | days |
| 309 | 3.4.1-10 | Evaluar las ofertas de la terminal de pasajeros y elaborar el informe de evaluación | 44d | 2026-11-23 | 2027-01-21 | 308 |  | days |
| 310 | 3.4.1-11 | Obtener la no objeción del BID a la evaluación y a la recomendación de adjudicación de la terminal de pasajeros | 5d | 2027-01-22 | 2027-01-28 | 309 |  | days |
| 311 | 3.4.1-12 | Adjudicar y firmar el contrato de obra de la terminal de pasajeros | 61d | 2027-01-29 | 2027-04-23 | 310 |  | days |
| 312 | 3.4.1-13 | Preparar los documentos de licitación del SSEI | 45d | 2026-08-05 | 2026-10-06 | 30FF, 239, 274 |  | days |
| 313 | 3.4.1-14 | Obtener la no objeción del BID a los documentos de licitación del SSEI | 5d | 2026-10-07 | 2026-10-13 | 282, 312 |  | days |
| 314 | 3.4.1-15 | Publicar el aviso específico de adquisiciones del SSEI y recibir ofertas hasta la apertura | 31d | 2027-01-06 | 2027-02-17 | 247, 313, 276 | start no earlier than 2027-01-06 | days |
| 315 | 3.4.1-16 | Evaluar las ofertas del SSEI y elaborar el informe de evaluación | 28d | 2027-02-18 | 2027-03-29 | 314 |  | days |
| 316 | 3.4.1-17 | Obtener la no objeción del BID a la evaluación y a la recomendación de adjudicación del SSEI | 5d | 2027-03-30 | 2027-04-05 | 315 |  | days |
| 317 | 3.4.1-18 | Adjudicar y firmar el contrato de obra del SSEI | 38d | 2027-04-06 | 2027-05-27 | 316 |  | days |
| 318 | 3.4.1-19 | Preparar los documentos de licitación de las plataformas y la calle Foxtrot | 45d | 2026-09-09 | 2026-11-10 | 18FF, 239, 274 |  | days |
| 319 | 3.4.1-20 | Obtener la no objeción del BID a los documentos de licitación de las plataformas y la calle Foxtrot | 5d | 2026-11-11 | 2026-11-17 | 282, 318 |  | days |
| 320 | 3.4.1-21 | Publicar el aviso específico de adquisiciones de las plataformas y la calle Foxtrot y recibir ofertas hasta la apertura | 31d | 2027-03-12 | 2027-04-23 | 247, 319, 276 | start no earlier than 2027-03-12 | days |
| 321 | 3.4.1-22 | Evaluar las ofertas de las plataformas y la calle Foxtrot y elaborar el informe de evaluación | 25d | 2027-04-26 | 2027-05-28 | 320 |  | days |
| 322 | 3.4.1-23 | Obtener la no objeción del BID a la evaluación y a la recomendación de adjudicación de las plataformas y la calle Foxtrot | 5d | 2027-05-31 | 2027-06-04 | 321 |  | days |
| 323 | 3.4.1-24 | Adjudicar y firmar el contrato de obra de las plataformas y la calle Foxtrot | 34d | 2027-06-07 | 2027-07-22 | 322 |  | days |

Notes:
- 294: Ejecutado por el personal de la UEP, sin costo adicional en la línea base.
- 295: Fase: Planificación. Responsable: Especialista socioambiental. PERT: O 8, M 10, P 12 días laborables; De = 10.0. Técnica: Juicio de expertos.
- 296: Fase: Monitoreo y control. Responsable: Especialista socioambiental. Nivel de esfuerzo: su duración se fijó para terminar con 1.2.4-06, 1.3.3-05, 1.4.2-04, 1.5.3-04, 1.6.2-04.
- 297: Fase: Cierre. Responsable: Especialista socioambiental. PERT: O 12, M 15, P 18 días laborables; De = 15.0. Técnica: Juicio de expertos.
- 299: Ejecutado por el personal de la UEP, sin costo adicional en la línea base.
- 300: Fase: Planificación. Responsable: Especialista de adquisiciones. PERT: O 35, M 45, P 55 días laborables; De = 45.0. Técnica: Dato del programa.
- 301: Fase: Planificación. Responsable: BID. PERT: O 3, M 5, P 7 días laborables; De = 5.0. Técnica: Dato del programa.
- 302: Fase: Ejecución. Responsable: Especialista de adquisiciones. PERT: O 31, M 31, P 31 días laborables; De = 31.0. Técnica: Dato del programa.
- 303: Fase: Ejecución. Responsable: Especialista de adquisiciones. PERT: O 23, M 29, P 35 días laborables; De = 29.0. Técnica: Calibrada.
- 304: Fase: Ejecución. Responsable: BID. PERT: O 3, M 5, P 7 días laborables; De = 5.0. Técnica: Dato del programa.
- 305: Fase: Ejecución. Responsable: CEPA. PERT: O 31, M 39, P 47 días laborables; De = 39.0. Técnica: Calibrada.
- 306: Fase: Planificación. Responsable: Especialista de adquisiciones. PERT: O 35, M 45, P 55 días laborables; De = 45.0. Técnica: Dato del programa.
- 307: Fase: Planificación. Responsable: BID. PERT: O 3, M 5, P 7 días laborables; De = 5.0. Técnica: Dato del programa.
- 308: Fase: Ejecución. Responsable: Especialista de adquisiciones. PERT: O 32, M 32, P 32 días laborables; De = 32.0. Técnica: Dato del programa.
- 309: Fase: Ejecución. Responsable: Especialista de adquisiciones. PERT: O 35, M 44, P 53 días laborables; De = 44.0. Técnica: Calibrada.
- 310: Fase: Ejecución. Responsable: BID. PERT: O 3, M 5, P 7 días laborables; De = 5.0. Técnica: Dato del programa.
- 311: Fase: Ejecución. Responsable: CEPA. PERT: O 49, M 61, P 73 días laborables; De = 61.0. Técnica: Calibrada.
- 312: Fase: Planificación. Responsable: Especialista de adquisiciones. PERT: O 35, M 45, P 55 días laborables; De = 45.0. Técnica: Dato del programa.
- 313: Fase: Planificación. Responsable: BID. PERT: O 3, M 5, P 7 días laborables; De = 5.0. Técnica: Dato del programa.
- 314: Fase: Ejecución. Responsable: Especialista de adquisiciones. PERT: O 25, M 31, P 37 días laborables; De = 31.0. Técnica: Análoga.
- 315: Fase: Ejecución. Responsable: Especialista de adquisiciones. PERT: O 22, M 28, P 34 días laborables; De = 28.0. Técnica: Calibrada.
- 316: Fase: Ejecución. Responsable: BID. PERT: O 3, M 5, P 7 días laborables; De = 5.0. Técnica: Dato del programa.
- 317: Fase: Ejecución. Responsable: CEPA. PERT: O 30, M 38, P 46 días laborables; De = 38.0. Técnica: Calibrada.
- 318: Fase: Planificación. Responsable: Especialista de adquisiciones. PERT: O 35, M 45, P 55 días laborables; De = 45.0. Técnica: Dato del programa.
- 319: Fase: Planificación. Responsable: BID. PERT: O 3, M 5, P 7 días laborables; De = 5.0. Técnica: Dato del programa.
- 320: Fase: Ejecución. Responsable: Especialista de adquisiciones. PERT: O 25, M 31, P 37 días laborables; De = 31.0. Técnica: Análoga.
- 321: Fase: Ejecución. Responsable: Especialista de adquisiciones. PERT: O 20, M 25, P 30 días laborables; De = 25.0. Técnica: Calibrada.
- 322: Fase: Ejecución. Responsable: BID. PERT: O 3, M 5, P 7 días laborables; De = 5.0. Técnica: Dato del programa.
- 323: Fase: Ejecución. Responsable: CEPA. PERT: O 27, M 34, P 41 días laborables; De = 34.0. Técnica: Calibrada.

| ID | WBS | Task | Duration | Start | Finish | Predecessors | Constraint | OPS_TaskDurationUnit |
| --- | --- | --- | --- | --- | --- | --- | --- | --- |
| 324 | 3.4.2 | **Contrato de supervisión firmado** | 321d | 2026-05-06 | 2027-07-28 |  |  | days |
| 325 | 3.4.2-01 | Preparar los términos de referencia, la solicitud de expresiones de interés y la lista corta de la supervisión del estacionamiento y el sistema solar | 17d | 2026-05-06 | 2026-05-28 | 272, 276 | start no earlier than 2026-05-06 | days |
| 326 | 3.4.2-02 | Obtener la no objeción del BID a los términos de referencia y a la lista corta de la supervisión del estacionamiento y el sistema solar | 5d | 2026-05-29 | 2026-06-04 | 325 |  | days |
| 327 | 3.4.2-03 | Invitar a las firmas de la lista corta y recibir las propuestas de la supervisión del estacionamiento y el sistema solar | 40d | 2026-06-05 | 2026-07-30 | 326 |  | days |
| 328 | 3.4.2-04 | Evaluar las propuestas técnicas y económicas y negociar el contrato de la supervisión del estacionamiento y el sistema solar | 124d | 2026-07-31 | 2027-01-20 | 327 |  | days |
| 329 | 3.4.2-05 | Obtener la no objeción del BID al informe de evaluación combinado y al contrato negociado de la supervisión del estacionamiento y el sistema solar | 5d | 2027-01-21 | 2027-01-27 | 328 |  | days |
| 330 | 3.4.2-06 | Firmar el contrato de supervisión del estacionamiento y el sistema solar | 5d | 2027-01-28 | 2027-02-03 | 329 |  | days |
| 331 | 3.4.2-07 | Publicar la solicitud de expresiones de interés de la supervisión de la terminal y conformar la lista corta | 20d | 2026-09-22 | 2026-10-19 | 247, 274, 282, 276 | start no earlier than 2026-09-22 | days |
| 332 | 3.4.2-08 | Obtener la no objeción del BID a los términos de referencia y a la lista corta de la supervisión de la terminal | 5d | 2026-10-20 | 2026-10-26 | 331 |  | days |
| 333 | 3.4.2-09 | Invitar a las firmas de la lista corta y recibir las propuestas de la supervisión de la terminal | 30d | 2026-10-27 | 2026-12-07 | 332 |  | days |
| 334 | 3.4.2-10 | Evaluar las propuestas técnicas y económicas y negociar el contrato de la supervisión de la terminal | 104d | 2026-12-08 | 2027-04-30 | 333 |  | days |
| 335 | 3.4.2-11 | Obtener la no objeción del BID al informe de evaluación combinado y al contrato negociado de la supervisión de la terminal | 5d | 2027-05-03 | 2027-05-07 | 334 |  | days |
| 336 | 3.4.2-12 | Firmar el contrato de supervisión de la terminal | 8d | 2027-05-10 | 2027-05-19 | 335 |  | days |
| 337 | 3.4.2-13 | Preparar los términos de referencia, la solicitud de expresiones de interés y la lista corta de la supervisión del SSEI | 47d | 2026-11-11 | 2027-01-14 | 247, 274, 282, 276 | start no earlier than 2026-11-11 | days |
| 338 | 3.4.2-14 | Obtener la no objeción del BID a los términos de referencia y a la lista corta de la supervisión del SSEI | 5d | 2027-01-15 | 2027-01-21 | 337 |  | days |
| 339 | 3.4.2-15 | Invitar a las firmas de la lista corta y recibir las propuestas de la supervisión del SSEI | 30d | 2027-01-22 | 2027-03-04 | 338 |  | days |
| 340 | 3.4.2-16 | Evaluar las propuestas técnicas y económicas y negociar el contrato de la supervisión del SSEI | 57d | 2027-03-05 | 2027-05-24 | 339 |  | days |
| 341 | 3.4.2-17 | Obtener la no objeción del BID al informe de evaluación combinado y al contrato negociado de la supervisión del SSEI | 5d | 2027-05-25 | 2027-05-31 | 340 |  | days |
| 342 | 3.4.2-18 | Firmar el contrato de supervisión del SSEI | 8d | 2027-06-01 | 2027-06-10 | 341 |  | days |
| 343 | 3.4.2-19 | Preparar los términos de referencia, la solicitud de expresiones de interés y la lista corta de la supervisión de las plataformas y la calle Foxtrot | 40d | 2027-01-19 | 2027-03-15 | 247, 274, 282, 276 | start no earlier than 2027-01-19 | days |
| 344 | 3.4.2-20 | Obtener la no objeción del BID a los términos de referencia y a la lista corta de la supervisión de las plataformas y la calle Foxtrot | 5d | 2027-03-16 | 2027-03-22 | 343 |  | days |
| 345 | 3.4.2-21 | Invitar a las firmas de la lista corta y recibir las propuestas de la supervisión de las plataformas y la calle Foxtrot | 30d | 2027-03-23 | 2027-05-03 | 344 |  | days |
| 346 | 3.4.2-22 | Evaluar las propuestas técnicas y económicas y negociar el contrato de la supervisión de las plataformas y la calle Foxtrot | 49d | 2027-05-04 | 2027-07-09 | 345 |  | days |
| 347 | 3.4.2-23 | Obtener la no objeción del BID al informe de evaluación combinado y al contrato negociado de la supervisión de las plataformas y la calle Foxtrot | 5d | 2027-07-12 | 2027-07-16 | 346 |  | days |
| 348 | 3.4.2-24 | Firmar el contrato de supervisión de las plataformas y la calle Foxtrot | 8d | 2027-07-19 | 2027-07-28 | 347 |  | days |

Notes:
- 324: Ejecutado por el personal de la UEP, sin costo adicional en la línea base.
- 325: Fase: Planificación. Responsable: Especialista de adquisiciones. PERT: O 14, M 17, P 20 días laborables; De = 17.0. Técnica: Dato del programa.
- 326: Fase: Planificación. Responsable: BID. PERT: O 3, M 5, P 7 días laborables; De = 5.0. Técnica: Dato del programa.
- 327: Fase: Ejecución. Responsable: Especialista de adquisiciones. PERT: O 30, M 40, P 50 días laborables; De = 40.0. Técnica: Juicio de expertos.
- 328: Fase: Ejecución. Responsable: Especialista de adquisiciones. PERT: O 99, M 124, P 149 días laborables; De = 124.0. Técnica: Calibrada.
- 329: Fase: Ejecución. Responsable: BID. PERT: O 3, M 5, P 7 días laborables; De = 5.0. Técnica: Dato del programa.
- 330: Fase: Ejecución. Responsable: CEPA. PERT: O 3, M 5, P 7 días laborables; De = 5.0. Técnica: Juicio de expertos.
- 331: Fase: Ejecución. Responsable: Especialista de adquisiciones. PERT: O 16, M 20, P 24 días laborables; De = 20.0. Técnica: Dato del programa.
- 332: Fase: Planificación. Responsable: BID. PERT: O 3, M 5, P 7 días laborables; De = 5.0. Técnica: Dato del programa.
- 333: Fase: Ejecución. Responsable: Especialista de adquisiciones. PERT: O 24, M 30, P 36 días laborables; De = 30.0. Técnica: Juicio de expertos.
- 334: Fase: Ejecución. Responsable: Especialista de adquisiciones. PERT: O 83, M 104, P 125 días laborables; De = 104.0. Técnica: Calibrada.
- 335: Fase: Ejecución. Responsable: BID. PERT: O 3, M 5, P 7 días laborables; De = 5.0. Técnica: Dato del programa.
- 336: Fase: Ejecución. Responsable: CEPA. PERT: O 6, M 8, P 10 días laborables; De = 8.0. Técnica: Juicio de expertos.
- 337: Fase: Planificación. Responsable: Especialista de adquisiciones. PERT: O 38, M 47, P 56 días laborables; De = 47.0. Técnica: Calibrada.
- 338: Fase: Planificación. Responsable: BID. PERT: O 3, M 5, P 7 días laborables; De = 5.0. Técnica: Dato del programa.
- 339: Fase: Ejecución. Responsable: Especialista de adquisiciones. PERT: O 24, M 30, P 36 días laborables; De = 30.0. Técnica: Juicio de expertos.
- 340: Fase: Ejecución. Responsable: Especialista de adquisiciones. PERT: O 46, M 57, P 68 días laborables; De = 57.0. Técnica: Calibrada.
- 341: Fase: Ejecución. Responsable: BID. PERT: O 3, M 5, P 7 días laborables; De = 5.0. Técnica: Dato del programa.
- 342: Fase: Ejecución. Responsable: CEPA. PERT: O 6, M 8, P 10 días laborables; De = 8.0. Técnica: Juicio de expertos.
- 343: Fase: Planificación. Responsable: Especialista de adquisiciones. PERT: O 32, M 40, P 48 días laborables; De = 40.0. Técnica: Calibrada.
- 344: Fase: Planificación. Responsable: BID. PERT: O 3, M 5, P 7 días laborables; De = 5.0. Técnica: Dato del programa.
- 345: Fase: Ejecución. Responsable: Especialista de adquisiciones. PERT: O 24, M 30, P 36 días laborables; De = 30.0. Técnica: Juicio de expertos.
- 346: Fase: Ejecución. Responsable: Especialista de adquisiciones. PERT: O 39, M 49, P 59 días laborables; De = 49.0. Técnica: Calibrada.
- 347: Fase: Ejecución. Responsable: BID. PERT: O 3, M 5, P 7 días laborables; De = 5.0. Técnica: Dato del programa.
- 348: Fase: Ejecución. Responsable: CEPA. PERT: O 6, M 8, P 10 días laborables; De = 8.0. Técnica: Juicio de expertos.

| ID | WBS | Task | Duration | Start | Finish | Predecessors | Constraint | OPS_TaskDurationUnit |
| --- | --- | --- | --- | --- | --- | --- | --- | --- |
| 349 | 3.4.3 | **Contratos de consultorías del Componente II firmados** | 147d | 2026-11-02 | 2027-05-25 |  |  | days |
| 350 | 3.4.3-01 | Incluir las consultorías del Componente II en el Plan de Adquisiciones | 15d | 2026-11-02 | 2026-11-20 | 274 | start no earlier than 2026-11-02 | days |
| 351 | 3.4.3-02 | Obtener la no objeción del BID a la actualización del PA con el Componente II | 5d | 2026-11-23 | 2026-11-27 | 350 |  | days |
| 352 | 3.4.3-03 | Preparar los términos de referencia, la solicitud de expresiones de interés y la lista corta para el plan estratégico del sistema aeronáutico (producto 2.1) | 40d | 2026-11-30 | 2027-01-22 | 247, 351 |  | days |
| 353 | 3.4.3-04 | Obtener la no objeción del BID a los términos de referencia y a la lista corta del plan estratégico del sistema aeronáutico (producto 2.1) | 5d | 2027-01-25 | 2027-01-29 | 352 |  | days |
| 354 | 3.4.3-05 | Invitar a las firmas de la lista corta y recibir las propuestas para el plan estratégico del sistema aeronáutico (producto 2.1) | 30d | 2027-02-01 | 2027-03-12 | 353 |  | days |
| 355 | 3.4.3-06 | Evaluar las propuestas y negociar el contrato para el plan estratégico del sistema aeronáutico (producto 2.1) | 35d | 2027-03-15 | 2027-04-30 | 354 |  | days |
| 356 | 3.4.3-07 | Obtener la no objeción del BID al informe de evaluación y al contrato negociado del plan estratégico del sistema aeronáutico (producto 2.1) | 7d | 2027-05-03 | 2027-05-11 | 355 |  | days |
| 357 | 3.4.3-08 | Firmar el contrato de consultoría para el plan estratégico del sistema aeronáutico (producto 2.1) | 10d | 2027-05-12 | 2027-05-25 | 356 |  | days |
| 358 | 3.4.3-09 | Preparar los términos de referencia, la solicitud de expresiones de interés y la lista corta para la actualización del Plan Maestro y la capacitación (productos 2.2.1 y 2.2.2) | 40d | 2026-11-30 | 2027-01-22 | 247, 351 |  | days |
| 359 | 3.4.3-10 | Obtener la no objeción del BID a los términos de referencia y a la lista corta de la actualización del Plan Maestro y la capacitación (productos 2.2.1 y 2.2.2) | 5d | 2027-01-25 | 2027-01-29 | 358 |  | days |
| 360 | 3.4.3-11 | Invitar a las firmas de la lista corta y recibir las propuestas para la actualización del Plan Maestro y la capacitación (productos 2.2.1 y 2.2.2) | 30d | 2027-02-01 | 2027-03-12 | 359 |  | days |
| 361 | 3.4.3-12 | Evaluar las propuestas y negociar el contrato para la actualización del Plan Maestro y la capacitación (productos 2.2.1 y 2.2.2) | 35d | 2027-03-15 | 2027-04-30 | 360 |  | days |
| 362 | 3.4.3-13 | Obtener la no objeción del BID al informe de evaluación y al contrato negociado de la actualización del Plan Maestro y la capacitación (productos 2.2.1 y 2.2.2) | 7d | 2027-05-03 | 2027-05-11 | 361 |  | days |
| 363 | 3.4.3-14 | Firmar el contrato de consultoría para la actualización del Plan Maestro y la capacitación (productos 2.2.1 y 2.2.2) | 10d | 2027-05-12 | 2027-05-25 | 362 |  | days |
| 364 | 3.4.3-15 | Preparar los términos de referencia y la solicitud de expresiones de interés para la estrategia y capacitación BIM (productos 2.3.1 y 2.3.2) | 20d | 2026-11-30 | 2026-12-25 | 247, 351 |  | days |
| 365 | 3.4.3-16 | Publicar la solicitud de expresiones de interés y conformar la lista corta internacional para la estrategia y capacitación BIM (productos 2.3.1 y 2.3.2) | 20d | 2026-12-28 | 2027-01-22 | 364, 276 |  | days |
| 366 | 3.4.3-17 | Invitar a las firmas de la lista corta y recibir las propuestas para la estrategia y capacitación BIM (productos 2.3.1 y 2.3.2) | 30d | 2027-02-01 | 2027-03-12 | 400 |  | days |
| 367 | 3.4.3-18 | Evaluar las propuestas y negociar el contrato para la estrategia y capacitación BIM (productos 2.3.1 y 2.3.2) | 35d | 2027-03-15 | 2027-04-30 | 366 |  | days |
| 368 | 3.4.3-19 | Adjudicar y firmar el contrato de consultoría para la estrategia y capacitación BIM (productos 2.3.1 y 2.3.2) | 10d | 2027-05-12 | 2027-05-25 | 401 |  | days |
| 369 | 3.4.3-20 | Preparar los términos de referencia, la solicitud de expresiones de interés y la lista corta para el estudio de conectividad terrestre (producto 2.4) | 40d | 2026-11-30 | 2027-01-22 | 247, 351 |  | days |
| 370 | 3.4.3-21 | Obtener la no objeción del BID a los términos de referencia y a la lista corta del estudio de conectividad terrestre (producto 2.4) | 5d | 2027-01-25 | 2027-01-29 | 369 |  | days |
| 371 | 3.4.3-22 | Invitar a las firmas de la lista corta y recibir las propuestas para el estudio de conectividad terrestre (producto 2.4) | 30d | 2027-02-01 | 2027-03-12 | 370 |  | days |
| 372 | 3.4.3-23 | Evaluar las propuestas y negociar el contrato para el estudio de conectividad terrestre (producto 2.4) | 35d | 2027-03-15 | 2027-04-30 | 371 |  | days |
| 373 | 3.4.3-24 | Obtener la no objeción del BID al informe de evaluación y al contrato negociado del estudio de conectividad terrestre (producto 2.4) | 7d | 2027-05-03 | 2027-05-11 | 372 |  | days |
| 374 | 3.4.3-25 | Firmar el contrato de consultoría para el estudio de conectividad terrestre (producto 2.4) | 10d | 2027-05-12 | 2027-05-25 | 373 |  | days |
| 375 | 3.4.3-26 | Preparar los términos de referencia y la solicitud de expresiones de interés para el estudio de diversificación de destinos (producto 2.5) | 20d | 2026-11-30 | 2026-12-25 | 247, 351 |  | days |
| 376 | 3.4.3-27 | Publicar la solicitud de expresiones de interés y conformar la lista corta nacional para el estudio de diversificación de destinos (producto 2.5) | 20d | 2026-12-28 | 2027-01-22 | 375, 276 |  | days |
| 377 | 3.4.3-28 | Invitar a las firmas de la lista corta y recibir las propuestas para el estudio de diversificación de destinos (producto 2.5) | 20d | 2027-02-01 | 2027-02-26 | 402 |  | days |
| 378 | 3.4.3-29 | Evaluar las propuestas y negociar el contrato para el estudio de diversificación de destinos (producto 2.5) | 20d | 2027-03-01 | 2027-03-26 | 377 |  | days |
| 379 | 3.4.3-30 | Adjudicar y firmar el contrato de consultoría para el estudio de diversificación de destinos (producto 2.5) | 10d | 2027-04-07 | 2027-04-20 | 403 |  | days |
| 380 | 3.4.3-31 | Preparar los términos de referencia y la solicitud de expresiones de interés para la auditoría y capacitación para la certificación EDGE (productos 2.6.1 y 2.6.2) | 20d | 2026-11-30 | 2026-12-25 | 247, 351 |  | days |
| 381 | 3.4.3-32 | Publicar la solicitud de expresiones de interés y conformar la lista corta nacional para la auditoría y capacitación para la certificación EDGE (productos 2.6.1 y 2.6.2) | 20d | 2026-12-28 | 2027-01-22 | 380, 276 |  | days |
| 382 | 3.4.3-33 | Invitar a las firmas de la lista corta y recibir las propuestas para la auditoría y capacitación para la certificación EDGE (productos 2.6.1 y 2.6.2) | 20d | 2027-02-01 | 2027-02-26 | 404 |  | days |
| 383 | 3.4.3-34 | Evaluar las propuestas y negociar el contrato para la auditoría y capacitación para la certificación EDGE (productos 2.6.1 y 2.6.2) | 20d | 2027-03-01 | 2027-03-26 | 382 |  | days |
| 384 | 3.4.3-35 | Adjudicar y firmar el contrato de consultoría para la auditoría y capacitación para la certificación EDGE (productos 2.6.1 y 2.6.2) | 10d | 2027-04-07 | 2027-04-20 | 405 |  | days |
| 385 | 3.4.3-36 | Preparar los términos de referencia y la solicitud de expresiones de interés para el estudio de separación de flujos (producto 2.7) | 20d | 2026-11-30 | 2026-12-25 | 247, 351 |  | days |
| 386 | 3.4.3-37 | Publicar la solicitud de expresiones de interés y conformar la lista corta nacional para el estudio de separación de flujos (producto 2.7) | 20d | 2026-12-28 | 2027-01-22 | 385, 276 |  | days |
| 387 | 3.4.3-38 | Invitar a las firmas de la lista corta y recibir las propuestas para el estudio de separación de flujos (producto 2.7) | 20d | 2027-02-01 | 2027-02-26 | 406 |  | days |
| 388 | 3.4.3-39 | Evaluar las propuestas y negociar el contrato para el estudio de separación de flujos (producto 2.7) | 20d | 2027-03-01 | 2027-03-26 | 387 |  | days |
| 389 | 3.4.3-40 | Adjudicar y firmar el contrato de consultoría para el estudio de separación de flujos (producto 2.7) | 10d | 2027-04-07 | 2027-04-20 | 407 |  | days |
| 390 | 3.4.3-41 | Preparar los términos de referencia y la solicitud de expresiones de interés para el estudio de movilidad interna (producto 2.8) | 20d | 2026-11-30 | 2026-12-25 | 247, 351 |  | days |
| 391 | 3.4.3-42 | Publicar la solicitud de expresiones de interés y conformar la lista corta nacional para el estudio de movilidad interna (producto 2.8) | 20d | 2026-12-28 | 2027-01-22 | 390, 276 |  | days |
| 392 | 3.4.3-43 | Invitar a las firmas de la lista corta y recibir las propuestas para el estudio de movilidad interna (producto 2.8) | 20d | 2027-02-01 | 2027-02-26 | 408 |  | days |
| 393 | 3.4.3-44 | Evaluar las propuestas y negociar el contrato para el estudio de movilidad interna (producto 2.8) | 20d | 2027-03-01 | 2027-03-26 | 392 |  | days |
| 394 | 3.4.3-45 | Adjudicar y firmar el contrato de consultoría para el estudio de movilidad interna (producto 2.8) | 10d | 2027-04-07 | 2027-04-20 | 409 |  | days |
| 395 | 3.4.3-46 | Preparar los términos de referencia y la solicitud de expresiones de interés para el programa de igualdad e inclusión (producto 2.9) | 20d | 2026-11-30 | 2026-12-25 | 247, 351 |  | days |
| 396 | 3.4.3-47 | Publicar la solicitud de expresiones de interés y conformar la lista corta nacional para el programa de igualdad e inclusión (producto 2.9) | 20d | 2026-12-28 | 2027-01-22 | 395, 276 |  | days |
| 397 | 3.4.3-48 | Invitar a las firmas de la lista corta y recibir las propuestas para el programa de igualdad e inclusión (producto 2.9) | 20d | 2027-02-01 | 2027-02-26 | 410 |  | days |
| 398 | 3.4.3-49 | Evaluar las propuestas y negociar el contrato para el programa de igualdad e inclusión (producto 2.9) | 20d | 2027-03-01 | 2027-03-26 | 397 |  | days |
| 399 | 3.4.3-50 | Adjudicar y firmar el contrato de consultoría para el programa de igualdad e inclusión (producto 2.9) | 10d | 2027-04-07 | 2027-04-20 | 411 |  | days |
| 400 | 3.4.3-51 | Obtener la no objeción del BID a los términos de referencia y a la lista corta para la estrategia y capacitación BIM (productos 2.3.1 y 2.3.2) | 5d | 2027-01-25 | 2027-01-29 | 365 |  | days |
| 401 | 3.4.3-52 | Obtener la no objeción del BID al informe de evaluación y al contrato negociado para la estrategia y capacitación BIM (productos 2.3.1 y 2.3.2) | 7d | 2027-05-03 | 2027-05-11 | 367 |  | days |
| 402 | 3.4.3-53 | Obtener la no objeción del BID a los términos de referencia y a la lista corta para el estudio de diversificación de destinos (producto 2.5) | 5d | 2027-01-25 | 2027-01-29 | 376 |  | days |
| 403 | 3.4.3-54 | Obtener la no objeción del BID al informe de evaluación y al contrato negociado para el estudio de diversificación de destinos (producto 2.5) | 7d | 2027-03-29 | 2027-04-06 | 378 |  | days |
| 404 | 3.4.3-55 | Obtener la no objeción del BID a los términos de referencia y a la lista corta para la auditoría y capacitación para la certificación EDGE (productos 2.6.1 y 2.6.2) | 5d | 2027-01-25 | 2027-01-29 | 381 |  | days |
| 405 | 3.4.3-56 | Obtener la no objeción del BID al informe de evaluación y al contrato negociado para la auditoría y capacitación para la certificación EDGE (productos 2.6.1 y 2.6.2) | 7d | 2027-03-29 | 2027-04-06 | 383 |  | days |
| 406 | 3.4.3-57 | Obtener la no objeción del BID a los términos de referencia y a la lista corta para el estudio de separación de flujos (producto 2.7) | 5d | 2027-01-25 | 2027-01-29 | 386 |  | days |
| 407 | 3.4.3-58 | Obtener la no objeción del BID al informe de evaluación y al contrato negociado para el estudio de separación de flujos (producto 2.7) | 7d | 2027-03-29 | 2027-04-06 | 388 |  | days |
| 408 | 3.4.3-59 | Obtener la no objeción del BID a los términos de referencia y a la lista corta para el estudio de movilidad interna (producto 2.8) | 5d | 2027-01-25 | 2027-01-29 | 391 |  | days |
| 409 | 3.4.3-60 | Obtener la no objeción del BID al informe de evaluación y al contrato negociado para el estudio de movilidad interna (producto 2.8) | 7d | 2027-03-29 | 2027-04-06 | 393 |  | days |
| 410 | 3.4.3-61 | Obtener la no objeción del BID a los términos de referencia y a la lista corta para el programa de igualdad e inclusión (producto 2.9) | 5d | 2027-01-25 | 2027-01-29 | 396 |  | days |
| 411 | 3.4.3-62 | Obtener la no objeción del BID al informe de evaluación y al contrato negociado para el programa de igualdad e inclusión (producto 2.9) | 7d | 2027-03-29 | 2027-04-06 | 398 |  | days |

Notes:
- 349: Ejecutado por el personal de la UEP, sin costo adicional en la línea base.
- 350: Fase: Planificación. Responsable: Especialista de adquisiciones. PERT: O 10, M 15, P 20 días laborables; De = 15.0. Técnica: Juicio de expertos.
- 351: Fase: Planificación. Responsable: BID. PERT: O 3, M 5, P 7 días laborables; De = 5.0. Técnica: Dato del programa.
- 352: Fase: Planificación. Responsable: Especialista de adquisiciones. PERT: O 32, M 40, P 48 días laborables; De = 40.0. Técnica: Juicio de expertos.
- 353: Fase: Planificación. Responsable: BID. PERT: O 3, M 5, P 7 días laborables; De = 5.0. Técnica: Dato del programa.
- 354: Fase: Ejecución. Responsable: Especialista de adquisiciones. PERT: O 24, M 30, P 36 días laborables; De = 30.0. Técnica: Juicio de expertos.
- 355: Fase: Ejecución. Responsable: Especialista de adquisiciones. PERT: O 28, M 35, P 42 días laborables; De = 35.0. Técnica: Juicio de expertos.
- 356: Fase: Ejecución. Responsable: BID. PERT: O 5, M 7, P 9 días laborables; De = 7.0. Técnica: Juicio de expertos.
- 357: Fase: Ejecución. Responsable: CEPA. PERT: O 8, M 10, P 12 días laborables; De = 10.0. Técnica: Juicio de expertos.
- 358: Fase: Planificación. Responsable: Especialista de adquisiciones. PERT: O 32, M 40, P 48 días laborables; De = 40.0. Técnica: Juicio de expertos.
- 359: Fase: Planificación. Responsable: BID. PERT: O 3, M 5, P 7 días laborables; De = 5.0. Técnica: Dato del programa.
- 360: Fase: Ejecución. Responsable: Especialista de adquisiciones. PERT: O 24, M 30, P 36 días laborables; De = 30.0. Técnica: Juicio de expertos.
- 361: Fase: Ejecución. Responsable: Especialista de adquisiciones. PERT: O 28, M 35, P 42 días laborables; De = 35.0. Técnica: Juicio de expertos.
- 362: Fase: Ejecución. Responsable: BID. PERT: O 5, M 7, P 9 días laborables; De = 7.0. Técnica: Juicio de expertos.
- 363: Fase: Ejecución. Responsable: CEPA. PERT: O 8, M 10, P 12 días laborables; De = 10.0. Técnica: Juicio de expertos.
- 364: Fase: Planificación. Responsable: Especialista de adquisiciones. PERT: O 16, M 20, P 24 días laborables; De = 20.0. Técnica: Juicio de expertos.
- 365: Fase: Ejecución. Responsable: Especialista de adquisiciones. PERT: O 16, M 20, P 24 días laborables; De = 20.0. Técnica: Juicio de expertos.
- 366: Fase: Ejecución. Responsable: Especialista de adquisiciones. PERT: O 24, M 30, P 36 días laborables; De = 30.0. Técnica: Juicio de expertos.
- 367: Fase: Ejecución. Responsable: Especialista de adquisiciones. PERT: O 28, M 35, P 42 días laborables; De = 35.0. Técnica: Juicio de expertos.
- 368: Fase: Ejecución. Responsable: CEPA. PERT: O 8, M 10, P 12 días laborables; De = 10.0. Técnica: Juicio de expertos.
- 369: Fase: Planificación. Responsable: Especialista de adquisiciones. PERT: O 32, M 40, P 48 días laborables; De = 40.0. Técnica: Juicio de expertos.
- 370: Fase: Planificación. Responsable: BID. PERT: O 3, M 5, P 7 días laborables; De = 5.0. Técnica: Dato del programa.
- 371: Fase: Ejecución. Responsable: Especialista de adquisiciones. PERT: O 24, M 30, P 36 días laborables; De = 30.0. Técnica: Juicio de expertos.
- 372: Fase: Ejecución. Responsable: Especialista de adquisiciones. PERT: O 28, M 35, P 42 días laborables; De = 35.0. Técnica: Juicio de expertos.
- 373: Fase: Ejecución. Responsable: BID. PERT: O 5, M 7, P 9 días laborables; De = 7.0. Técnica: Juicio de expertos.
- 374: Fase: Ejecución. Responsable: CEPA. PERT: O 8, M 10, P 12 días laborables; De = 10.0. Técnica: Juicio de expertos.
- 375: Fase: Planificación. Responsable: Especialista de adquisiciones. PERT: O 16, M 20, P 24 días laborables; De = 20.0. Técnica: Juicio de expertos.
- 376: Fase: Ejecución. Responsable: Especialista de adquisiciones. PERT: O 16, M 20, P 24 días laborables; De = 20.0. Técnica: Juicio de expertos.
- 377: Fase: Ejecución. Responsable: Especialista de adquisiciones. PERT: O 16, M 20, P 24 días laborables; De = 20.0. Técnica: Juicio de expertos.
- 378: Fase: Ejecución. Responsable: Especialista de adquisiciones. PERT: O 16, M 20, P 24 días laborables; De = 20.0. Técnica: Juicio de expertos.
- 379: Fase: Ejecución. Responsable: CEPA. PERT: O 8, M 10, P 12 días laborables; De = 10.0. Técnica: Juicio de expertos.
- 380: Fase: Planificación. Responsable: Especialista de adquisiciones. PERT: O 16, M 20, P 24 días laborables; De = 20.0. Técnica: Juicio de expertos.
- 381: Fase: Ejecución. Responsable: Especialista de adquisiciones. PERT: O 16, M 20, P 24 días laborables; De = 20.0. Técnica: Juicio de expertos.
- 382: Fase: Ejecución. Responsable: Especialista de adquisiciones. PERT: O 16, M 20, P 24 días laborables; De = 20.0. Técnica: Juicio de expertos.
- 383: Fase: Ejecución. Responsable: Especialista de adquisiciones. PERT: O 16, M 20, P 24 días laborables; De = 20.0. Técnica: Juicio de expertos.
- 384: Fase: Ejecución. Responsable: CEPA. PERT: O 8, M 10, P 12 días laborables; De = 10.0. Técnica: Juicio de expertos.
- 385: Fase: Planificación. Responsable: Especialista de adquisiciones. PERT: O 16, M 20, P 24 días laborables; De = 20.0. Técnica: Juicio de expertos.
- 386: Fase: Ejecución. Responsable: Especialista de adquisiciones. PERT: O 16, M 20, P 24 días laborables; De = 20.0. Técnica: Juicio de expertos.
- 387: Fase: Ejecución. Responsable: Especialista de adquisiciones. PERT: O 16, M 20, P 24 días laborables; De = 20.0. Técnica: Juicio de expertos.
- 388: Fase: Ejecución. Responsable: Especialista de adquisiciones. PERT: O 16, M 20, P 24 días laborables; De = 20.0. Técnica: Juicio de expertos.
- 389: Fase: Ejecución. Responsable: CEPA. PERT: O 8, M 10, P 12 días laborables; De = 10.0. Técnica: Juicio de expertos.
- 390: Fase: Planificación. Responsable: Especialista de adquisiciones. PERT: O 16, M 20, P 24 días laborables; De = 20.0. Técnica: Juicio de expertos.
- 391: Fase: Ejecución. Responsable: Especialista de adquisiciones. PERT: O 16, M 20, P 24 días laborables; De = 20.0. Técnica: Juicio de expertos.
- 392: Fase: Ejecución. Responsable: Especialista de adquisiciones. PERT: O 16, M 20, P 24 días laborables; De = 20.0. Técnica: Juicio de expertos.
- 393: Fase: Ejecución. Responsable: Especialista de adquisiciones. PERT: O 16, M 20, P 24 días laborables; De = 20.0. Técnica: Juicio de expertos.
- 394: Fase: Ejecución. Responsable: CEPA. PERT: O 8, M 10, P 12 días laborables; De = 10.0. Técnica: Juicio de expertos.
- 395: Fase: Planificación. Responsable: Especialista de adquisiciones. PERT: O 16, M 20, P 24 días laborables; De = 20.0. Técnica: Juicio de expertos.
- 396: Fase: Ejecución. Responsable: Especialista de adquisiciones. PERT: O 16, M 20, P 24 días laborables; De = 20.0. Técnica: Juicio de expertos.
- 397: Fase: Ejecución. Responsable: Especialista de adquisiciones. PERT: O 16, M 20, P 24 días laborables; De = 20.0. Técnica: Juicio de expertos.
- 398: Fase: Ejecución. Responsable: Especialista de adquisiciones. PERT: O 16, M 20, P 24 días laborables; De = 20.0. Técnica: Juicio de expertos.
- 399: Fase: Ejecución. Responsable: CEPA. PERT: O 8, M 10, P 12 días laborables; De = 10.0. Técnica: Juicio de expertos.
- 400: Fase: Planificación. Responsable: BID. PERT: O 3, M 5, P 7 días laborables; De = 5.0. Técnica: Dato del programa.
- 401: Fase: Ejecución. Responsable: BID. PERT: O 5, M 7, P 9 días laborables; De = 7.0. Técnica: Juicio de expertos.
- 402: Fase: Planificación. Responsable: BID. PERT: O 3, M 5, P 7 días laborables; De = 5.0. Técnica: Dato del programa.
- 403: Fase: Ejecución. Responsable: BID. PERT: O 5, M 7, P 9 días laborables; De = 7.0. Técnica: Juicio de expertos.
- 404: Fase: Planificación. Responsable: BID. PERT: O 3, M 5, P 7 días laborables; De = 5.0. Técnica: Dato del programa.
- 405: Fase: Ejecución. Responsable: BID. PERT: O 5, M 7, P 9 días laborables; De = 7.0. Técnica: Juicio de expertos.
- 406: Fase: Planificación. Responsable: BID. PERT: O 3, M 5, P 7 días laborables; De = 5.0. Técnica: Dato del programa.
- 407: Fase: Ejecución. Responsable: BID. PERT: O 5, M 7, P 9 días laborables; De = 7.0. Técnica: Juicio de expertos.
- 408: Fase: Planificación. Responsable: BID. PERT: O 3, M 5, P 7 días laborables; De = 5.0. Técnica: Dato del programa.
- 409: Fase: Ejecución. Responsable: BID. PERT: O 5, M 7, P 9 días laborables; De = 7.0. Técnica: Juicio de expertos.
- 410: Fase: Planificación. Responsable: BID. PERT: O 3, M 5, P 7 días laborables; De = 5.0. Técnica: Dato del programa.
- 411: Fase: Ejecución. Responsable: BID. PERT: O 5, M 7, P 9 días laborables; De = 7.0. Técnica: Juicio de expertos.

| ID | WBS | Task | Duration | Start | Finish | Predecessors | Constraint | OPS_TaskDurationUnit |
| --- | --- | --- | --- | --- | --- | --- | --- | --- |
| 412 | 3.4.4 | **Contratos de la unidad ejecutora, evaluación y auditoría firmados** | 908d | 2026-02-02 | 2029-07-25 |  |  | days |
| 413 | 3.4.4-01 | Preparar los términos de referencia y la convocatoria de los siete consultores clave de la UEP | 18d | 2026-02-02 | 2026-02-25 |  | start no earlier than 2026-02-02 | days |
| 414 | 3.4.4-02 | Obtener la no objeción del BID a los términos de referencia de los siete consultores clave | 5d | 2026-02-26 | 2026-03-04 | 413 |  | days |
| 415 | 3.4.4-03 | Recibir los currículos, evaluar y seleccionar a los siete consultores clave | 20d | 2026-03-05 | 2026-04-01 | 414 |  | days |
| 416 | 3.4.4-04 | Obtener la no objeción del BID a la selección de los siete consultores clave | 5d | 2026-04-02 | 2026-04-08 | 415 |  | days |
| 417 | 3.4.4-05 | Firmar los contratos de los siete consultores clave de la UEP | 5d | 2026-04-09 | 2026-04-15 | 416 |  | days |
| 418 | 3.4.4-06 | Preparar los términos de referencia y la convocatoria del técnico de apoyo administrativo | 10d | 2026-07-15 | 2026-07-28 | 239, 274 | start no earlier than 2026-07-14 | days |
| 419 | 3.4.4-07 | Obtener la no objeción del BID a los términos de referencia del técnico de apoyo | 5d | 2026-07-29 | 2026-08-04 | 418 |  | days |
| 420 | 3.4.4-08 | Recibir los currículos, evaluar y seleccionar al técnico de apoyo | 20d | 2026-08-05 | 2026-09-01 | 419 |  | days |
| 421 | 3.4.4-09 | Obtener la no objeción del BID a la selección del técnico de apoyo | 5d | 2026-09-02 | 2026-09-08 | 420 |  | days |
| 422 | 3.4.4-10 | Firmar el contrato del técnico de apoyo administrativo | 5d | 2026-09-09 | 2026-09-15 | 421 |  | days |
| 423 | 3.4.4-11 | Preparar los términos de referencia y la lista corta de la auditoría externa año 1 | 5d | 2027-04-01 | 2027-04-07 | 247, 272 | start no earlier than 2027-04-01 | days |
| 424 | 3.4.4-12 | Obtener la no objeción del BID a los términos de referencia de la auditoría año 1 | 5d | 2027-04-08 | 2027-04-14 | 423 |  | days |
| 425 | 3.4.4-13 | Invitar a las firmas, recibir y evaluar las propuestas de la auditoría año 1 por menor costo | 5d | 2027-04-15 | 2027-04-21 | 424 |  | days |
| 426 | 3.4.4-14 | Obtener la no objeción del BID a la recomendación de adjudicación de la auditoría año 1 | 5d | 2027-04-22 | 2027-04-28 | 425 |  | days |
| 427 | 3.4.4-15 | Firmar el contrato de la auditoría externa año 1 | 5d | 2027-04-29 | 2027-05-05 | 426 |  | days |
| 428 | 3.4.4-16 | Preparar los términos de referencia y la lista corta de la auditoría externa año 2 | 30d | 2027-09-13 | 2027-10-22 | 247, 274 | start no earlier than 2027-09-13 | days |
| 429 | 3.4.4-17 | Obtener la no objeción del BID a los términos de referencia de la auditoría año 2 | 5d | 2027-10-25 | 2027-10-29 | 428 |  | days |
| 430 | 3.4.4-18 | Invitar a las firmas, recibir y evaluar las propuestas de la auditoría año 2 por menor costo | 25d | 2027-11-01 | 2027-12-03 | 429 |  | days |
| 431 | 3.4.4-19 | Obtener la no objeción del BID a la recomendación de adjudicación de la auditoría año 2 | 5d | 2027-12-06 | 2027-12-10 | 430 |  | days |
| 432 | 3.4.4-20 | Firmar el contrato de la auditoría externa año 2 | 8d | 2027-12-13 | 2027-12-22 | 431 |  | days |
| 433 | 3.4.4-21 | Preparar los términos de referencia y la lista corta de la auditoría externa año 3 | 30d | 2028-09-12 | 2028-10-23 | 247, 274 | start no earlier than 2028-09-12 | days |
| 434 | 3.4.4-22 | Obtener la no objeción del BID a los términos de referencia de la auditoría año 3 | 5d | 2028-10-24 | 2028-10-30 | 433 |  | days |
| 435 | 3.4.4-23 | Invitar a las firmas, recibir y evaluar las propuestas de la auditoría año 3 por menor costo | 25d | 2028-10-31 | 2028-12-04 | 434 |  | days |
| 436 | 3.4.4-24 | Obtener la no objeción del BID a la recomendación de adjudicación de la auditoría año 3 | 5d | 2028-12-05 | 2028-12-11 | 435 |  | days |
| 437 | 3.4.4-25 | Firmar el contrato de la auditoría externa año 3 | 8d | 2028-12-12 | 2028-12-21 | 436 |  | days |
| 438 | 3.4.4-26 | Preparar los términos de referencia y la lista corta de la auditoría externa año 4 | 30d | 2029-04-16 | 2029-05-25 | 247, 274 | start no earlier than 2029-04-16 | days |
| 439 | 3.4.4-27 | Obtener la no objeción del BID a los términos de referencia de la auditoría año 4 | 5d | 2029-05-28 | 2029-06-01 | 438 |  | days |
| 440 | 3.4.4-28 | Invitar a las firmas, recibir y evaluar las propuestas de la auditoría año 4 por menor costo | 25d | 2029-06-04 | 2029-07-06 | 439 |  | days |
| 441 | 3.4.4-29 | Obtener la no objeción del BID a la recomendación de adjudicación de la auditoría año 4 | 5d | 2029-07-09 | 2029-07-13 | 440 |  | days |
| 442 | 3.4.4-30 | Firmar el contrato de la auditoría externa año 4 | 8d | 2029-07-16 | 2029-07-25 | 441 |  | days |
| 443 | 3.4.4-31 | Preparar los términos de referencia y la solicitud de expresiones de interés de la evaluación de medio término | 15d | 2027-06-18 | 2027-07-08 | 247, 274, 510 |  | days |
| 444 | 3.4.4-32 | Publicar la solicitud de expresiones de interés y conformar la lista corta nacional de la evaluación de medio término | 15d | 2027-07-09 | 2027-07-29 | 443, 276 |  | days |
| 445 | 3.4.4-33 | Invitar a las firmas de la lista corta y recibir las propuestas de la evaluación de medio término | 17d | 2027-08-06 | 2027-08-30 | 453 |  | days |
| 446 | 3.4.4-34 | Evaluar las propuestas y negociar el contrato de la evaluación de medio término | 28d | 2027-08-31 | 2027-10-07 | 445 |  | days |
| 447 | 3.4.4-35 | Adjudicar y firmar el contrato de la evaluación de medio término | 10d | 2027-10-19 | 2027-11-01 | 454 |  | days |
| 448 | 3.4.4-36 | Preparar los términos de referencia y la solicitud de expresiones de interés de la evaluación final | 15d | 2028-12-25 | 2029-01-12 | 247, 274, 53FS-60d |  | days |
| 449 | 3.4.4-37 | Publicar la solicitud de expresiones de interés y conformar la lista corta nacional de la evaluación final | 15d | 2029-01-15 | 2029-02-02 | 448, 276 |  | days |
| 450 | 3.4.4-38 | Invitar a las firmas de la lista corta y recibir las propuestas de la evaluación final | 17d | 2029-02-12 | 2029-03-06 | 455 |  | days |
| 451 | 3.4.4-39 | Evaluar las propuestas y negociar el contrato de la evaluación final | 29d | 2029-03-07 | 2029-04-16 | 450 |  | days |
| 452 | 3.4.4-40 | Adjudicar y firmar el contrato de la evaluación final | 10d | 2029-04-26 | 2029-05-09 | 456 |  | days |
| 453 | 3.4.4-41 | Obtener la no objeción del BID a los términos de referencia y a la lista corta de la evaluación de medio término | 5d | 2027-07-30 | 2027-08-05 | 444 |  | days |
| 454 | 3.4.4-42 | Obtener la no objeción del BID al informe de evaluación y al contrato negociado de la evaluación de medio término | 7d | 2027-10-08 | 2027-10-18 | 446 |  | days |
| 455 | 3.4.4-43 | Obtener la no objeción del BID a los términos de referencia y a la lista corta de la evaluación final | 5d | 2029-02-05 | 2029-02-09 | 449 |  | days |
| 456 | 3.4.4-44 | Obtener la no objeción del BID al informe de evaluación y al contrato negociado de la evaluación final | 7d | 2029-04-17 | 2029-04-25 | 451 |  | days |
| 457 | 3.4.4-45 | Preparar los términos de referencia y la convocatoria de los consultores individuales del lote 1 de la plantilla ampliada de la UEP (diez puestos, agosto de 2026) | 10d | 2026-08-14 | 2026-08-27 | 239, 274 | start no earlier than 2026-08-14 | days |
| 458 | 3.4.4-46 | Obtener la no objeción del BID a los términos de referencia del lote 1 de la plantilla ampliada de la UEP (diez puestos, agosto de 2026) | 5d | 2026-08-28 | 2026-09-03 | 457 |  | days |
| 459 | 3.4.4-47 | Recibir los currículos, comparar las calificaciones y seleccionar a los consultores del lote 1 de la plantilla ampliada de la UEP (diez puestos, agosto de 2026) | 20d | 2026-09-04 | 2026-10-01 | 458 |  | days |
| 460 | 3.4.4-48 | Obtener la no objeción del BID a la selección de los consultores del lote 1 de la plantilla ampliada de la UEP (diez puestos, agosto de 2026) | 5d | 2026-10-02 | 2026-10-08 | 459 |  | days |
| 461 | 3.4.4-49 | Firmar los contratos de los consultores individuales del lote 1 de la plantilla ampliada de la UEP (diez puestos, agosto de 2026) | 5d | 2026-10-09 | 2026-10-15 | 460 |  | days |
| 462 | 3.4.4-50 | Preparar los términos de referencia y la convocatoria de los consultores individuales del lote 2 de la plantilla ampliada de la UEP (pavimentos aeroportuarios, septiembre de 2026) | 10d | 2026-09-04 | 2026-09-17 | 239, 274 | start no earlier than 2026-09-04 | days |
| 463 | 3.4.4-51 | Obtener la no objeción del BID a los términos de referencia del lote 2 de la plantilla ampliada de la UEP (pavimentos aeroportuarios, septiembre de 2026) | 5d | 2026-09-18 | 2026-09-24 | 462 |  | days |
| 464 | 3.4.4-52 | Recibir los currículos, comparar las calificaciones y seleccionar a los consultores del lote 2 de la plantilla ampliada de la UEP (pavimentos aeroportuarios, septiembre de 2026) | 20d | 2026-09-25 | 2026-10-22 | 463 |  | days |
| 465 | 3.4.4-53 | Obtener la no objeción del BID a la selección de los consultores del lote 2 de la plantilla ampliada de la UEP (pavimentos aeroportuarios, septiembre de 2026) | 5d | 2026-10-23 | 2026-10-29 | 464 |  | days |
| 466 | 3.4.4-54 | Firmar los contratos de los consultores individuales del lote 2 de la plantilla ampliada de la UEP (pavimentos aeroportuarios, septiembre de 2026) | 5d | 2026-10-30 | 2026-11-05 | 465 |  | days |
| 467 | 3.4.4-55 | Preparar los términos de referencia y la convocatoria de los consultores individuales del lote 3 de la plantilla ampliada de la UEP (analista social, septiembre de 2026) | 10d | 2026-09-16 | 2026-09-29 | 239, 274 | start no earlier than 2026-09-16 | days |
| 468 | 3.4.4-56 | Obtener la no objeción del BID a los términos de referencia del lote 3 de la plantilla ampliada de la UEP (analista social, septiembre de 2026) | 5d | 2026-09-30 | 2026-10-06 | 467 |  | days |
| 469 | 3.4.4-57 | Recibir los currículos, comparar las calificaciones y seleccionar a los consultores del lote 3 de la plantilla ampliada de la UEP (analista social, septiembre de 2026) | 20d | 2026-10-07 | 2026-11-03 | 468 |  | days |
| 470 | 3.4.4-58 | Obtener la no objeción del BID a la selección de los consultores del lote 3 de la plantilla ampliada de la UEP (analista social, septiembre de 2026) | 5d | 2026-11-04 | 2026-11-10 | 469 |  | days |
| 471 | 3.4.4-59 | Firmar los contratos de los consultores individuales del lote 3 de la plantilla ampliada de la UEP (analista social, septiembre de 2026) | 5d | 2026-11-11 | 2026-11-17 | 470 |  | days |
| 472 | 3.4.4-60 | Preparar los términos de referencia y la convocatoria de los consultores individuales del lote 4 de la plantilla ampliada de la UEP (tres puestos, enero de 2027) | 10d | 2027-01-14 | 2027-01-27 | 239, 274 | start no earlier than 2027-01-14 | days |
| 473 | 3.4.4-61 | Obtener la no objeción del BID a los términos de referencia del lote 4 de la plantilla ampliada de la UEP (tres puestos, enero de 2027) | 5d | 2027-01-28 | 2027-02-03 | 472 |  | days |
| 474 | 3.4.4-62 | Recibir los currículos, comparar las calificaciones y seleccionar a los consultores del lote 4 de la plantilla ampliada de la UEP (tres puestos, enero de 2027) | 20d | 2027-02-04 | 2027-03-03 | 473 |  | days |
| 475 | 3.4.4-63 | Obtener la no objeción del BID a la selección de los consultores del lote 4 de la plantilla ampliada de la UEP (tres puestos, enero de 2027) | 5d | 2027-03-04 | 2027-03-10 | 474 |  | days |
| 476 | 3.4.4-64 | Firmar los contratos de los consultores individuales del lote 4 de la plantilla ampliada de la UEP (tres puestos, enero de 2027) | 5d | 2027-03-11 | 2027-03-17 | 475 |  | days |
| 477 | 3.4.4-65 | Preparar los términos de referencia y la convocatoria de los consultores individuales del lote 5 de la plantilla ampliada de la UEP (cinco puestos, marzo de 2027) | 10d | 2027-03-23 | 2027-04-05 | 239, 274 | start no earlier than 2027-03-23 | days |
| 478 | 3.4.4-66 | Obtener la no objeción del BID a los términos de referencia del lote 5 de la plantilla ampliada de la UEP (cinco puestos, marzo de 2027) | 5d | 2027-04-06 | 2027-04-12 | 477 |  | days |
| 479 | 3.4.4-67 | Recibir los currículos, comparar las calificaciones y seleccionar a los consultores del lote 5 de la plantilla ampliada de la UEP (cinco puestos, marzo de 2027) | 20d | 2027-04-13 | 2027-05-10 | 478 |  | days |
| 480 | 3.4.4-68 | Obtener la no objeción del BID a la selección de los consultores del lote 5 de la plantilla ampliada de la UEP (cinco puestos, marzo de 2027) | 5d | 2027-05-11 | 2027-05-17 | 479 |  | days |
| 481 | 3.4.4-69 | Firmar los contratos de los consultores individuales del lote 5 de la plantilla ampliada de la UEP (cinco puestos, marzo de 2027) | 5d | 2027-05-18 | 2027-05-24 | 480 |  | days |

Notes:
- 412: Ejecutado por el personal de la UEP, sin costo adicional en la línea base.
- 413: Fase: Inicio. Responsable: CEPA. PERT: O 14, M 18, P 22 días laborables; De = 18.0. Técnica: Dato del programa.
- 414: Fase: Inicio. Responsable: BID. PERT: O 3, M 5, P 7 días laborables; De = 5.0. Técnica: Dato del programa.
- 415: Fase: Inicio. Responsable: CEPA. PERT: O 16, M 20, P 24 días laborables; De = 20.0. Técnica: Dato del programa.
- 416: Fase: Inicio. Responsable: BID. PERT: O 3, M 5, P 7 días laborables; De = 5.0. Técnica: Dato del programa.
- 417: Fase: Inicio. Responsable: CEPA. PERT: O 3, M 5, P 7 días laborables; De = 5.0. Técnica: Dato del programa.
- 418: Fase: Planificación. Responsable: Especialista de adquisiciones. PERT: O 8, M 10, P 12 días laborables; De = 10.0. Técnica: Dato del programa.
- 419: Fase: Planificación. Responsable: BID. PERT: O 3, M 5, P 7 días laborables; De = 5.0. Técnica: Dato del programa.
- 420: Fase: Ejecución. Responsable: Especialista de adquisiciones. PERT: O 16, M 20, P 24 días laborables; De = 20.0. Técnica: Dato del programa.
- 421: Fase: Ejecución. Responsable: BID. PERT: O 3, M 5, P 7 días laborables; De = 5.0. Técnica: Dato del programa.
- 422: Fase: Ejecución. Responsable: CEPA. PERT: O 3, M 5, P 7 días laborables; De = 5.0. Técnica: Dato del programa.
- 423: Fase: Planificación. Responsable: Especialista de adquisiciones. PERT: O 3, M 5, P 7 días laborables; De = 5.0. Técnica: Dato del programa.
- 424: Fase: Planificación. Responsable: BID. PERT: O 3, M 5, P 7 días laborables; De = 5.0. Técnica: Dato del programa.
- 425: Fase: Ejecución. Responsable: Especialista de adquisiciones. PERT: O 3, M 5, P 7 días laborables; De = 5.0. Técnica: Dato del programa.
- 426: Fase: Ejecución. Responsable: BID. PERT: O 3, M 5, P 7 días laborables; De = 5.0. Técnica: Dato del programa.
- 427: Fase: Ejecución. Responsable: CEPA. PERT: O 3, M 5, P 7 días laborables; De = 5.0. Técnica: Dato del programa.
- 428: Fase: Planificación. Responsable: Especialista de adquisiciones. PERT: O 24, M 30, P 36 días laborables; De = 30.0. Técnica: Juicio de expertos.
- 429: Fase: Planificación. Responsable: BID. PERT: O 3, M 5, P 7 días laborables; De = 5.0. Técnica: Dato del programa.
- 430: Fase: Ejecución. Responsable: Especialista de adquisiciones. PERT: O 20, M 25, P 30 días laborables; De = 25.0. Técnica: Juicio de expertos.
- 431: Fase: Ejecución. Responsable: BID. PERT: O 3, M 5, P 7 días laborables; De = 5.0. Técnica: Dato del programa.
- 432: Fase: Ejecución. Responsable: CEPA. PERT: O 6, M 8, P 10 días laborables; De = 8.0. Técnica: Juicio de expertos.
- 433: Fase: Planificación. Responsable: Especialista de adquisiciones. PERT: O 24, M 30, P 36 días laborables; De = 30.0. Técnica: Juicio de expertos.
- 434: Fase: Planificación. Responsable: BID. PERT: O 3, M 5, P 7 días laborables; De = 5.0. Técnica: Dato del programa.
- 435: Fase: Ejecución. Responsable: Especialista de adquisiciones. PERT: O 20, M 25, P 30 días laborables; De = 25.0. Técnica: Juicio de expertos.
- 436: Fase: Ejecución. Responsable: BID. PERT: O 3, M 5, P 7 días laborables; De = 5.0. Técnica: Dato del programa.
- 437: Fase: Ejecución. Responsable: CEPA. PERT: O 6, M 8, P 10 días laborables; De = 8.0. Técnica: Juicio de expertos.
- 438: Fase: Planificación. Responsable: Especialista de adquisiciones. PERT: O 24, M 30, P 36 días laborables; De = 30.0. Técnica: Juicio de expertos.
- 439: Fase: Planificación. Responsable: BID. PERT: O 3, M 5, P 7 días laborables; De = 5.0. Técnica: Dato del programa.
- 440: Fase: Ejecución. Responsable: Especialista de adquisiciones. PERT: O 20, M 25, P 30 días laborables; De = 25.0. Técnica: Juicio de expertos.
- 441: Fase: Ejecución. Responsable: BID. PERT: O 3, M 5, P 7 días laborables; De = 5.0. Técnica: Dato del programa.
- 442: Fase: Ejecución. Responsable: CEPA. PERT: O 6, M 8, P 10 días laborables; De = 8.0. Técnica: Juicio de expertos.
- 443: Fase: Planificación. Responsable: Especialista de adquisiciones. PERT: O 12, M 15, P 18 días laborables; De = 15.0. Técnica: Dato del programa.
- 444: Fase: Ejecución. Responsable: Especialista de adquisiciones. PERT: O 12, M 15, P 18 días laborables; De = 15.0. Técnica: Calibrada.
- 445: Fase: Ejecución. Responsable: Especialista de adquisiciones. PERT: O 14, M 17, P 20 días laborables; De = 17.0. Técnica: Calibrada.
- 446: Fase: Ejecución. Responsable: Especialista de adquisiciones. PERT: O 22, M 28, P 34 días laborables; De = 28.0. Técnica: Calibrada.
- 447: Fase: Ejecución. Responsable: CEPA. PERT: O 8, M 10, P 12 días laborables; De = 10.0. Técnica: Calibrada.
- 448: Fase: Planificación. Responsable: Especialista de adquisiciones. PERT: O 12, M 15, P 18 días laborables; De = 15.0. Técnica: Dato del programa.
- 449: Fase: Ejecución. Responsable: Especialista de adquisiciones. PERT: O 12, M 15, P 18 días laborables; De = 15.0. Técnica: Calibrada.
- 450: Fase: Ejecución. Responsable: Especialista de adquisiciones. PERT: O 14, M 17, P 20 días laborables; De = 17.0. Técnica: Calibrada.
- 451: Fase: Ejecución. Responsable: Especialista de adquisiciones. PERT: O 23, M 29, P 35 días laborables; De = 29.0. Técnica: Calibrada.
- 452: Fase: Ejecución. Responsable: CEPA. PERT: O 8, M 10, P 12 días laborables; De = 10.0. Técnica: Calibrada.
- 453: Fase: Planificación. Responsable: BID. PERT: O 3, M 5, P 7 días laborables; De = 5.0. Técnica: Dato del programa.
- 454: Fase: Ejecución. Responsable: BID. PERT: O 5, M 7, P 9 días laborables; De = 7.0. Técnica: Juicio de expertos.
- 455: Fase: Planificación. Responsable: BID. PERT: O 3, M 5, P 7 días laborables; De = 5.0. Técnica: Dato del programa.
- 456: Fase: Ejecución. Responsable: BID. PERT: O 5, M 7, P 9 días laborables; De = 7.0. Técnica: Juicio de expertos.
- 457: Fase: Planificación. Responsable: Especialista de adquisiciones. PERT: O 8, M 10, P 12 días laborables; De = 10.0. Técnica: Dato del programa.
- 458: Fase: Planificación. Responsable: BID. PERT: O 3, M 5, P 7 días laborables; De = 5.0. Técnica: Dato del programa.
- 459: Fase: Ejecución. Responsable: Especialista de adquisiciones. PERT: O 16, M 20, P 24 días laborables; De = 20.0. Técnica: Dato del programa.
- 460: Fase: Ejecución. Responsable: BID. PERT: O 3, M 5, P 7 días laborables; De = 5.0. Técnica: Dato del programa.
- 461: Fase: Ejecución. Responsable: CEPA. PERT: O 3, M 5, P 7 días laborables; De = 5.0. Técnica: Dato del programa.
- 462: Fase: Planificación. Responsable: Especialista de adquisiciones. PERT: O 8, M 10, P 12 días laborables; De = 10.0. Técnica: Dato del programa.
- 463: Fase: Planificación. Responsable: BID. PERT: O 3, M 5, P 7 días laborables; De = 5.0. Técnica: Dato del programa.
- 464: Fase: Ejecución. Responsable: Especialista de adquisiciones. PERT: O 16, M 20, P 24 días laborables; De = 20.0. Técnica: Dato del programa.
- 465: Fase: Ejecución. Responsable: BID. PERT: O 3, M 5, P 7 días laborables; De = 5.0. Técnica: Dato del programa.
- 466: Fase: Ejecución. Responsable: CEPA. PERT: O 3, M 5, P 7 días laborables; De = 5.0. Técnica: Dato del programa.
- 467: Fase: Planificación. Responsable: Especialista de adquisiciones. PERT: O 8, M 10, P 12 días laborables; De = 10.0. Técnica: Dato del programa.
- 468: Fase: Planificación. Responsable: BID. PERT: O 3, M 5, P 7 días laborables; De = 5.0. Técnica: Dato del programa.
- 469: Fase: Ejecución. Responsable: Especialista de adquisiciones. PERT: O 16, M 20, P 24 días laborables; De = 20.0. Técnica: Dato del programa.
- 470: Fase: Ejecución. Responsable: BID. PERT: O 3, M 5, P 7 días laborables; De = 5.0. Técnica: Dato del programa.
- 471: Fase: Ejecución. Responsable: CEPA. PERT: O 3, M 5, P 7 días laborables; De = 5.0. Técnica: Dato del programa.
- 472: Fase: Planificación. Responsable: Especialista de adquisiciones. PERT: O 8, M 10, P 12 días laborables; De = 10.0. Técnica: Dato del programa.
- 473: Fase: Planificación. Responsable: BID. PERT: O 3, M 5, P 7 días laborables; De = 5.0. Técnica: Dato del programa.
- 474: Fase: Ejecución. Responsable: Especialista de adquisiciones. PERT: O 16, M 20, P 24 días laborables; De = 20.0. Técnica: Dato del programa.
- 475: Fase: Ejecución. Responsable: BID. PERT: O 3, M 5, P 7 días laborables; De = 5.0. Técnica: Dato del programa.
- 476: Fase: Ejecución. Responsable: CEPA. PERT: O 3, M 5, P 7 días laborables; De = 5.0. Técnica: Dato del programa.
- 477: Fase: Planificación. Responsable: Especialista de adquisiciones. PERT: O 8, M 10, P 12 días laborables; De = 10.0. Técnica: Dato del programa.
- 478: Fase: Planificación. Responsable: BID. PERT: O 3, M 5, P 7 días laborables; De = 5.0. Técnica: Dato del programa.
- 479: Fase: Ejecución. Responsable: Especialista de adquisiciones. PERT: O 16, M 20, P 24 días laborables; De = 20.0. Técnica: Dato del programa.
- 480: Fase: Ejecución. Responsable: BID. PERT: O 3, M 5, P 7 días laborables; De = 5.0. Técnica: Dato del programa.
- 481: Fase: Ejecución. Responsable: CEPA. PERT: O 3, M 5, P 7 días laborables; De = 5.0. Técnica: Dato del programa.

| ID | WBS | Task | Duration | Start | Finish | Predecessors | Constraint | OPS_TaskDurationUnit |
| --- | --- | --- | --- | --- | --- | --- | --- | --- |
| 482 | 3.4.4-70 | Preparar los términos de referencia y la convocatoria de los consultores individuales del lote 6 de la plantilla ampliada de la UEP (Administrador 4 de Proyectos, agosto de 2027) | 10d | 2027-08-30 | 2027-09-10 | 239, 274 | start no earlier than 2027-08-30 | days |
| 483 | 3.4.4-71 | Obtener la no objeción del BID a los términos de referencia del lote 6 de la plantilla ampliada de la UEP (Administrador 4 de Proyectos, agosto de 2027) | 5d | 2027-09-13 | 2027-09-17 | 482 |  | days |
| 484 | 3.4.4-72 | Recibir los currículos, comparar las calificaciones y seleccionar a los consultores del lote 6 de la plantilla ampliada de la UEP (Administrador 4 de Proyectos, agosto de 2027) | 20d | 2027-09-20 | 2027-10-15 | 483 |  | days |
| 485 | 3.4.4-73 | Obtener la no objeción del BID a la selección de los consultores del lote 6 de la plantilla ampliada de la UEP (Administrador 4 de Proyectos, agosto de 2027) | 5d | 2027-10-18 | 2027-10-22 | 484 |  | days |
| 486 | 3.4.4-74 | Firmar los contratos de los consultores individuales del lote 6 de la plantilla ampliada de la UEP (Administrador 4 de Proyectos, agosto de 2027) | 5d | 2027-10-25 | 2027-10-29 | 485 |  | days |
| 487 | 3.5 | **Control financiero, evaluación y cierre** | 966d | 2026-07-20 | 2030-04-01 |  |  | days |
| 488 | 3.5.1 | **Desembolsos justificados e informes financieros presentados** | 820d | 2026-07-20 | 2029-09-07 |  |  | days |
| 489 | 3.5.1-01 | Solicitar el primer desembolso por Anticipo de Fondos con las condiciones previas cumplidas | 10d | 2026-07-20 | 2026-07-31 | 242, 247, 251, 255, 282 |  | days |
| 490 | 3.5.1-02 | Elaborar y presentar al BID el informe semestral de progreso del semestre S2 de 2026 con la solicitud de desembolso | 19d | 2027-01-01 | 2027-01-27 | 489 | start no earlier than 2027-01-01 | days |
| 491 | 3.5.1-03 | Elaborar y presentar al BID el informe semestral de progreso del semestre S1 de 2027 con la solicitud de desembolso | 19d | 2027-07-01 | 2027-07-27 | 490 | start no earlier than 2027-07-01 | days |
| 492 | 3.5.1-04 | Elaborar y presentar al BID el informe semestral de progreso del semestre S2 de 2027 con la solicitud de desembolso | 19d | 2028-01-03 | 2028-01-27 | 491 | start no earlier than 2028-01-03 | days |
| 493 | 3.5.1-05 | Elaborar y presentar al BID el informe semestral de progreso del semestre S1 de 2028 con la solicitud de desembolso | 19d | 2028-07-03 | 2028-07-27 | 492 | start no earlier than 2028-07-03 | days |
| 494 | 3.5.1-06 | Elaborar y presentar al BID el informe semestral de progreso del semestre S2 de 2028 con la solicitud de desembolso | 19d | 2029-01-01 | 2029-01-25 | 493 | start no earlier than 2029-01-01 | days |
| 495 | 3.5.1-07 | Elaborar y presentar al BID el informe semestral de progreso del semestre S1 de 2029 con la solicitud de desembolso | 19d | 2029-07-02 | 2029-07-26 | 494 | start no earlier than 2029-07-02 | days |
| 496 | 3.5.1-08 | Justificar los gastos y tramitar las solicitudes de desembolso del año 2027 | 280d | 2027-01-01 | 2028-01-27 | 489 | start no earlier than 2027-01-01 | days |
| 497 | 3.5.1-09 | Justificar los gastos y tramitar las solicitudes de desembolso del año 2028 | 279d | 2028-01-03 | 2029-01-25 | 489 | start no earlier than 2028-01-03 | days |
| 498 | 3.5.1-10 | Justificar los gastos y tramitar las solicitudes de desembolso del año 2029 | 180d | 2029-01-01 | 2029-09-07 | 489 | start no earlier than 2029-01-01 | days |
| 499 | 3.5.2 | **Auditorías externas emitidas** | 576d | 2027-01-01 | 2029-03-16 |  |  | days |
| 500 | 3.5.2-01 | Preparar los estados financieros del programa del ejercicio 2026 | 20d | 2027-01-01 | 2027-01-28 | 255 | start no earlier than 2027-01-01 | days |
| 501 | 3.5.2-02 | Auditar los estados financieros del programa del ejercicio 2026 | 30d | 2027-05-06 | 2027-06-16 | 427, 500 |  | days |
| 502 | 3.5.2-03 | Presentar al BID los estados financieros auditados del ejercicio 2026 | 5d | 2027-06-17 | 2027-06-23 | 501 |  | days |
| 503 | 3.5.2-04 | Preparar los estados financieros del programa del ejercicio 2027 | 20d | 2028-01-03 | 2028-01-28 | 502 | start no earlier than 2028-01-03 | days |
| 504 | 3.5.2-05 | Auditar los estados financieros del programa del ejercicio 2027 | 30d | 2028-01-31 | 2028-03-10 | 432, 503 |  | days |
| 505 | 3.5.2-06 | Presentar al BID los estados financieros auditados del ejercicio 2027 | 5d | 2028-03-13 | 2028-03-17 | 504 |  | days |
| 506 | 3.5.2-07 | Preparar los estados financieros del programa del ejercicio 2028 | 20d | 2029-01-01 | 2029-01-26 | 505 | start no earlier than 2029-01-01 | days |
| 507 | 3.5.2-08 | Auditar los estados financieros del programa del ejercicio 2028 | 30d | 2029-01-29 | 2029-03-09 | 437, 506 |  | days |
| 508 | 3.5.2-09 | Presentar al BID los estados financieros auditados del ejercicio 2028 | 5d | 2029-03-12 | 2029-03-16 | 507 |  | days |

Notes:
- 482: Fase: Planificación. Responsable: Especialista de adquisiciones. PERT: O 8, M 10, P 12 días laborables; De = 10.0. Técnica: Dato del programa.
- 483: Fase: Planificación. Responsable: BID. PERT: O 3, M 5, P 7 días laborables; De = 5.0. Técnica: Dato del programa.
- 484: Fase: Ejecución. Responsable: Especialista de adquisiciones. PERT: O 16, M 20, P 24 días laborables; De = 20.0. Técnica: Dato del programa.
- 485: Fase: Ejecución. Responsable: BID. PERT: O 3, M 5, P 7 días laborables; De = 5.0. Técnica: Dato del programa.
- 486: Fase: Ejecución. Responsable: CEPA. PERT: O 3, M 5, P 7 días laborables; De = 5.0. Técnica: Dato del programa.
- 488: Ejecutado por el personal de la UEP, sin costo adicional en la línea base.
- 489: Fase: Ejecución. Responsable: Especialista financiero. PERT: O 8, M 10, P 12 días laborables; De = 10.0. Técnica: Juicio de expertos.
- 490: Fase: Monitoreo y control. Responsable: Especialista de planificación y monitoreo. PERT: O 15, M 20, P 21 días laborables; De = 19.3. Técnica: Dato del programa.
- 491: Fase: Monitoreo y control. Responsable: Especialista de planificación y monitoreo. PERT: O 15, M 20, P 21 días laborables; De = 19.3. Técnica: Dato del programa.
- 492: Fase: Monitoreo y control. Responsable: Especialista de planificación y monitoreo. PERT: O 15, M 20, P 21 días laborables; De = 19.3. Técnica: Dato del programa.
- 493: Fase: Monitoreo y control. Responsable: Especialista de planificación y monitoreo. PERT: O 15, M 20, P 21 días laborables; De = 19.3. Técnica: Dato del programa.
- 494: Fase: Monitoreo y control. Responsable: Especialista de planificación y monitoreo. PERT: O 15, M 20, P 21 días laborables; De = 19.3. Técnica: Dato del programa.
- 495: Fase: Monitoreo y control. Responsable: Especialista de planificación y monitoreo. PERT: O 15, M 20, P 21 días laborables; De = 19.3. Técnica: Dato del programa.
- 496: Fase: Monitoreo y control. Responsable: Especialista financiero. Nivel de esfuerzo: su duración se fijó para terminar con 3.5.1-04.
- 497: Fase: Monitoreo y control. Responsable: Especialista financiero. Nivel de esfuerzo: su duración se fijó para terminar con 3.5.1-06.
- 498: Fase: Monitoreo y control. Responsable: Especialista financiero. Nivel de esfuerzo: su duración se fijó para terminar con 3.5.4-01.
- 499: Costo en la línea base: US$ 0.178 millones, de los cuales US$ 0.013 millones son contingencia.
- 500: Fase: Monitoreo y control. Responsable: Especialista financiero. PERT: O 15, M 20, P 25 días laborables; De = 20.0. Técnica: Juicio de expertos.
- 501: Fase: Monitoreo y control. Responsable: Auditor externo. PERT: O 20, M 30, P 40 días laborables; De = 30.0. Técnica: Juicio de expertos.
- 502: Fase: Monitoreo y control. Responsable: Especialista financiero. PERT: O 3, M 5, P 7 días laborables; De = 5.0. Técnica: Dato del programa.
- 503: Fase: Monitoreo y control. Responsable: Especialista financiero. PERT: O 15, M 20, P 25 días laborables; De = 20.0. Técnica: Juicio de expertos.
- 504: Fase: Monitoreo y control. Responsable: Auditor externo. PERT: O 20, M 30, P 40 días laborables; De = 30.0. Técnica: Juicio de expertos.
- 505: Fase: Monitoreo y control. Responsable: Especialista financiero. PERT: O 3, M 5, P 7 días laborables; De = 5.0. Técnica: Dato del programa.
- 506: Fase: Monitoreo y control. Responsable: Especialista financiero. PERT: O 15, M 20, P 25 días laborables; De = 20.0. Técnica: Juicio de expertos.
- 507: Fase: Monitoreo y control. Responsable: Auditor externo. PERT: O 20, M 30, P 40 días laborables; De = 30.0. Técnica: Juicio de expertos.
- 508: Fase: Monitoreo y control. Responsable: Especialista financiero. PERT: O 3, M 5, P 7 días laborables; De = 5.0. Técnica: Dato del programa.

| ID | WBS | Task | Type | Duration | Start | Finish | Predecessors | OPS_TaskDurationUnit | OPS_MilestoneKind |
| --- | --- | --- | --- | --- | --- | --- | --- | --- | --- |
| 509 | 3.5.3 | **Evaluaciones de medio término y de cierre realizadas** |  | 635d | 2027-06-11 | 2029-11-15 |  | days |  |
| 510 | 3.5.3-01 | Proyectar con los contratos de obra firmados la fecha del hito de medio término (50% del tiempo de ejecución planificado o 50% de los recursos desembolsados, lo que ocurra primero) |  | 5d | 2027-06-11 | 2027-06-17 | 317, 342 | days |  |
| 511 | 3.5.3-02 | Ejecutar la evaluación de medio término: avance físico y financiero y medición temprana de resultados |  | 85d | 2027-11-02 | 2028-02-28 | 447 | days |  |
| 512 | 3.5.3-03 | Revisar el informe de evaluación de medio término y presentarlo al BID |  | 10d | 2028-02-29 | 2028-03-13 | 511 | days |  |
| 513 | 3.5.3-04 | Ejecutar la evaluación final de efectividad sin atribución empírica |  | 126d | 2029-05-10 | 2029-11-01 | 452, 512 | days |  |
| 514 | 3.5.3-05 | Revisar el informe de evaluación final y presentarlo al BID |  | 10d | 2029-11-02 | 2029-11-15 | 513, 149, 150, 151, 152 | days |  |
| 515 | 3.5.4 | **Informe de terminación y cierre administrativo del programa** |  | 166d | 2029-08-13 | 2030-04-01 |  | days |  |
| 516 | 3.5.4-01 | Liquidar los contratos de obra, supervisión y consultoría |  | 20d | 2029-08-13 | 2029-09-07 | 160, 168, 173, 181, 186, 193, 200, 208, 213, 220, 227, 234, 149, 150, 151, 152 | days |  |
| 517 | 3.5.4-02 | Justificar los anticipos pendientes y tramitar el último desembolso |  | 20d | 2029-11-16 | 2029-12-13 | 516, 514 | days |  |
| 518 | 3.5.4-03 | Auditar y presentar al BID los estados financieros finales del programa |  | 42d | 2029-12-14 | 2030-02-11 | 442, 517, 508 | days |  |
| 519 | 3.5.4-04 | Preparar y entregar al BID los insumos de la UEP para el informe de terminación del programa, con las lecciones aprendidas |  | 25d | 2030-02-12 | 2030-03-18 | 297, 514, 518, 495 | days |  |
| 520 | 3.5.4-05 | Devolver los saldos no justificados al BID y cerrar la cuenta especial |  | 15d | 2030-02-12 | 2030-03-04 | 518 | days |  |
| 521 | 3.5.4-06 | Cerrar el expediente administrativo del programa y archivar los documentos |  | 10d | 2030-03-19 | 2030-04-01 | 519, 520, 125, 127, 128, 129, 132, 134, 135, 136, 142, 143, 269, 275, 293, 422, 496, 497, 498, 461, 466, 471, 476, 481, 486 | days |  |
| 522 | Hitos | **Hitos del programa** |  | 1012d | 2026-05-15 | 2030-04-01 |  | days |  |
| 523 | H.1 | Unidad Ejecutora conformada | milestone | 0d | 2026-05-15 | 2026-05-15 | 242 | days | FINISH |
| 524 | H.2 | Condiciones previas al primer desembolso cumplidas (ROP, convenio, cuenta) | milestone | 0d | 2026-07-10 | 2026-07-10 | 247, 251, 255 | days | FINISH |
| 525 | H.3 | Contratos de obra y de supervisión firmados | milestone | 0d | 2027-07-28 | 2027-07-28 | 305, 311, 317, 323, 330, 336, 342, 348 | days | FINISH |
| 526 | H.4 | Protocolo de seguridad operacional aprobado por la AAC | milestone | 0d | 2027-03-11 | 2027-03-11 | 289 | days | FINISH |
| 527 | H.5 | SSEI reubicado y en funcionamiento | milestone | 0d | 2028-02-24 | 2028-02-24 | 119 | days | FINISH |
| 528 | H.6 | Plataforma de posiciones remotas concluida | milestone | 0d | 2028-08-31 | 2028-08-31 | 74 | days | FINISH |
| 529 | H.7 | Terminal ampliada concluida y equipada | milestone | 0d | 2029-03-16 | 2029-03-16 | 53, 58 | days | FINISH |
| 530 | H.8 | Estacionamiento con sistema solar concluido | milestone | 0d | 2028-05-31 | 2028-05-31 | 102, 107 | days | FINISH |
| 531 | H.9 | Obras recibidas (planos de obra ejecutada y actas aprobados) | milestone | 0d | 2029-07-05 | 2029-07-05 | 149, 150, 151, 152 | days | FINISH |
| 532 | H.10 | Cierre administrativo del programa | milestone | 0d | 2030-04-01 | 2030-04-01 | 521 | days | FINISH |

Notes:
- 509: Costo en la línea base: US$ 0.164 millones, de los cuales US$ 0.009 millones son contingencia.
- 510: Fase: Planificación. Responsable: Especialista de planificación y monitoreo. PERT: O 3, M 5, P 7 días laborables; De = 5.0. Técnica: Juicio de expertos.
- 511: Fase: Monitoreo y control. Responsable: Firma consultora. PERT: O 65, M 86, P 100 días laborables; De = 84.8. Técnica: Dato del programa.
- 512: Fase: Monitoreo y control. Responsable: Especialista de planificación y monitoreo. PERT: O 8, M 10, P 12 días laborables; De = 10.0. Técnica: Juicio de expertos.
- 513: Fase: Cierre. Responsable: Firma consultora. PERT: O 100, M 129, P 140 días laborables; De = 126.0. Técnica: Dato del programa.
- 514: Fase: Cierre. Responsable: Especialista de planificación y monitoreo. PERT: O 8, M 10, P 12 días laborables; De = 10.0. Técnica: Juicio de expertos.
- 515: Costo en la línea base: US$ 0.059 millones, de los cuales US$ 0.004 millones son contingencia.
- 516: Fase: Cierre. Responsable: Especialista de adquisiciones. PERT: O 16, M 20, P 24 días laborables; De = 20.0. Técnica: Juicio de expertos.
- 517: Fase: Cierre. Responsable: Especialista financiero. PERT: O 16, M 20, P 24 días laborables; De = 20.0. Técnica: Juicio de expertos.
- 518: Fase: Cierre. Responsable: Auditor externo. PERT: O 30, M 40, P 60 días laborables; De = 41.7. Técnica: Juicio de expertos.
- 519: Fase: Cierre. Responsable: Coordinador del Programa. PERT: O 20, M 25, P 30 días laborables; De = 25.0. Técnica: Juicio de expertos.
- 520: Fase: Cierre. Responsable: Especialista financiero. PERT: O 12, M 15, P 18 días laborables; De = 15.0. Técnica: Juicio de expertos.
- 521: Fase: Cierre. Responsable: Técnico de apoyo administrativo. PERT: O 8, M 10, P 12 días laborables; De = 10.0. Técnica: Juicio de expertos.
