# Programa de Modernización del AIES ES-L1173

Schedule from MS Project XML, 2026-02-02 to 2030-04-01.

## Calendars

- Lunes a viernes 08:00-17:00: Mon-Fri 08:00-12:00, 13:00-17:00; Sat-Sun off.

## Schedule

| ID | WBS | Task | Duration | Start | Finish | Predecessors | OPS_TaskDurationUnit |
| --- | --- | --- | --- | --- | --- | --- | --- |
| 1 | 1 | **Obras y adecuaciones** | 835d | 2026-05-18 | 2029-07-27 |  | days |
| 2 | 1.1 | **Diseños de las obras aprobados** | 127d | 2026-05-18 | 2026-11-10 |  | days |
| 3 | 1.1.1 | **Diseños de la terminal revisados y aprobados** | 96d | 2026-05-18 | 2026-09-28 |  | days |
| 4 | 1.1.1-01 | Revisar técnicamente el expediente de diseño de la terminal (planos, especificaciones y cantidades) | 31d | 2026-05-18 | 2026-06-29 | 235 | days |
| 5 | 1.1.1-02 | Ajustar los diseños y el presupuesto de la terminal con la firma diseñadora (FIDS, CUTE, puentes de abordaje y observaciones de la revisión) | 32d | 2026-06-30 | 2026-08-12 | 4 | days |
| 6 | 1.1.1-03 | Revisar la coordinación del modelo BIM de la terminal con los planos y las especificaciones | 16d | 2026-07-22 | 2026-08-12 | 4SS+10d, 5FF | days |
| 7 | 1.1.1-04 | Aprobar el expediente de diseño de la terminal | 11d | 2026-09-04 | 2026-09-18 | 5, 6, 52, 53 | days |
| 8 | 1.1.1-05 | Emitir la no objeción del BID a las especificaciones técnicas y los planos de la licitación de la terminal | 6d | 2026-09-21 | 2026-09-28 | 7 | days |
| 9 | 1.1.2 | **Diseños de plataformas y calle Foxtrot revisados y aprobados** | 127d | 2026-05-18 | 2026-11-10 |  | days |
| 10 | 1.1.2-01 | Realizar sondeos geotécnicos en las tres posiciones remotas y verificar el diseño de pavimentos | 32d | 2026-05-18 | 2026-06-30 | 235 | days |
| 11 | 1.1.2-02 | Revisar técnicamente los diseños de plataformas, calle Foxtrot, drenaje y ayudas visuales | 31d | 2026-06-30 | 2026-08-11 | 4, 235 | days |
| 12 | 1.1.2-03 | Revisar con la AAC la geometría del lado aire y el plan de fases de las obras | 22d | 2026-08-12 | 2026-09-10 | 11 | days |
| 13 | 1.1.2-04 | Ajustar los diseños y el presupuesto de plataformas y calle Foxtrot con la firma diseñadora | 26d | 2026-09-11 | 2026-10-16 | 10, 12 | days |
| 14 | 1.1.2-05 | Aprobar los diseños de plataformas y calle Foxtrot | 11d | 2026-10-19 | 2026-11-02 | 13 | days |
| 15 | 1.1.2-06 | Emitir la no objeción del BID a las especificaciones técnicas y los planos de la licitación de plataformas y Foxtrot | 6d | 2026-11-03 | 2026-11-10 | 14 | days |
| 16 | 1.1.3 | **Diseños del estacionamiento y del sistema solar revisados y aprobados** | 71d | 2026-05-18 | 2026-08-24 |  | days |
| 17 | 1.1.3-01 | Revisar técnicamente el expediente de diseño del estacionamiento (estructura, circulaciones y accesibilidad universal) | 32d | 2026-05-18 | 2026-06-30 | 235 | days |
| 18 | 1.1.3-02 | Revisar el diseño del sistema fotovoltaico y su conexión eléctrica | 13d | 2026-06-01 | 2026-06-17 | 17SS+10d | days |
| 19 | 1.1.3-03 | Ajustar los diseños y el presupuesto del estacionamiento con la firma diseñadora | 22d | 2026-07-01 | 2026-07-30 | 17, 18 | days |
| 20 | 1.1.3-04 | Aprobar el expediente de diseño del estacionamiento | 11d | 2026-07-31 | 2026-08-14 | 19 | days |
| 21 | 1.1.3-05 | Emitir la no objeción del BID a las especificaciones técnicas y los planos de la licitación del estacionamiento | 6d | 2026-08-17 | 2026-08-24 | 20 | days |
| 22 | 1.1.4 | **Diseños del SSEI revisados y aprobados** | 70d | 2026-07-01 | 2026-10-06 |  | days |
| 23 | 1.1.4-01 | Revisar técnicamente el diseño del edificio del SSEI y de sus vías de acceso | 21d | 2026-07-01 | 2026-07-29 | 17, 235 | days |
| 24 | 1.1.4-02 | Validar con el SSEI y la AAC el emplazamiento, los tiempos de respuesta y la continuidad del servicio | 16d | 2026-07-30 | 2026-08-20 | 23 | days |
| 25 | 1.1.4-03 | Ajustar el diseño del SSEI con la firma diseñadora | 16d | 2026-08-21 | 2026-09-11 | 24 | days |
| 26 | 1.1.4-04 | Aprobar el diseño del SSEI | 11d | 2026-09-14 | 2026-09-28 | 25 | days |
| 27 | 1.1.4-05 | Emitir la no objeción del BID a las especificaciones técnicas y los planos de la licitación del SSEI | 6d | 2026-09-29 | 2026-10-06 | 26 | days |

Notes:
- 3: Ejecutado por el personal de la UEP, sin costo adicional en la línea base.
- 4: Fase: Planificación. Responsable: Especialista técnico. PERT: O 20, M 30, P 45 días laborables; De = 30.8. Técnica: Juicio de expertos.
- 5: Fase: Planificación. Responsable: Firma consultora. PERT: O 20, M 30, P 50 días laborables; De = 31.7. Técnica: Juicio de expertos.
- 6: Fase: Planificación. Responsable: Especialista técnico. PERT: O 10, M 15, P 25 días laborables; De = 15.8. Técnica: Juicio de expertos.
- 7: Fase: Planificación. Responsable: CEPA. PERT: O 5, M 10, P 20 días laborables; De = 10.8. Técnica: Juicio de expertos.
- 8: Fase: Planificación. Responsable: BID. PERT: O 3, M 5, P 10 días laborables; De = 5.5. Técnica: Dato del programa.
- 9: Ejecutado por el personal de la UEP, sin costo adicional en la línea base.
- 10: Fase: Planificación. Responsable: Firma consultora. PERT: O 20, M 30, P 50 días laborables; De = 31.7. Técnica: Juicio de expertos.
- 11: Fase: Planificación. Responsable: Especialista técnico. PERT: O 20, M 30, P 45 días laborables; De = 30.8. Técnica: Juicio de expertos.
- 12: Fase: Planificación. Responsable: AAC. PERT: O 10, M 20, P 40 días laborables; De = 21.7. Técnica: Juicio de expertos.
- 13: Fase: Planificación. Responsable: Firma consultora. PERT: O 15, M 25, P 40 días laborables; De = 25.8. Técnica: Juicio de expertos.
- 14: Fase: Planificación. Responsable: CEPA. PERT: O 5, M 10, P 20 días laborables; De = 10.8. Técnica: Juicio de expertos.
- 15: Fase: Planificación. Responsable: BID. PERT: O 3, M 5, P 10 días laborables; De = 5.5. Técnica: Dato del programa.
- 16: Ejecutado por el personal de la UEP, sin costo adicional en la línea base.
- 17: Fase: Planificación. Responsable: Especialista técnico. PERT: O 25, M 30, P 45 días laborables; De = 31.7. Técnica: Juicio de expertos.
- 18: Fase: Planificación. Responsable: Especialista técnico. PERT: O 8, M 12, P 20 días laborables; De = 12.7. Técnica: Juicio de expertos.
- 19: Fase: Planificación. Responsable: Firma consultora. PERT: O 15, M 20, P 35 días laborables; De = 21.7. Técnica: Juicio de expertos.
- 20: Fase: Planificación. Responsable: CEPA. PERT: O 5, M 10, P 20 días laborables; De = 10.8. Técnica: Juicio de expertos.
- 21: Fase: Planificación. Responsable: BID. PERT: O 3, M 5, P 10 días laborables; De = 5.5. Técnica: Dato del programa.
- 22: Ejecutado por el personal de la UEP, sin costo adicional en la línea base.
- 23: Fase: Planificación. Responsable: Especialista técnico. PERT: O 15, M 20, P 30 días laborables; De = 20.8. Técnica: Juicio de expertos.
- 24: Fase: Planificación. Responsable: AAC. PERT: O 8, M 15, P 30 días laborables; De = 16.3. Técnica: Juicio de expertos.
- 25: Fase: Planificación. Responsable: Firma consultora. PERT: O 10, M 15, P 25 días laborables; De = 15.8. Técnica: Juicio de expertos.
- 26: Fase: Planificación. Responsable: CEPA. PERT: O 5, M 10, P 20 días laborables; De = 10.8. Técnica: Juicio de expertos.
- 27: Fase: Planificación. Responsable: BID. PERT: O 3, M 5, P 10 días laborables; De = 5.5. Técnica: Dato del programa.

| ID | WBS | Task | Duration | Start | Finish | Predecessors | OPS_TaskDurationUnit |
| --- | --- | --- | --- | --- | --- | --- | --- |
| 28 | 1.2 | **Terminal de pasajeros ampliada** | 677d | 2026-08-13 | 2029-03-16 |  | days |
| 29 | 1.2.1 | **Estructura y envolvente de la terminal construidas** | 278d | 2027-05-27 | 2028-06-19 |  | days |
| 30 | 1.2.1-01 | Movilizar al contratista e instalar cerramientos, accesos y obras provisionales con la terminal en operación | 31d | 2027-05-27 | 2027-07-08 | 8, 117SS+5d, 132, 280, 302FS+10d, 327, 275 | days |
| 31 | 1.2.1-02 | Ejecutar la demolición, el movimiento de tierra y la cimentación de la terminal | 78d | 2027-07-09 | 2027-10-26 | 30 | days |
| 32 | 1.2.1-03 | Construir la estructura de concreto de los niveles 1 a 3 de la terminal | 133d | 2027-09-03 | 2028-03-07 | 31SS+40d | days |
| 33 | 1.2.1-04 | Montar la estructura metálica y la cubierta de la terminal | 77d | 2028-01-14 | 2028-05-01 | 32SS+95d | days |
| 34 | 1.2.1-05 | Instalar las fachadas de vidrio y los cerramientos exteriores de la terminal | 82d | 2028-02-25 | 2028-06-19 | 33SS+30d | days |
| 35 | 1.2.2 | **Salas de espera, circulación y áreas de apoyo terminadas** | 162d | 2028-03-10 | 2028-10-23 |  | days |
| 36 | 1.2.2-01 | Construir las divisiones, la mampostería liviana y los cielos de los tres niveles | 96d | 2028-03-10 | 2028-07-21 | 33SS+40d | days |
| 37 | 1.2.2-02 | Aplicar los acabados de pisos y paredes de las seis salas de espera, los pasillos, los locales y el salón VIP | 107d | 2028-05-19 | 2028-10-16 | 34SS+30d, 36SS+50d | days |
| 38 | 1.2.2-03 | Integrar la ampliación con la terminal de la Etapa 1 y habilitar las circulaciones de pasajeros | 46d | 2028-08-21 | 2028-10-23 | 37FF+5d | days |
| 39 | 1.2.3 | **Instalaciones eléctricas, hidráulicas, climatización y contra incendio recibidas** | 192d | 2028-02-25 | 2028-11-20 |  | days |
| 40 | 1.2.3-01 | Instalar las redes eléctricas, de agua, de drenaje y los ductos de climatización por nivel | 116d | 2028-02-25 | 2028-08-04 | 32SS+60d, 36FF+10d | days |
| 41 | 1.2.3-02 | Instalar la subestación, los tableros, la planta de emergencia y los equipos de climatización | 78d | 2028-05-02 | 2028-08-17 | 33, 40SS+40d | days |
| 42 | 1.2.3-03 | Instalar la detección y supresión de incendios, la voz y datos y el control de acceso | 72d | 2028-05-11 | 2028-08-18 | 36FF+20d, 40SS+50d | days |
| 43 | 1.2.3-04 | Realizar las pruebas, el balanceo y la puesta en marcha de las instalaciones de la terminal | 52d | 2028-09-08 | 2028-11-20 | 37SS+80d, 41, 42 | days |
| 44 | 1.2.4 | **Puentes de abordaje, mobiliario y equipos instalados** | 411d | 2027-08-20 | 2029-03-16 |  | days |
| 45 | 1.2.4-01 | Elaborar y aprobar los planos de taller de los seis puentes de abordaje | 42d | 2027-08-20 | 2027-10-18 | 30FS+30d | days |
| 46 | 1.2.4-02 | Fabricar y entregar en sitio los seis puentes de abordaje | 132d | 2027-10-19 | 2028-04-19 | 45 | days |
| 47 | 1.2.4-03 | Instalar y conectar los seis puentes de abordaje a la terminal y a la plataforma | 52d | 2028-10-24 | 2029-01-03 | 34, 46, 62 | days |
| 48 | 1.2.4-04 | Instalar el mobiliario, los escáneres de seguridad y los sistemas de información de vuelo | 37d | 2028-09-29 | 2028-11-20 | 37FF+25d | days |
| 49 | 1.2.4-05 | Probar los equipos, capacitar al personal de CEPA y entregar los manuales | 31d | 2029-01-04 | 2029-02-15 | 43, 47, 48 | days |
| 50 | 1.2.4-06 | Realizar las pruebas integradas de operación de la terminal con las aerolíneas y las autoridades | 21d | 2029-02-16 | 2029-03-16 | 38, 49, 54, 55, 63 | days |
| 51 | 1.2.5 | **Accesibilidad universal, movilidad del cuidado y criterios de sostenibilidad incorporados** | 598d | 2026-08-13 | 2028-11-27 |  | days |
| 52 | 1.2.5-01 | Verificar en los planos aprobados los recorridos de accesibilidad universal y de movilidad del cuidado | 16d | 2026-08-13 | 2026-09-03 | 5 | days |
| 53 | 1.2.5-02 | Verificar en el diseño aprobado las metas EDGE Advanced de energía, agua y carbono incorporado | 16d | 2026-08-13 | 2026-09-03 | 5 | days |
| 54 | 1.2.5-03 | Verificar en obra la ejecución de los recorridos accesibles y de los espacios de movilidad del cuidado | 21d | 2028-10-02 | 2028-10-30 | 36SS+30d, 37FF+10d | days |
| 55 | 1.2.5-04 | Verificar en obra las medidas de eficiencia y reunir las evidencias para la auditoría EDGE | 19d | 2028-11-01 | 2028-11-27 | 41, 43FF+5d | days |

Notes:
- 29: Costo en la línea base: US$ 28.034 millones, de los cuales US$ 1.959 millones son contingencia.
- 30: Fase: Ejecución. Responsable: Contratista de obra. PERT: O 20, M 30, P 45 días laborables; De = 30.8. Técnica: Juicio de expertos.
- 31: Fase: Ejecución. Responsable: Contratista de obra. PERT: O 55, M 75, P 110 días laborables; De = 77.5. Técnica: Paramétrica.
- 32: Fase: Ejecución. Responsable: Contratista de obra. PERT: O 105, M 130, P 170 días laborables; De = 132.5. Técnica: Paramétrica.
- 33: Fase: Ejecución. Responsable: Contratista de obra. PERT: O 55, M 75, P 105 días laborables; De = 76.7. Técnica: Paramétrica.
- 34: Fase: Ejecución. Responsable: Contratista de obra. PERT: O 60, M 80, P 110 días laborables; De = 81.7. Técnica: Paramétrica.
- 35: Costo en la línea base: US$ 8.247 millones, de los cuales US$ 0.458 millones son contingencia.
- 36: Fase: Ejecución. Responsable: Contratista de obra. PERT: O 70, M 95, P 125 días laborables; De = 95.8. Técnica: Paramétrica.
- 37: Fase: Ejecución. Responsable: Contratista de obra. PERT: O 80, M 105, P 140 días laborables; De = 106.7. Técnica: Paramétrica.
- 38: Fase: Ejecución. Responsable: Contratista de obra. PERT: O 25, M 45, P 70 días laborables; De = 45.8. Técnica: Juicio de expertos.
- 39: Costo en la línea base: US$ 19.109 millones, de los cuales US$ 1.060 millones son contingencia.
- 40: Fase: Ejecución. Responsable: Contratista de obra. PERT: O 85, M 115, P 150 días laborables; De = 115.8. Técnica: Paramétrica.
- 41: Fase: Ejecución. Responsable: Contratista de obra. PERT: O 55, M 75, P 110 días laborables; De = 77.5. Técnica: Juicio de expertos.
- 42: Fase: Ejecución. Responsable: Contratista de obra. PERT: O 50, M 70, P 100 días laborables; De = 71.7. Técnica: Juicio de expertos.
- 43: Fase: Ejecución. Responsable: Contratista de obra. PERT: O 30, M 50, P 80 días laborables; De = 51.7. Técnica: Juicio de expertos.
- 44: Costo en la línea base: US$ 20.143 millones, de los cuales US$ 1.623 millones son contingencia.
- 45: Fase: Ejecución. Responsable: Contratista de obra. PERT: O 25, M 40, P 65 días laborables; De = 41.7. Técnica: Juicio de expertos.
- 46: Fase: Ejecución. Responsable: Contratista de obra. PERT: O 100, M 130, P 170 días laborables; De = 131.7. Técnica: Análoga.
- 47: Fase: Ejecución. Responsable: Contratista de obra. PERT: O 35, M 50, P 75 días laborables; De = 51.7. Técnica: Análoga.
- 48: Fase: Ejecución. Responsable: Contratista de obra. PERT: O 25, M 35, P 55 días laborables; De = 36.7. Técnica: Juicio de expertos.
- 49: Fase: Ejecución. Responsable: Contratista de obra. PERT: O 20, M 30, P 45 días laborables; De = 30.8. Técnica: Juicio de expertos.
- 50: Fase: Ejecución. Responsable: CEPA. PERT: O 10, M 20, P 35 días laborables; De = 20.8. Técnica: Juicio de expertos.
- 51: Costo en la línea base: US$ 0.253 millones, de los cuales US$ 0.014 millones son contingencia.
- 52: Fase: Planificación. Responsable: Especialista socioambiental. PERT: O 10, M 15, P 25 días laborables; De = 15.8. Técnica: Juicio de expertos.
- 53: Fase: Planificación. Responsable: Especialista socioambiental. PERT: O 10, M 15, P 25 días laborables; De = 15.8. Técnica: Juicio de expertos.
- 54: Fase: Ejecución. Responsable: Especialista socioambiental. PERT: O 15, M 20, P 30 días laborables; De = 20.8. Técnica: Juicio de expertos.
- 55: Fase: Ejecución. Responsable: Especialista socioambiental. PERT: O 12, M 18, P 28 días laborables; De = 18.7. Técnica: Juicio de expertos.

| ID | WBS | Task | Duration | Start | Finish | Predecessors | OPS_TaskDurationUnit |
| --- | --- | --- | --- | --- | --- | --- | --- |
| 56 | 1.3 | **Plataformas de contacto y remotas** | 375d | 2027-08-11 | 2029-01-16 |  | days |
| 57 | 1.3.1 | **Plataforma de posiciones de contacto construida** | 319d | 2027-08-11 | 2028-10-30 |  | days |
| 58 | 1.3.1-01 | Movilizar al contratista de plataformas y Foxtrot e instalar el cerramiento y los accesos del lado aire | 31d | 2027-08-11 | 2027-09-22 | 15, 124SS+5d, 134, 280, 314FS+10d, 339, 275 | days |
| 59 | 1.3.1-02 | Construir la terracería, el drenaje y la base de la fase 1 de la plataforma de contacto | 52d | 2027-09-23 | 2027-12-03 | 58 | days |
| 60 | 1.3.1-03 | Colar el pavimento de concreto de la fase 1 de la plataforma de contacto y sellar las juntas | 87d | 2027-12-06 | 2028-04-04 | 59 | days |
| 61 | 1.3.1-04 | Construir la terracería, el drenaje y la base de la fase 2 de la plataforma de contacto | 52d | 2028-04-12 | 2028-06-22 | 60FS+5d | days |
| 62 | 1.3.1-05 | Colar el pavimento de concreto de la fase 2 de la plataforma de contacto y sellar las juntas | 87d | 2028-06-23 | 2028-10-23 | 61 | days |
| 63 | 1.3.1-06 | Instalar los ductos y los servicios de apoyo a aeronaves de la plataforma de contacto | 26d | 2028-09-25 | 2028-10-30 | 62FF+5d | days |
| 64 | 1.3.2 | **Plataforma de posiciones remotas construida** | 135d | 2028-02-16 | 2028-08-22 |  | days |
| 65 | 1.3.2-01 | Demoler el SSEI antiguo y despejar la huella de la plataforma remota | 21d | 2028-02-16 | 2028-03-15 | 58, 114 | days |
| 66 | 1.3.2-02 | Ejecutar la terracería y la capa de suelo cemento de 30 cm de la plataforma remota | 42d | 2028-03-16 | 2028-05-12 | 65 | days |
| 67 | 1.3.2-03 | Modificar los canales existentes y construir el drenaje y las obras de paso de la plataforma remota | 31d | 2028-04-13 | 2028-05-25 | 66SS+20d | days |
| 68 | 1.3.2-04 | Colar el pavimento de concreto de 34 cm de la plataforma remota y sellar las juntas | 58d | 2028-05-26 | 2028-08-15 | 66, 67 | days |
| 69 | 1.3.2-05 | Construir el pavimento asfáltico de los márgenes y las zonas de apoyo terrestre de la plataforma remota | 26d | 2028-07-18 | 2028-08-22 | 68FF+5d | days |
| 70 | 1.3.3 | **Señalización, luces y torres de iluminación de plataforma instaladas** | 136d | 2028-07-11 | 2029-01-16 |  | days |
| 71 | 1.3.3-01 | Instalar los ductos, las torres de iluminación y las luces de la plataforma de contacto | 41d | 2028-09-25 | 2028-11-20 | 62FF+20d | days |
| 72 | 1.3.3-02 | Instalar las luces de borde y las torres de iluminación de la plataforma remota | 36d | 2028-07-11 | 2028-08-29 | 68FF+10d | days |
| 73 | 1.3.3-03 | Pintar la señalización horizontal de las plataformas nuevas | 13d | 2028-11-28 | 2028-12-14 | 62FS+25d, 69 | days |
| 74 | 1.3.3-04 | Probar las luces y la señalización de las plataformas nuevas | 11d | 2028-12-15 | 2028-12-29 | 71, 72, 73 | days |
| 75 | 1.3.3-05 | Autorizar la puesta en servicio de las plataformas nuevas | 12d | 2029-01-01 | 2029-01-16 | 74 | days |
| 76 | 1.4 | **Calle de rodaje Foxtrot** | 158d | 2028-04-05 | 2028-11-10 |  | days |
| 77 | 1.4.1 | **Pavimento y hombros de la calle Foxtrot construidos** | 104d | 2028-04-05 | 2028-08-28 |  | days |
| 78 | 1.4.1-01 | Ejecutar la terracería, la base granular y el drenaje de la calle Foxtrot | 52d | 2028-04-05 | 2028-06-15 | 58, 60 | days |
| 79 | 1.4.1-02 | Pavimentar con concreto asfáltico la calle Foxtrot y los hombros | 31d | 2028-06-16 | 2028-07-28 | 78 | days |
| 80 | 1.4.1-03 | Construir la intersección de Foxtrot con la calle de rodaje Alfa en ventanas de cierre nocturnas | 32d | 2028-07-14 | 2028-08-28 | 79SS+20d | days |

Notes:
- 57: Costo en la línea base: US$ 7.295 millones, de los cuales US$ 0.339 millones son contingencia.
- 58: Fase: Ejecución. Responsable: Contratista de obra. PERT: O 20, M 30, P 45 días laborables; De = 30.8. Técnica: Juicio de expertos.
- 59: Fase: Ejecución. Responsable: Contratista de obra. PERT: O 40, M 50, P 70 días laborables; De = 51.7. Técnica: Paramétrica.
- 60: Fase: Ejecución. Responsable: Contratista de obra. PERT: O 65, M 85, P 115 días laborables; De = 86.7. Técnica: Paramétrica.
- 61: Fase: Ejecución. Responsable: Contratista de obra. PERT: O 40, M 50, P 70 días laborables; De = 51.7. Técnica: Juicio de expertos.
- 62: Fase: Ejecución. Responsable: Contratista de obra. PERT: O 65, M 85, P 115 días laborables; De = 86.7. Técnica: Paramétrica.
- 63: Fase: Ejecución. Responsable: Contratista de obra. PERT: O 18, M 25, P 40 días laborables; De = 26.3. Técnica: Juicio de expertos.
- 64: Costo en la línea base: US$ 5.015 millones, de los cuales US$ 0.226 millones son contingencia.
- 65: Fase: Ejecución. Responsable: Contratista de obra. PERT: O 12, M 20, P 35 días laborables; De = 21.2. Técnica: Juicio de expertos.
- 66: Fase: Ejecución. Responsable: Contratista de obra. PERT: O 30, M 40, P 60 días laborables; De = 41.7. Técnica: Paramétrica.
- 67: Fase: Ejecución. Responsable: Contratista de obra. PERT: O 20, M 30, P 45 días laborables; De = 30.8. Técnica: Juicio de expertos.
- 68: Fase: Ejecución. Responsable: Contratista de obra. PERT: O 40, M 55, P 90 días laborables; De = 58.3. Técnica: Paramétrica.
- 69: Fase: Ejecución. Responsable: Contratista de obra. PERT: O 18, M 25, P 40 días laborables; De = 26.3. Técnica: Paramétrica.
- 70: Costo en la línea base: US$ 1.112 millones, de los cuales US$ 0.150 millones son contingencia.
- 71: Fase: Ejecución. Responsable: Contratista de obra. PERT: O 28, M 40, P 60 días laborables; De = 41.3. Técnica: Juicio de expertos.
- 72: Fase: Ejecución. Responsable: Contratista de obra. PERT: O 25, M 35, P 50 días laborables; De = 35.8. Técnica: Juicio de expertos.
- 73: Fase: Ejecución. Responsable: Contratista de obra. PERT: O 8, M 12, P 20 días laborables; De = 12.7. Técnica: Juicio de expertos.
- 74: Fase: Ejecución. Responsable: Contratista de obra. PERT: O 6, M 10, P 18 días laborables; De = 10.7. Técnica: Juicio de expertos.
- 75: Fase: Ejecución. Responsable: AAC. PERT: O 5, M 10, P 25 días laborables; De = 11.7. Técnica: Juicio de expertos.
- 77: Costo en la línea base: US$ 3.151 millones, de los cuales US$ 0.161 millones son contingencia.
- 78: Fase: Ejecución. Responsable: Contratista de obra. PERT: O 35, M 50, P 75 días laborables; De = 51.7. Técnica: Paramétrica.
- 79: Fase: Ejecución. Responsable: Contratista de obra. PERT: O 22, M 30, P 45 días laborables; De = 31.2. Técnica: Paramétrica.
- 80: Fase: Ejecución. Responsable: Contratista de obra. PERT: O 20, M 30, P 50 días laborables; De = 31.7. Técnica: Juicio de expertos.

| ID | WBS | Task | Duration | Start | Finish | Predecessors | OPS_TaskDurationUnit |
| --- | --- | --- | --- | --- | --- | --- | --- |
| 81 | 1.4.2 | **Señalización y balizamiento de la calle Foxtrot instalados** | 54d | 2028-08-29 | 2028-11-10 |  | days |
| 82 | 1.4.2-01 | Instalar los ductos, el cableado y las luces de borde y de los puntos de espera de la calle Foxtrot | 31d | 2028-08-29 | 2028-10-10 | 79SS+10d, 80 | days |
| 83 | 1.4.2-02 | Pintar la señalización horizontal de la calle Foxtrot | 10d | 2028-08-29 | 2028-09-11 | 80 | days |
| 84 | 1.4.2-03 | Probar el balizamiento y la iluminación de la calle Foxtrot | 11d | 2028-10-11 | 2028-10-25 | 82, 83 | days |
| 85 | 1.4.2-04 | Autorizar la puesta en servicio de la calle Foxtrot | 12d | 2028-10-26 | 2028-11-10 | 84 | days |
| 86 | 1.5 | **Estacionamiento y energía solar** | 337d | 2027-02-16 | 2028-05-31 |  | days |
| 87 | 1.5.1 | **Edificio de estacionamiento construido** | 296d | 2027-02-16 | 2028-04-04 |  | days |
| 88 | 1.5.1-01 | Movilizar al contratista e instalar los cerramientos y las obras provisionales del sitio del estacionamiento | 31d | 2027-02-16 | 2027-03-30 | 21, 119SS+5d, 131, 296FS+10d, 321, 275 | days |
| 89 | 1.5.1-02 | Construir la cimentación del edificio de estacionamiento | 72d | 2027-03-31 | 2027-07-08 | 88 | days |
| 90 | 1.5.1-03 | Construir la estructura de los niveles 1 y 2 del estacionamiento | 127d | 2027-05-12 | 2027-11-04 | 89SS+30d | days |
| 91 | 1.5.1-04 | Construir la estructura del nivel superior, la cubierta y las rampas del estacionamiento | 68d | 2027-09-08 | 2027-12-10 | 90SS+85d | days |
| 92 | 1.5.1-05 | Instalar las redes eléctricas, de iluminación, de drenaje y de protección contra incendios del estacionamiento | 111d | 2027-07-30 | 2027-12-31 | 90SS+55d, 91FF+15d | days |
| 93 | 1.5.1-06 | Construir los acabados, los ascensores, las rutas accesibles y la señalización vial del estacionamiento | 105d | 2027-11-10 | 2028-04-04 | 91SS+45d, 92FF+15d | days |
| 94 | 1.5.2 | **Sistemas de acceso, tráfico y áreas de alquiler instalados** | 77d | 2027-11-24 | 2028-03-09 |  | days |
| 95 | 1.5.2-01 | Instalar el control de acceso, las barreras, el cobro y la guía de plazas del estacionamiento | 52d | 2027-12-01 | 2028-02-10 | 93SS+15d | days |
| 96 | 1.5.2-02 | Habilitar las áreas de alquiler de vehículos y la gestión del tráfico interno | 41d | 2027-11-24 | 2028-01-19 | 93SS+10d | days |
| 97 | 1.5.2-03 | Probar los sistemas de acceso y tráfico y capacitar al personal de operación | 20d | 2028-02-11 | 2028-03-09 | 95, 96 | days |
| 98 | 1.5.3 | **Sistema de generación solar instalado** | 277d | 2027-05-11 | 2028-05-31 |  | days |
| 99 | 1.5.3-01 | Tramitar la autorización de interconexión del sistema solar con la red de distribución | 38d | 2027-05-11 | 2027-07-01 | 88SS+60d | days |
| 100 | 1.5.3-02 | Instalar las estructuras de soporte y los paneles fotovoltaicos en la cubierta del estacionamiento | 46d | 2028-02-08 | 2028-04-11 | 91SS+50d, 93FF+5d | days |
| 101 | 1.5.3-03 | Instalar los inversores, el cableado, los tableros y los medidores del sistema solar | 31d | 2028-03-14 | 2028-04-25 | 100FF+10d | days |
| 102 | 1.5.3-04 | Probar y energizar el sistema solar y entregar el estacionamiento con sus manuales | 26d | 2028-04-26 | 2028-05-31 | 93, 97, 99, 101 | days |
| 103 | 1.6 | **SSEI reubicado y en operación** | 173d | 2027-06-18 | 2028-02-15 |  | days |
| 104 | 1.6.1 | **Edificio del SSEI y vías de acceso construidos** | 137d | 2027-06-18 | 2027-12-27 |  | days |
| 105 | 1.6.1-01 | Movilizar al contratista e instalar los cerramientos y los accesos del sitio del SSEI | 20d | 2027-06-18 | 2027-07-15 | 27, 126SS+5d, 133, 280, 308FS+10d, 333, 275 | days |
| 106 | 1.6.1-02 | Construir la cimentación y la estructura del edificio del SSEI | 51d | 2027-07-16 | 2027-09-24 | 105 | days |
| 107 | 1.6.1-03 | Construir la cubierta, los cerramientos y las instalaciones del edificio del SSEI | 56d | 2027-08-27 | 2027-11-12 | 106SS+30d | days |
| 108 | 1.6.1-04 | Construir las vías de acceso y de salida a la plataforma del SSEI | 41d | 2027-08-13 | 2027-10-08 | 106SS+20d | days |
| 109 | 1.6.1-05 | Instalar los acabados, los sistemas de alarma y comunicaciones y probar el edificio del SSEI | 41d | 2027-11-01 | 2027-12-27 | 107FS-10d, 108 | days |

Notes:
- 81: Costo en la línea base: US$ 0.281 millones, de los cuales US$ 0.038 millones son contingencia.
- 82: Fase: Ejecución. Responsable: Contratista de obra. PERT: O 22, M 30, P 45 días laborables; De = 31.2. Técnica: Juicio de expertos.
- 83: Fase: Ejecución. Responsable: Contratista de obra. PERT: O 6, M 10, P 15 días laborables; De = 10.2. Técnica: Juicio de expertos.
- 84: Fase: Ejecución. Responsable: Contratista de obra. PERT: O 6, M 10, P 18 días laborables; De = 10.7. Técnica: Juicio de expertos.
- 85: Fase: Ejecución. Responsable: AAC. PERT: O 5, M 10, P 25 días laborables; De = 11.7. Técnica: Juicio de expertos.
- 87: Costo en la línea base: US$ 33.375 millones, de los cuales US$ 3.009 millones son contingencia.
- 88: Fase: Ejecución. Responsable: Contratista de obra. PERT: O 20, M 30, P 45 días laborables; De = 30.8. Técnica: Juicio de expertos.
- 89: Fase: Ejecución. Responsable: Contratista de obra. PERT: O 55, M 70, P 95 días laborables; De = 71.7. Técnica: Paramétrica.
- 90: Fase: Ejecución. Responsable: Contratista de obra. PERT: O 100, M 125, P 160 días laborables; De = 126.7. Técnica: Paramétrica.
- 91: Fase: Ejecución. Responsable: Contratista de obra. PERT: O 50, M 65, P 95 días laborables; De = 67.5. Técnica: Paramétrica.
- 92: Fase: Ejecución. Responsable: Contratista de obra. PERT: O 80, M 110, P 145 días laborables; De = 110.8. Técnica: Juicio de expertos.
- 93: Fase: Ejecución. Responsable: Contratista de obra. PERT: O 75, M 105, P 135 días laborables; De = 105.0. Técnica: Juicio de expertos.
- 94: Costo en la línea base: US$ 3.957 millones, de los cuales US$ 0.357 millones son contingencia.
- 95: Fase: Ejecución. Responsable: Contratista de obra. PERT: O 35, M 50, P 75 días laborables; De = 51.7. Técnica: Juicio de expertos.
- 96: Fase: Ejecución. Responsable: Contratista de obra. PERT: O 25, M 40, P 60 días laborables; De = 40.8. Técnica: Juicio de expertos.
- 97: Fase: Ejecución. Responsable: Contratista de obra. PERT: O 12, M 20, P 30 días laborables; De = 20.3. Técnica: Juicio de expertos.
- 98: Costo en la línea base: US$ 2.958 millones, de los cuales US$ 0.166 millones son contingencia.
- 99: Fase: Ejecución. Responsable: CEPA. PERT: O 20, M 35, P 70 días laborables; De = 38.3. Técnica: Juicio de expertos.
- 100: Fase: Ejecución. Responsable: Contratista de obra. PERT: O 30, M 45, P 65 días laborables; De = 45.8. Técnica: Paramétrica.
- 101: Fase: Ejecución. Responsable: Contratista de obra. PERT: O 20, M 30, P 45 días laborables; De = 30.8. Técnica: Juicio de expertos.
- 102: Fase: Ejecución. Responsable: Contratista de obra. PERT: O 15, M 25, P 40 días laborables; De = 25.8. Técnica: Juicio de expertos.
- 104: Costo en la línea base: US$ 5.335 millones, de los cuales US$ 0.716 millones son contingencia.
- 105: Fase: Ejecución. Responsable: Contratista de obra. PERT: O 12, M 20, P 30 días laborables; De = 20.3. Técnica: Juicio de expertos.
- 106: Fase: Ejecución. Responsable: Contratista de obra. PERT: O 35, M 50, P 70 días laborables; De = 50.8. Técnica: Juicio de expertos.
- 107: Fase: Ejecución. Responsable: Contratista de obra. PERT: O 40, M 55, P 75 días laborables; De = 55.8. Técnica: Juicio de expertos.
- 108: Fase: Ejecución. Responsable: Contratista de obra. PERT: O 28, M 40, P 55 días laborables; De = 40.5. Técnica: Juicio de expertos.
- 109: Fase: Ejecución. Responsable: Contratista de obra. PERT: O 28, M 40, P 55 días laborables; De = 40.5. Técnica: Juicio de expertos.

| ID | WBS | Task | Duration | Start | Finish | Predecessors | OPS_TaskDurationUnit |
| --- | --- | --- | --- | --- | --- | --- | --- |
| 110 | 1.6.2 | **SSEI en funcionamiento en la nueva ubicación** | 123d | 2027-08-27 | 2028-02-15 |  | days |
| 111 | 1.6.2-01 | Preparar el plan de traslado y de cobertura del servicio durante el traslado del SSEI | 21d | 2027-08-27 | 2027-09-24 | 107SS | days |
| 112 | 1.6.2-02 | Dar la conformidad a la cobertura de protección contra incendios durante el traslado del SSEI | 11d | 2027-09-27 | 2027-10-11 | 111 | days |
| 113 | 1.6.2-03 | Equipar el edificio nuevo y trasladar al personal y los vehículos del SSEI | 16d | 2028-01-10 | 2028-01-31 | 112, 141 | days |
| 114 | 1.6.2-04 | Realizar las pruebas de tiempo de respuesta y declarar en operación el SSEI nuevo | 11d | 2028-02-01 | 2028-02-15 | 113 | days |
| 115 | 1.7 | **Supervisión, PGAS de obra y recepción** | 652d | 2027-01-28 | 2029-07-27 |  | days |
| 116 | 1.7.1 | **Supervisión de la terminal y del estacionamiento ejecutada** | 647d | 2027-02-04 | 2029-07-27 |  | days |
| 117 | 1.7.1-01 | Movilizar a la firma de supervisión de la terminal | 11d | 2027-05-20 | 2027-06-03 | 327 | days |
| 118 | 1.7.1-02 | Supervisar la construcción de la terminal | 487d | 2027-06-04 | 2029-04-16 | 117 | days |
| 119 | 1.7.1-03 | Movilizar a la firma de supervisión del estacionamiento | 11d | 2027-02-04 | 2027-02-18 | 321 | days |
| 120 | 1.7.1-04 | Supervisar la construcción del estacionamiento y del sistema solar | 347d | 2027-02-19 | 2028-06-19 | 119 | days |
| 121 | 1.7.1-05 | Presentar el informe final de supervisión de la terminal | 16d | 2029-07-06 | 2029-07-27 | 142 | days |
| 122 | 1.7.1-06 | Presentar el informe final de supervisión del estacionamiento | 16d | 2028-08-17 | 2028-09-07 | 143 | days |
| 123 | 1.7.2 | **Supervisión de plataformas, calle Foxtrot y SSEI ejecutada** | 489d | 2027-06-11 | 2029-04-25 |  | days |
| 124 | 1.7.2-01 | Movilizar a la firma de supervisión de plataformas y calle Foxtrot | 11d | 2027-07-29 | 2027-08-12 | 339 | days |
| 125 | 1.7.2-02 | Supervisar la construcción de plataformas y de la calle Foxtrot | 386d | 2027-08-13 | 2029-02-02 | 124 | days |
| 126 | 1.7.2-03 | Movilizar a la firma de supervisión del SSEI | 9d | 2027-06-11 | 2027-06-23 | 333 | days |
| 127 | 1.7.2-04 | Supervisar la construcción del edificio del SSEI | 142d | 2027-06-24 | 2028-01-07 | 126 | days |
| 128 | 1.7.2-05 | Presentar el informe final de supervisión de plataformas y calle Foxtrot | 16d | 2029-04-04 | 2029-04-25 | 144 | days |
| 129 | 1.7.2-06 | Presentar el informe final de supervisión del SSEI | 13d | 2028-02-22 | 2028-03-09 | 145 | days |
| 130 | 1.7.3 | **PGAS de construcción implementado** | 594d | 2027-01-28 | 2029-05-08 |  | days |
| 131 | 1.7.3-01 | Revisar y aprobar el PGAS de construcción del contratista del estacionamiento | 13d | 2027-01-28 | 2027-02-15 | 273, 296 | days |
| 132 | 1.7.3-02 | Revisar y aprobar el PGAS de construcción del contratista de la terminal | 16d | 2027-04-26 | 2027-05-17 | 273, 302 | days |
| 133 | 1.7.3-03 | Revisar y aprobar el PGAS de construcción del contratista del SSEI | 9d | 2027-05-28 | 2027-06-09 | 273, 308 | days |
| 134 | 1.7.3-04 | Revisar y aprobar el PGAS de construcción del contratista de plataformas y Foxtrot | 13d | 2027-07-23 | 2027-08-10 | 273, 314 | days |
| 135 | 1.7.3-05 | Dar seguimiento al cumplimiento del PGAS durante las obras | 565d | 2027-02-16 | 2029-04-16 | 131 | days |
| 136 | 1.7.3-06 | Verificar el cierre de las instalaciones temporales y la restauración de los sitios de obra | 16d | 2029-04-17 | 2029-05-08 | 138, 139, 140, 141 | days |

Notes:
- 110: Costo en la línea base: US$ 0.281 millones, de los cuales US$ 0.038 millones son contingencia.
- 111: Fase: Planificación. Responsable: CEPA. PERT: O 12, M 20, P 35 días laborables; De = 21.2. Técnica: Juicio de expertos.
- 112: Fase: Ejecución. Responsable: AAC. PERT: O 5, M 10, P 20 días laborables; De = 10.8. Técnica: Juicio de expertos.
- 113: Fase: Ejecución. Responsable: CEPA. PERT: O 10, M 15, P 25 días laborables; De = 15.8. Técnica: Juicio de expertos.
- 114: Fase: Ejecución. Responsable: CEPA. PERT: O 5, M 10, P 20 días laborables; De = 10.8. Técnica: Juicio de expertos.
- 116: Costo en la línea base: US$ 3.619 millones, de los cuales US$ 0.285 millones son contingencia.
- 117: Fase: Ejecución. Responsable: Firma de supervisión. PERT: O 7, M 10, P 18 días laborables; De = 10.8. Técnica: Juicio de expertos.
- 118: Fase: Monitoreo y control. Responsable: Firma de supervisión. Nivel de esfuerzo: su duración se fijó para terminar con 1.7.4-01.
- 119: Fase: Ejecución. Responsable: Firma de supervisión. PERT: O 7, M 10, P 18 días laborables; De = 10.8. Técnica: Juicio de expertos.
- 120: Fase: Monitoreo y control. Responsable: Firma de supervisión. Nivel de esfuerzo: su duración se fijó para terminar con 1.7.4-02.
- 121: Fase: Cierre. Responsable: Firma de supervisión. PERT: O 10, M 15, P 25 días laborables; De = 15.8. Técnica: Juicio de expertos.
- 122: Fase: Cierre. Responsable: Firma de supervisión. PERT: O 10, M 15, P 25 días laborables; De = 15.8. Técnica: Juicio de expertos.
- 123: Costo en la línea base: US$ 0.701 millones, de los cuales US$ 0.055 millones son contingencia.
- 124: Fase: Ejecución. Responsable: Firma de supervisión. PERT: O 7, M 10, P 18 días laborables; De = 10.8. Técnica: Juicio de expertos.
- 125: Fase: Monitoreo y control. Responsable: Firma de supervisión. Nivel de esfuerzo: su duración se fijó para terminar con 1.7.4-03.
- 126: Fase: Ejecución. Responsable: Firma de supervisión. PERT: O 5, M 8, P 15 días laborables; De = 8.7. Técnica: Juicio de expertos.
- 127: Fase: Monitoreo y control. Responsable: Firma de supervisión. Nivel de esfuerzo: su duración se fijó para terminar con 1.7.4-04.
- 128: Fase: Cierre. Responsable: Firma de supervisión. PERT: O 10, M 15, P 25 días laborables; De = 15.8. Técnica: Juicio de expertos.
- 129: Fase: Cierre. Responsable: Firma de supervisión. PERT: O 8, M 12, P 20 días laborables; De = 12.7. Técnica: Juicio de expertos.
- 130: Costo en la línea base: US$ 1.241 millones, de los cuales US$ 0.170 millones son contingencia.
- 131: Fase: Monitoreo y control. Responsable: Especialista socioambiental. PERT: O 8, M 12, P 20 días laborables; De = 12.7. Técnica: Juicio de expertos.
- 132: Fase: Monitoreo y control. Responsable: Especialista socioambiental. PERT: O 10, M 15, P 25 días laborables; De = 15.8. Técnica: Juicio de expertos.
- 133: Fase: Monitoreo y control. Responsable: Especialista socioambiental. PERT: O 5, M 8, P 15 días laborables; De = 8.7. Técnica: Juicio de expertos.
- 134: Fase: Monitoreo y control. Responsable: Especialista socioambiental. PERT: O 8, M 12, P 20 días laborables; De = 12.7. Técnica: Juicio de expertos.
- 135: Fase: Monitoreo y control. Responsable: Especialista socioambiental. Nivel de esfuerzo: su duración se fijó para terminar con 1.7.4-01, 1.7.4-02, 1.7.4-03, 1.7.4-04.
- 136: Fase: Cierre. Responsable: Especialista socioambiental. PERT: O 10, M 15, P 25 días laborables; De = 15.8. Técnica: Juicio de expertos.

| ID | WBS | Task | Duration | Start | Finish | Predecessors | OPS_TaskDurationUnit |
| --- | --- | --- | --- | --- | --- | --- | --- |
| 137 | 1.7.4 | **Planos de obra ejecutada y actas de recepción aprobados** | 398d | 2027-12-28 | 2029-07-05 |  | days |
| 138 | 1.7.4-01 | Realizar la recepción provisional de la terminal y levantar la lista de pendientes | 21d | 2029-03-19 | 2029-04-16 | 50, 75 | days |
| 139 | 1.7.4-02 | Realizar la recepción provisional del estacionamiento y del sistema solar y levantar la lista de pendientes | 13d | 2028-06-01 | 2028-06-19 | 102 | days |
| 140 | 1.7.4-03 | Realizar la recepción provisional de las plataformas y de la calle Foxtrot y levantar la lista de pendientes | 13d | 2029-01-17 | 2029-02-02 | 75, 85 | days |
| 141 | 1.7.4-04 | Realizar la recepción provisional del edificio del SSEI y levantar la lista de pendientes | 9d | 2027-12-28 | 2028-01-07 | 109 | days |
| 142 | 1.7.4-05 | Verificar la subsanación de pendientes, recibir los planos de obra ejecutada y firmar el acta de recepción definitiva de la terminal | 58d | 2029-04-17 | 2029-07-05 | 138 | days |
| 143 | 1.7.4-06 | Verificar la subsanación de pendientes, recibir los planos de obra ejecutada y firmar el acta de recepción definitiva del estacionamiento y el sistema solar | 42d | 2028-06-20 | 2028-08-16 | 139 | days |
| 144 | 1.7.4-07 | Verificar la subsanación de pendientes, recibir los planos de obra ejecutada y firmar el acta de recepción definitiva de las plataformas y la calle Foxtrot | 42d | 2029-02-05 | 2029-04-03 | 140 | days |
| 145 | 1.7.4-08 | Verificar la subsanación de pendientes, recibir los planos de obra ejecutada y firmar el acta de recepción definitiva del edificio del SSEI | 31d | 2028-01-10 | 2028-02-21 | 141 | days |
| 146 | 2 | **Fortalecimiento institucional** | 603d | 2027-04-05 | 2029-07-25 |  | days |
| 147 | 2.1 | **Plan estratégico del sistema aeronáutico aprobado** | 120d | 2027-05-26 | 2027-11-09 |  | days |
| 148 | 2.1-01 | Elaborar el plan de trabajo y el informe inicial del plan estratégico | 11d | 2027-05-26 | 2027-06-09 | 348 | days |
| 149 | 2.1-02 | Elaborar el diagnóstico del sistema aeronáutico, su marco normativo y su infraestructura | 36d | 2027-06-10 | 2027-07-29 | 148 | days |
| 150 | 2.1-03 | Formular la visión, los lineamientos y el plan de acción y redactar el borrador del plan estratégico | 41d | 2027-07-30 | 2027-09-24 | 149 | days |
| 151 | 2.1-04 | Revisar el borrador del plan estratégico y consolidar las observaciones de CEPA y del BID | 13d | 2027-09-27 | 2027-10-13 | 150 | days |
| 152 | 2.1-05 | Incorporar las observaciones y entregar la versión final del plan estratégico | 11d | 2027-10-14 | 2027-10-28 | 151 | days |
| 153 | 2.1-06 | Aprobar el plan estratégico final y remitirlo al BID | 8d | 2027-10-29 | 2027-11-09 | 152 | days |
| 154 | 2.2 | **Plan Maestro actualizado y funcionarios capacitados** | 316d | 2027-05-26 | 2028-08-09 |  | days |
| 155 | 2.2.1 | **Plan Maestro Aeroportuario actualizado y aprobado** | 260d | 2027-05-26 | 2028-05-23 |  | days |
| 156 | 2.2.1-01 | Elaborar el plan de trabajo y el informe inicial del Plan Maestro | 15d | 2027-05-26 | 2027-06-15 | 354 | days |
| 157 | 2.2.1-02 | Elaborar el inventario, el diagnóstico de instalaciones y el pronóstico de demanda | 77d | 2027-06-16 | 2027-09-30 | 156 | days |
| 158 | 2.2.1-03 | Determinar los requerimientos, evaluar alternativas y redactar el borrador del Plan Maestro con su plan de implementación y financiero | 109d | 2027-10-01 | 2028-03-01 | 150, 157 | days |
| 159 | 2.2.1-04 | Revisar el borrador del Plan Maestro y consolidar las observaciones de CEPA, la AAC y el BID | 27d | 2028-03-02 | 2028-04-07 | 158 | days |
| 160 | 2.2.1-05 | Incorporar las observaciones y las recomendaciones del estudio de conectividad y entregar la versión final del Plan Maestro | 21d | 2028-04-10 | 2028-05-08 | 159, 185 | days |
| 161 | 2.2.1-06 | Aprobar el Plan Maestro actualizado y entregarlo al BID | 11d | 2028-05-09 | 2028-05-23 | 153FF+10d, 160 | days |

Notes:
- 137: Costo en la línea base: US$ 0.088 millones, de los cuales US$ 0.007 millones son contingencia.
- 138: Fase: Cierre. Responsable: Coordinador general de obra. PERT: O 12, M 20, P 35 días laborables; De = 21.2. Técnica: Juicio de expertos.
- 139: Fase: Cierre. Responsable: Coordinador general de obra. PERT: O 8, M 12, P 22 días laborables; De = 13.0. Técnica: Juicio de expertos.
- 140: Fase: Cierre. Responsable: Coordinador general de obra. PERT: O 8, M 12, P 22 días laborables; De = 13.0. Técnica: Juicio de expertos.
- 141: Fase: Cierre. Responsable: Coordinador general de obra. PERT: O 5, M 8, P 15 días laborables; De = 8.7. Técnica: Juicio de expertos.
- 142: Fase: Cierre. Responsable: Coordinador general de obra. PERT: O 40, M 55, P 85 días laborables; De = 57.5. Técnica: Juicio de expertos.
- 143: Fase: Cierre. Responsable: Coordinador general de obra. PERT: O 30, M 40, P 60 días laborables; De = 41.7. Técnica: Juicio de expertos.
- 144: Fase: Cierre. Responsable: Coordinador general de obra. PERT: O 30, M 40, P 60 días laborables; De = 41.7. Técnica: Juicio de expertos.
- 145: Fase: Cierre. Responsable: Coordinador general de obra. PERT: O 20, M 30, P 45 días laborables; De = 30.8. Técnica: Juicio de expertos.
- 147: Costo en la línea base: US$ 0.874 millones, de los cuales US$ 0.171 millones son contingencia.
- 148: Fase: Planificación. Responsable: Firma consultora. PERT: O 8, M 10, P 15 días laborables; De = 10.5. Técnica: Juicio de expertos.
- 149: Fase: Ejecución. Responsable: Firma consultora. PERT: O 25, M 35, P 50 días laborables; De = 35.8. Técnica: Juicio de expertos.
- 150: Fase: Ejecución. Responsable: Firma consultora. PERT: O 30, M 40, P 55 días laborables; De = 40.8. Técnica: Juicio de expertos.
- 151: Fase: Monitoreo y control. Responsable: Especialista de planificación y monitoreo. PERT: O 10, M 12, P 20 días laborables; De = 13.0. Técnica: Juicio de expertos.
- 152: Fase: Ejecución. Responsable: Firma consultora. PERT: O 8, M 10, P 15 días laborables; De = 10.5. Técnica: Juicio de expertos.
- 153: Fase: Cierre. Responsable: CEPA. PERT: O 5, M 7, P 12 días laborables; De = 7.5. Técnica: Juicio de expertos.
- 155: Costo en la línea base: US$ 1.507 millones, de los cuales US$ 0.216 millones son contingencia.
- 156: Fase: Planificación. Responsable: Firma consultora. PERT: O 10, M 15, P 20 días laborables; De = 15.0. Técnica: Análoga.
- 157: Fase: Ejecución. Responsable: Firma consultora. PERT: O 60, M 75, P 100 días laborables; De = 76.7. Técnica: Análoga.
- 158: Fase: Ejecución. Responsable: Firma consultora. PERT: O 85, M 110, P 130 días laborables; De = 109.2. Técnica: Análoga.
- 159: Fase: Monitoreo y control. Responsable: Especialista de planificación y monitoreo. PERT: O 20, M 25, P 40 días laborables; De = 26.7. Técnica: Juicio de expertos.
- 160: Fase: Ejecución. Responsable: Firma consultora. PERT: O 15, M 20, P 30 días laborables; De = 20.8. Técnica: Juicio de expertos.
- 161: Fase: Cierre. Responsable: CEPA. PERT: O 5, M 10, P 20 días laborables; De = 10.8. Técnica: Juicio de expertos.

| ID | WBS | Task | Duration | Start | Finish | Predecessors | OPS_TaskDurationUnit |
| --- | --- | --- | --- | --- | --- | --- | --- |
| 162 | 2.2.2 | **Funcionarios capacitados en planificación, gestión y operación** | 115d | 2028-03-02 | 2028-08-09 |  | days |
| 163 | 2.2.2-01 | Preparar el programa, los materiales y la lista de participantes de la capacitación en planificación, gestión y operación | 21d | 2028-03-02 | 2028-03-30 | 158 | days |
| 164 | 2.2.2-02 | Impartir los cursos de planificación, gestión y operación aeroportuaria al menos a 21 funcionarios | 42d | 2028-05-24 | 2028-07-20 | 161, 163 | days |
| 165 | 2.2.2-03 | Aplicar las evaluaciones y los talleres de cierre a los participantes | 7d | 2028-07-21 | 2028-07-31 | 164 | days |
| 166 | 2.2.2-04 | Certificar a los funcionarios aprobados y registrar el indicador R2.1 | 7d | 2028-08-01 | 2028-08-09 | 165 | days |
| 167 | 2.3 | **Estrategia y capacitación BIM** | 146d | 2027-04-05 | 2027-10-25 |  | days |
| 168 | 2.3.1 | **Estrategia BIM aprobada** | 88d | 2027-04-05 | 2027-08-04 |  | days |
| 169 | 2.3.1-01 | Elaborar el plan de trabajo y el informe inicial de la estrategia BIM | 11d | 2027-04-05 | 2027-04-19 | 359 | days |
| 170 | 2.3.1-02 | Diagnosticar la madurez BIM de CEPA, sus procesos de diseño y sus herramientas | 21d | 2027-04-20 | 2027-05-18 | 169 | days |
| 171 | 2.3.1-03 | Formular la estrategia BIM (usos, roles, entorno común de datos y requisitos de información) y redactar el borrador | 30d | 2027-05-19 | 2027-06-29 | 170 | days |
| 172 | 2.3.1-04 | Revisar el borrador de la estrategia BIM y consolidar las observaciones de CEPA | 11d | 2027-06-30 | 2027-07-14 | 171 | days |
| 173 | 2.3.1-05 | Incorporar las observaciones y entregar la versión final de la estrategia BIM | 8d | 2027-07-15 | 2027-07-26 | 172 | days |
| 174 | 2.3.1-06 | Aprobar la estrategia BIM final | 7d | 2027-07-27 | 2027-08-04 | 173 | days |
| 175 | 2.3.2 | **Personal de ingeniería capacitado en BIM** | 65d | 2027-07-27 | 2027-10-25 |  | days |
| 176 | 2.3.2-01 | Preparar el programa y los materiales de la capacitación en BIM | 15d | 2027-07-27 | 2027-08-16 | 173 | days |
| 177 | 2.3.2-02 | Impartir los cursos de BIM al personal de ingeniería de CEPA | 36d | 2027-08-17 | 2027-10-05 | 174, 176 | days |
| 178 | 2.3.2-03 | Evaluar a los participantes en BIM | 7d | 2027-10-06 | 2027-10-14 | 177 | days |
| 179 | 2.3.2-04 | Entregar los materiales y el registro de la capacitación en BIM | 7d | 2027-10-15 | 2027-10-25 | 178 | days |
| 180 | 2.4 | **Estudio de conectividad terrestre entregado** | 130d | 2027-05-26 | 2027-11-23 |  | days |
| 181 | 2.4-01 | Elaborar el plan de trabajo y el informe inicial del estudio de conectividad terrestre | 11d | 2027-05-26 | 2027-06-09 | 365 | days |
| 182 | 2.4-02 | Diagnosticar el acceso terrestre al AIES con aforos, encuestas y análisis de los modos de transporte | 41d | 2027-06-10 | 2027-08-05 | 181 | days |
| 183 | 2.4-03 | Evaluar alternativas de acceso hacia San Salvador y los destinos turísticos y redactar el borrador del estudio | 46d | 2027-08-06 | 2027-10-08 | 182 | days |
| 184 | 2.4-04 | Revisar el borrador del estudio de conectividad y consolidar las observaciones de CEPA | 13d | 2027-10-11 | 2027-10-27 | 183 | days |
| 185 | 2.4-05 | Incorporar las observaciones y entregar el informe final del estudio de conectividad | 11d | 2027-10-28 | 2027-11-11 | 184 | days |
| 186 | 2.4-06 | Aprobar el informe final del estudio de conectividad | 8d | 2027-11-12 | 2027-11-23 | 185 | days |

Notes:
- 162: Costo en la línea base: US$ 0.034 millones, de los cuales US$ 0.004 millones son contingencia.
- 163: Fase: Planificación. Responsable: Firma consultora. PERT: O 15, M 20, P 30 días laborables; De = 20.8. Técnica: Juicio de expertos.
- 164: Fase: Ejecución. Responsable: Firma consultora. PERT: O 30, M 40, P 60 días laborables; De = 41.7. Técnica: Paramétrica.
- 165: Fase: Monitoreo y control. Responsable: Firma consultora. PERT: O 5, M 7, P 10 días laborables; De = 7.2. Técnica: Juicio de expertos.
- 166: Fase: Cierre. Responsable: Especialista de planificación y monitoreo. PERT: O 5, M 7, P 10 días laborables; De = 7.2. Técnica: Juicio de expertos.
- 168: Costo en la línea base: US$ 0.205 millones, de los cuales US$ 0.024 millones son contingencia.
- 169: Fase: Planificación. Responsable: Firma consultora. PERT: O 8, M 10, P 15 días laborables; De = 10.5. Técnica: Juicio de expertos.
- 170: Fase: Ejecución. Responsable: Firma consultora. PERT: O 15, M 20, P 30 días laborables; De = 20.8. Técnica: Juicio de expertos.
- 171: Fase: Ejecución. Responsable: Firma consultora. PERT: O 20, M 30, P 40 días laborables; De = 30.0. Técnica: Juicio de expertos.
- 172: Fase: Monitoreo y control. Responsable: Especialista técnico. PERT: O 8, M 10, P 15 días laborables; De = 10.5. Técnica: Juicio de expertos.
- 173: Fase: Ejecución. Responsable: Firma consultora. PERT: O 6, M 8, P 12 días laborables; De = 8.3. Técnica: Juicio de expertos.
- 174: Fase: Cierre. Responsable: CEPA. PERT: O 5, M 7, P 10 días laborables; De = 7.2. Técnica: Juicio de expertos.
- 175: Costo en la línea base: US$ 0.088 millones, de los cuales US$ 0.010 millones son contingencia.
- 176: Fase: Planificación. Responsable: Firma consultora. PERT: O 10, M 15, P 20 días laborables; De = 15.0. Técnica: Juicio de expertos.
- 177: Fase: Ejecución. Responsable: Firma consultora. PERT: O 25, M 35, P 50 días laborables; De = 35.8. Técnica: Paramétrica.
- 178: Fase: Monitoreo y control. Responsable: Firma consultora. PERT: O 5, M 7, P 10 días laborables; De = 7.2. Técnica: Juicio de expertos.
- 179: Fase: Cierre. Responsable: Especialista técnico. PERT: O 5, M 7, P 10 días laborables; De = 7.2. Técnica: Juicio de expertos.
- 180: Costo en la línea base: US$ 0.257 millones, de los cuales US$ 0.034 millones son contingencia.
- 181: Fase: Planificación. Responsable: Firma consultora. PERT: O 8, M 10, P 15 días laborables; De = 10.5. Técnica: Juicio de expertos.
- 182: Fase: Ejecución. Responsable: Firma consultora. PERT: O 30, M 40, P 55 días laborables; De = 40.8. Técnica: Juicio de expertos.
- 183: Fase: Ejecución. Responsable: Firma consultora. PERT: O 35, M 45, P 60 días laborables; De = 45.8. Técnica: Juicio de expertos.
- 184: Fase: Monitoreo y control. Responsable: Especialista de planificación y monitoreo. PERT: O 10, M 12, P 20 días laborables; De = 13.0. Técnica: Juicio de expertos.
- 185: Fase: Ejecución. Responsable: Firma consultora. PERT: O 8, M 10, P 15 días laborables; De = 10.5. Técnica: Juicio de expertos.
- 186: Fase: Cierre. Responsable: CEPA. PERT: O 5, M 7, P 12 días laborables; De = 7.5. Técnica: Juicio de expertos.

| ID | WBS | Task | Duration | Start | Finish | Predecessors | OPS_TaskDurationUnit |
| --- | --- | --- | --- | --- | --- | --- | --- |
| 187 | 2.5 | **Estudio de diversificación de destinos entregado** | 124d | 2027-04-05 | 2027-09-23 |  | days |
| 188 | 2.5-01 | Elaborar el plan de trabajo y el informe inicial del estudio de diversificación de destinos | 11d | 2027-04-05 | 2027-04-19 | 370 | days |
| 189 | 2.5-02 | Diagnosticar el mercado actual del AIES (tráfico, aerolíneas, rutas y zona de influencia) | 35d | 2027-04-20 | 2027-06-07 | 188 | days |
| 190 | 2.5-03 | Analizar los mercados de origen y destino y las aerolíneas potenciales, priorizarlos y redactar el borrador del estudio | 46d | 2027-06-08 | 2027-08-10 | 189 | days |
| 191 | 2.5-04 | Revisar el borrador del estudio de diversificación y consolidar las observaciones de CEPA | 13d | 2027-08-11 | 2027-08-27 | 190 | days |
| 192 | 2.5-05 | Incorporar las observaciones y entregar el informe final del estudio de diversificación | 11d | 2027-08-30 | 2027-09-13 | 191 | days |
| 193 | 2.5-06 | Aprobar el informe final del estudio de diversificación | 8d | 2027-09-14 | 2027-09-23 | 192 | days |
| 194 | 2.6 | **Auditoría y capacitación EDGE** | 568d | 2027-04-05 | 2029-06-06 |  | days |
| 195 | 2.6.1 | **Auditoría para la certificación EDGE realizada** | 568d | 2027-04-05 | 2029-06-06 |  | days |
| 196 | 2.6.1-01 | Registrar los proyectos de terminal y estacionamiento en EDGE y elaborar la autoevaluación | 21d | 2027-04-05 | 2027-05-03 | 8, 21, 375 | days |
| 197 | 2.6.1-02 | Realizar la auditoría de diseño y obtener el certificado preliminar EDGE | 36d | 2027-05-04 | 2027-06-22 | 196 | days |
| 198 | 2.6.1-03 | Acompañar a CEPA y a los contratistas para conservar las medidas EDGE durante la construcción | 453d | 2027-06-23 | 2029-03-16 | 197 | days |
| 199 | 2.6.1-04 | Realizar la auditoría en sitio de las medidas EDGE de la terminal y del estacionamiento terminados | 26d | 2029-03-19 | 2029-04-23 | 50, 102, 198 | days |
| 200 | 2.6.1-05 | Atender las observaciones del proveedor de certificación y presentar el informe de auditoría | 26d | 2029-04-24 | 2029-05-29 | 199 | days |
| 201 | 2.6.1-06 | Recibir el certificado EDGE final y el informe de auditoría | 6d | 2029-05-30 | 2029-06-06 | 200 | days |
| 202 | 2.6.2 | **Personal capacitado en certificación EDGE** | 508d | 2027-06-23 | 2029-06-01 |  | days |
| 203 | 2.6.2-01 | Preparar el programa y los materiales de la capacitación en EDGE | 11d | 2027-06-23 | 2027-07-07 | 197 | days |
| 204 | 2.6.2-02 | Impartir el curso de EDGE al personal previsto | 16d | 2029-04-24 | 2029-05-15 | 199, 203 | days |
| 205 | 2.6.2-03 | Evaluar y certificar a los participantes en EDGE | 7d | 2029-05-16 | 2029-05-24 | 204 | days |
| 206 | 2.6.2-04 | Entregar el registro de la capacitación en EDGE | 6d | 2029-05-25 | 2029-06-01 | 205 | days |
| 207 | 2.7 | **Estudio de separación de flujos entregado** | 88d | 2027-04-05 | 2027-08-04 |  | days |
| 208 | 2.7-01 | Elaborar el plan de trabajo y el informe inicial del estudio de separación de flujos | 11d | 2027-04-05 | 2027-04-19 | 380 | days |
| 209 | 2.7-02 | Diagnosticar los flujos de llegadas y salidas de la terminal antigua mediante levantamiento y observación | 21d | 2027-04-20 | 2027-05-18 | 208 | days |
| 210 | 2.7-03 | Identificar y priorizar las intervenciones de separación de flujos y redactar el borrador del estudio | 30d | 2027-05-19 | 2027-06-29 | 8, 209 | days |
| 211 | 2.7-04 | Revisar el borrador del estudio de separación de flujos y consolidar las observaciones de CEPA | 11d | 2027-06-30 | 2027-07-14 | 210 | days |
| 212 | 2.7-05 | Incorporar las observaciones y entregar el informe final del estudio de separación de flujos | 8d | 2027-07-15 | 2027-07-26 | 211 | days |
| 213 | 2.7-06 | Aprobar el informe final del estudio de separación de flujos | 7d | 2027-07-27 | 2027-08-04 | 212 | days |

Notes:
- 187: Costo en la línea base: US$ 0.191 millones, de los cuales US$ 0.014 millones son contingencia.
- 188: Fase: Planificación. Responsable: Firma consultora. PERT: O 8, M 10, P 15 días laborables; De = 10.5. Técnica: Juicio de expertos.
- 189: Fase: Ejecución. Responsable: Firma consultora. PERT: O 25, M 35, P 45 días laborables; De = 35.0. Técnica: Juicio de expertos.
- 190: Fase: Ejecución. Responsable: Firma consultora. PERT: O 35, M 45, P 60 días laborables; De = 45.8. Técnica: Juicio de expertos.
- 191: Fase: Monitoreo y control. Responsable: Especialista de planificación y monitoreo. PERT: O 10, M 12, P 20 días laborables; De = 13.0. Técnica: Juicio de expertos.
- 192: Fase: Ejecución. Responsable: Firma consultora. PERT: O 8, M 10, P 15 días laborables; De = 10.5. Técnica: Juicio de expertos.
- 193: Fase: Cierre. Responsable: CEPA. PERT: O 5, M 7, P 12 días laborables; De = 7.5. Técnica: Juicio de expertos.
- 195: Costo en la línea base: US$ 0.020 millones, de los cuales US$ 0.002 millones son contingencia.
- 196: Fase: Planificación. Responsable: Firma consultora. PERT: O 15, M 20, P 30 días laborables; De = 20.8. Técnica: Juicio de expertos.
- 197: Fase: Ejecución. Responsable: Firma consultora. PERT: O 25, M 35, P 50 días laborables; De = 35.8. Técnica: Análoga.
- 198: Fase: Monitoreo y control. Responsable: Firma consultora. Nivel de esfuerzo: su duración se fijó para terminar con 1.2.4-06, 1.5.3-04.
- 199: Fase: Ejecución. Responsable: Firma consultora. PERT: O 20, M 25, P 35 días laborables; De = 25.8. Técnica: Análoga.
- 200: Fase: Ejecución. Responsable: Firma consultora. PERT: O 20, M 25, P 35 días laborables; De = 25.8. Técnica: Análoga.
- 201: Fase: Cierre. Responsable: CEPA. PERT: O 5, M 5, P 10 días laborables; De = 5.8. Técnica: Juicio de expertos.
- 202: Costo en la línea base: US$ 0.004 millones, de los cuales US$ 0.000 millones son contingencia.
- 203: Fase: Planificación. Responsable: Firma consultora. PERT: O 8, M 10, P 15 días laborables; De = 10.5. Técnica: Juicio de expertos.
- 204: Fase: Ejecución. Responsable: Firma consultora. PERT: O 10, M 15, P 25 días laborables; De = 15.8. Técnica: Paramétrica.
- 205: Fase: Monitoreo y control. Responsable: Firma consultora. PERT: O 5, M 7, P 10 días laborables; De = 7.2. Técnica: Juicio de expertos.
- 206: Fase: Cierre. Responsable: Especialista técnico. PERT: O 5, M 5, P 8 días laborables; De = 5.5. Técnica: Juicio de expertos.
- 207: Costo en la línea base: US$ 0.185 millones, de los cuales US$ 0.025 millones son contingencia.
- 208: Fase: Planificación. Responsable: Firma consultora. PERT: O 8, M 10, P 15 días laborables; De = 10.5. Técnica: Juicio de expertos.
- 209: Fase: Ejecución. Responsable: Firma consultora. PERT: O 15, M 20, P 30 días laborables; De = 20.8. Técnica: Juicio de expertos.
- 210: Fase: Ejecución. Responsable: Firma consultora. PERT: O 20, M 30, P 40 días laborables; De = 30.0. Técnica: Juicio de expertos.
- 211: Fase: Monitoreo y control. Responsable: Especialista técnico. PERT: O 8, M 10, P 15 días laborables; De = 10.5. Técnica: Juicio de expertos.
- 212: Fase: Ejecución. Responsable: Firma consultora. PERT: O 5, M 8, P 12 días laborables; De = 8.2. Técnica: Juicio de expertos.
- 213: Fase: Cierre. Responsable: CEPA. PERT: O 5, M 7, P 10 días laborables; De = 7.2. Técnica: Juicio de expertos.

| ID | WBS | Task | Duration | Start | Finish | Predecessors | Constraint | OPS_TaskDurationUnit |
| --- | --- | --- | --- | --- | --- | --- | --- | --- |
| 214 | 2.8 | **Estudio de movilidad interna entregado** | 103d | 2027-04-05 | 2027-08-25 |  |  | days |
| 215 | 2.8-01 | Elaborar el plan de trabajo y el informe inicial del estudio de movilidad interna | 11d | 2027-04-05 | 2027-04-19 | 385 |  | days |
| 216 | 2.8-02 | Diagnosticar el tráfico de las vías internas con aforos en horas pico y en el dejar y recoger pasajeros | 30d | 2027-04-20 | 2027-05-31 | 215 |  | days |
| 217 | 2.8-03 | Analizar los puntos de conflicto, definir las medidas y redactar el borrador del estudio | 36d | 2027-06-01 | 2027-07-20 | 21, 216 |  | days |
| 218 | 2.8-04 | Revisar el borrador del estudio de movilidad interna y consolidar las observaciones de CEPA | 11d | 2027-07-21 | 2027-08-04 | 217 |  | days |
| 219 | 2.8-05 | Incorporar las observaciones y entregar el informe final del estudio de movilidad interna | 8d | 2027-08-05 | 2027-08-16 | 218 |  | days |
| 220 | 2.8-06 | Aprobar el informe final del estudio de movilidad interna | 7d | 2027-08-17 | 2027-08-25 | 219 |  | days |
| 221 | 2.9 | **Programa de igualdad e inclusión ejecutado** | 603d | 2027-04-05 | 2029-07-25 |  |  | days |
| 222 | 2.9-01 | Elaborar el diagnóstico de necesidades, el programa y los materiales de capacitación en igualdad e inclusión | 30d | 2027-04-05 | 2027-05-14 | 390 |  | days |
| 223 | 2.9-02 | Impartir la capacitación a la primera cohorte de 100 funcionarios y evaluarla | 35d | 2027-05-17 | 2027-07-02 | 222 |  | days |
| 224 | 2.9-03 | Impartir la capacitación a la segunda cohorte de 100 funcionarios y evaluarla | 35d | 2028-05-15 | 2028-06-30 | 223SS+260d |  | days |
| 225 | 2.9-04 | Impartir la capacitación a la tercera cohorte de 100 funcionarios y evaluarla | 35d | 2029-05-14 | 2029-06-29 | 224SS+260d |  | days |
| 226 | 2.9-05 | Emitir las constancias de los 300 funcionarios aprobados y entregar el informe final del programa | 11d | 2029-07-02 | 2029-07-16 | 225 |  | days |
| 227 | 2.9-06 | Aprobar el informe final y registrar el indicador T2 en el informe semestral | 7d | 2029-07-17 | 2029-07-25 | 226 |  | days |
| 228 | 3 | **Administración, evaluación y auditorías** | 1086d | 2026-02-02 | 2030-04-01 |  |  | days |
| 229 | 3.1 | **Condiciones de arranque cumplidas** | 62d | 2026-04-16 | 2026-07-10 |  |  | days |
| 230 | 3.1.1 | **Unidad ejecutora conformada y en funciones** | 22d | 2026-04-16 | 2026-05-15 |  |  | days |
| 231 | 3.1.1-01 | Incorporar al Coordinador del Programa, al Coordinador general de obra y al Especialista de planificación y monitoreo | 5d | 2026-04-16 | 2026-04-22 | 396 | start no earlier than 2026-04-16 | days |
| 232 | 3.1.1-02 | Incorporar al Especialista de adquisiciones | 5d | 2026-04-23 | 2026-04-29 | 396 | start no earlier than 2026-04-23 | days |
| 233 | 3.1.1-03 | Incorporar al Especialista técnico, al Especialista financiero y al Especialista socioambiental | 5d | 2026-05-04 | 2026-05-08 | 396 | start no earlier than 2026-05-04 | days |
| 234 | 3.1.1-04 | Registrar las firmas autorizadas del programa ante el BID | 5d | 2026-04-23 | 2026-04-29 | 231 |  | days |
| 235 | 3.1.1-05 | Documentar ante el BID la conformación de la UEP con dedicación exclusiva | 5d | 2026-05-11 | 2026-05-15 | 231, 232, 233, 234 |  | days |
| 236 | 3.1.2 | **Reglamento operativo vigente** | 30d | 2026-06-01 | 2026-07-10 |  |  | days |
| 237 | 3.1.2-01 | Ajustar el borrador del ROP acordado con el BID a la estructura de la UEP y a las cifras del PA | 15d | 2026-06-01 | 2026-06-19 | 231, 270 |  | days |
| 238 | 3.1.2-02 | Obtener la no objeción del BID al ROP ajustado | 10d | 2026-06-22 | 2026-07-03 | 237 |  | days |
| 239 | 3.1.2-03 | Aprobar el ROP en CEPA mediante resolución de la autoridad superior | 5d | 2026-07-06 | 2026-07-10 | 238 |  | days |

Notes:
- 214: Costo en la línea base: US$ 0.185 millones, de los cuales US$ 0.025 millones son contingencia.
- 215: Fase: Planificación. Responsable: Firma consultora. PERT: O 8, M 10, P 15 días laborables; De = 10.5. Técnica: Juicio de expertos.
- 216: Fase: Ejecución. Responsable: Firma consultora. PERT: O 20, M 30, P 40 días laborables; De = 30.0. Técnica: Juicio de expertos.
- 217: Fase: Ejecución. Responsable: Firma consultora. PERT: O 25, M 35, P 50 días laborables; De = 35.8. Técnica: Juicio de expertos.
- 218: Fase: Monitoreo y control. Responsable: Especialista técnico. PERT: O 8, M 10, P 15 días laborables; De = 10.5. Técnica: Juicio de expertos.
- 219: Fase: Ejecución. Responsable: Firma consultora. PERT: O 5, M 8, P 12 días laborables; De = 8.2. Técnica: Juicio de expertos.
- 220: Fase: Cierre. Responsable: CEPA. PERT: O 5, M 7, P 10 días laborables; De = 7.2. Técnica: Juicio de expertos.
- 221: Costo en la línea base: US$ 0.039 millones, de los cuales US$ 0.005 millones son contingencia.
- 222: Fase: Planificación. Responsable: Firma consultora. PERT: O 20, M 30, P 40 días laborables; De = 30.0. Técnica: Juicio de expertos.
- 223: Fase: Ejecución. Responsable: Firma consultora. PERT: O 25, M 35, P 45 días laborables; De = 35.0. Técnica: Juicio de expertos.
- 224: Fase: Ejecución. Responsable: Firma consultora. PERT: O 25, M 35, P 45 días laborables; De = 35.0. Técnica: Juicio de expertos.
- 225: Fase: Ejecución. Responsable: Firma consultora. PERT: O 25, M 35, P 45 días laborables; De = 35.0. Técnica: Juicio de expertos.
- 226: Fase: Cierre. Responsable: Firma consultora. PERT: O 8, M 10, P 15 días laborables; De = 10.5. Técnica: Juicio de expertos.
- 227: Fase: Cierre. Responsable: Especialista socioambiental. PERT: O 5, M 7, P 10 días laborables; De = 7.2. Técnica: Juicio de expertos.
- 230: Costo en la línea base: US$ 2.387 millones, de los cuales US$ 0.114 millones son contingencia.
- 231: Fase: Inicio. Responsable: CEPA. PERT: O 4, M 5, P 6 días laborables; De = 5.0. Técnica: Dato del programa.
- 232: Fase: Inicio. Responsable: CEPA. PERT: O 4, M 5, P 6 días laborables; De = 5.0. Técnica: Dato del programa.
- 233: Fase: Inicio. Responsable: CEPA. PERT: O 4, M 5, P 6 días laborables; De = 5.0. Técnica: Dato del programa.
- 234: Fase: Inicio. Responsable: Especialista financiero. PERT: O 4, M 5, P 6 días laborables; De = 5.0. Técnica: Juicio de expertos.
- 235: Fase: Inicio. Responsable: Coordinador del Programa. PERT: O 4, M 5, P 6 días laborables; De = 5.0. Técnica: Juicio de expertos.
- 236: Ejecutado por el personal de la UEP, sin costo adicional en la línea base.
- 237: Fase: Inicio. Responsable: Coordinador del Programa. PERT: O 12, M 15, P 18 días laborables; De = 15.0. Técnica: Juicio de expertos.
- 238: Fase: Inicio. Responsable: BID. PERT: O 5, M 10, P 15 días laborables; De = 10.0. Técnica: Juicio de expertos.
- 239: Fase: Inicio. Responsable: CEPA. PERT: O 4, M 5, P 6 días laborables; De = 5.0. Técnica: Juicio de expertos.

| ID | WBS | Task | Duration | Start | Finish | Predecessors | Constraint | OPS_TaskDurationUnit |
| --- | --- | --- | --- | --- | --- | --- | --- | --- |
| 240 | 3.1.3 | **Convenio de transferencia de recursos vigente** | 35d | 2026-05-18 | 2026-07-03 |  |  | days |
| 241 | 3.1.3-01 | Redactar el convenio de transferencia de recursos entre la República y CEPA | 20d | 2026-05-18 | 2026-06-12 | 235 |  | days |
| 242 | 3.1.3-02 | Obtener la no objeción del BID al texto del convenio | 5d | 2026-06-15 | 2026-06-19 | 241 |  | days |
| 243 | 3.1.3-03 | Suscribir el convenio y ponerlo en vigencia | 10d | 2026-06-22 | 2026-07-03 | 242 |  | days |
| 244 | 3.1.4 | **Cuenta especial aperturada** | 25d | 2026-04-30 | 2026-06-03 |  |  | days |
| 245 | 3.1.4-01 | Solicitar a la Dirección General de Tesorería la apertura de la cuenta especial en el BCR | 10d | 2026-04-30 | 2026-05-13 | 234 |  | days |
| 246 | 3.1.4-02 | Abrir y habilitar la cuenta especial para recibir desembolsos | 10d | 2026-05-14 | 2026-05-27 | 245 |  | days |
| 247 | 3.1.4-03 | Registrar la cuenta especial ante el BID | 5d | 2026-05-28 | 2026-06-03 | 246 |  | days |
| 248 | 3.2 | **Planes de ejecución aprobados** | 1003d | 2026-02-02 | 2029-12-05 |  |  | days |
| 249 | 3.2.1 | **Plan de ejecución plurianual aprobado** | 35d | 2026-04-23 | 2026-06-10 |  |  | days |
| 250 | 3.2.1-01 | Actualizar la EDT, el cronograma y el presupuesto del PEP de noviembre de 2025 con las fechas reales del préstamo | 20d | 2026-04-23 | 2026-05-20 | 231 |  | days |
| 251 | 3.2.1-02 | Integrar al PEP el calendario de adquisiciones, hitos y desembolsos por componente | 10d | 2026-05-21 | 2026-06-03 | 250, 264 |  | days |
| 252 | 3.2.1-03 | Aprobar el PEP en CEPA y presentarlo al BID | 5d | 2026-06-04 | 2026-06-10 | 251 |  | days |
| 253 | 3.2.2 | **Planes operativos anuales aprobados** | 808d | 2026-11-02 | 2029-12-05 |  |  | days |
| 254 | 3.2.2-01 | Elaborar el POA 2027 con metas, cronograma físico y financiero y presupuesto por producto | 20d | 2026-11-02 | 2026-11-27 | 252 | start no earlier than 2026-11-02 | days |
| 255 | 3.2.2-02 | Aprobar el POA 2027 en CEPA y presentarlo al BID antes del inicio del año | 5d | 2026-11-30 | 2026-12-04 | 254 |  | days |
| 256 | 3.2.2-03 | Elaborar el POA 2028 con metas, cronograma físico y financiero y presupuesto por producto | 20d | 2027-11-01 | 2027-11-26 | 255 | start no earlier than 2027-11-01 | days |
| 257 | 3.2.2-04 | Aprobar el POA 2028 en CEPA y presentarlo al BID antes del inicio del año | 5d | 2027-11-29 | 2027-12-03 | 256 |  | days |
| 258 | 3.2.2-05 | Elaborar el POA 2029 con metas, cronograma físico y financiero y presupuesto por producto | 20d | 2028-11-01 | 2028-11-28 | 257 | start no earlier than 2028-11-01 | days |
| 259 | 3.2.2-06 | Aprobar el POA 2029 en CEPA y presentarlo al BID antes del inicio del año | 5d | 2028-11-29 | 2028-12-05 | 258 |  | days |
| 260 | 3.2.2-07 | Elaborar el POA 2030 con metas, cronograma físico y financiero y presupuesto por producto | 20d | 2029-11-01 | 2029-11-28 | 259 | start no earlier than 2029-11-01 | days |
| 261 | 3.2.2-08 | Aprobar el POA 2030 en CEPA y presentarlo al BID antes del inicio del año | 5d | 2029-11-29 | 2029-12-05 | 260 |  | days |
| 262 | 3.2.3 | **Plan de adquisiciones aprobado** | 908d | 2026-02-02 | 2029-07-25 |  |  | days |
| 263 | 3.2.3-01 | Elaborar el Plan de Adquisiciones inicial 2026-1 con estacionamiento, su supervisión, la UEP y la auditoría del año 1 | 30d | 2026-02-02 | 2026-03-13 |  |  | days |
| 264 | 3.2.3-02 | Obtener la no objeción del BID al Plan de Adquisiciones 2026-1 | 5d | 2026-04-07 | 2026-04-13 | 263 | start no earlier than 2026-04-07 | days |
| 265 | 3.2.3-03 | Actualizar el Plan de Adquisiciones a la versión 2026-2 con terminal, SSEI, plataformas y las tres supervisiones restantes | 20d | 2026-04-14 | 2026-05-11 | 264 |  | days |
| 266 | 3.2.3-04 | Obtener la no objeción del BID al Plan de Adquisiciones 2026-2 | 5d | 2026-07-08 | 2026-07-14 | 265 | start no earlier than 2026-07-08 | days |
| 267 | 3.2.3-05 | Mantener el Plan de Adquisiciones actualizado en el sistema del BID cada vez que cambie un proceso | 791d | 2026-07-15 | 2029-07-25 | 266 |  | days |

Notes:
- 240: Ejecutado por el personal de la UEP, sin costo adicional en la línea base.
- 241: Fase: Inicio. Responsable: Coordinador del Programa. PERT: O 16, M 20, P 24 días laborables; De = 20.0. Técnica: Juicio de expertos.
- 242: Fase: Inicio. Responsable: BID. PERT: O 3, M 5, P 7 días laborables; De = 5.0. Técnica: Dato del programa.
- 243: Fase: Inicio. Responsable: CEPA. PERT: O 8, M 10, P 12 días laborables; De = 10.0. Técnica: Juicio de expertos.
- 244: Ejecutado por el personal de la UEP, sin costo adicional en la línea base.
- 245: Fase: Inicio. Responsable: Especialista financiero. PERT: O 8, M 10, P 12 días laborables; De = 10.0. Técnica: Juicio de expertos.
- 246: Fase: Inicio. Responsable: CEPA. PERT: O 8, M 10, P 12 días laborables; De = 10.0. Técnica: Juicio de expertos.
- 247: Fase: Inicio. Responsable: Especialista financiero. PERT: O 4, M 5, P 6 días laborables; De = 5.0. Técnica: Juicio de expertos.
- 249: Ejecutado por el personal de la UEP, sin costo adicional en la línea base.
- 250: Fase: Planificación. Responsable: Especialista de planificación y monitoreo. PERT: O 16, M 20, P 24 días laborables; De = 20.0. Técnica: Juicio de expertos.
- 251: Fase: Planificación. Responsable: Especialista de planificación y monitoreo. PERT: O 8, M 10, P 12 días laborables; De = 10.0. Técnica: Juicio de expertos.
- 252: Fase: Planificación. Responsable: Coordinador del Programa. PERT: O 4, M 5, P 6 días laborables; De = 5.0. Técnica: Juicio de expertos.
- 253: Ejecutado por el personal de la UEP, sin costo adicional en la línea base.
- 254: Fase: Planificación. Responsable: Especialista de planificación y monitoreo. PERT: O 16, M 20, P 24 días laborables; De = 20.0. Técnica: Juicio de expertos.
- 255: Fase: Planificación. Responsable: Coordinador del Programa. PERT: O 4, M 5, P 6 días laborables; De = 5.0. Técnica: Juicio de expertos.
- 256: Fase: Planificación. Responsable: Especialista de planificación y monitoreo. PERT: O 16, M 20, P 24 días laborables; De = 20.0. Técnica: Juicio de expertos.
- 257: Fase: Planificación. Responsable: Coordinador del Programa. PERT: O 4, M 5, P 6 días laborables; De = 5.0. Técnica: Juicio de expertos.
- 258: Fase: Planificación. Responsable: Especialista de planificación y monitoreo. PERT: O 16, M 20, P 24 días laborables; De = 20.0. Técnica: Juicio de expertos.
- 259: Fase: Planificación. Responsable: Coordinador del Programa. PERT: O 4, M 5, P 6 días laborables; De = 5.0. Técnica: Juicio de expertos.
- 260: Fase: Planificación. Responsable: Especialista de planificación y monitoreo. PERT: O 16, M 20, P 24 días laborables; De = 20.0. Técnica: Juicio de expertos.
- 261: Fase: Planificación. Responsable: Coordinador del Programa. PERT: O 4, M 5, P 6 días laborables; De = 5.0. Técnica: Juicio de expertos.
- 262: Ejecutado por el personal de la UEP, sin costo adicional en la línea base.
- 263: Fase: Planificación. Responsable: CEPA. PERT: O 20, M 30, P 40 días laborables; De = 30.0. Técnica: Juicio de expertos.
- 264: Fase: Planificación. Responsable: BID. PERT: O 3, M 5, P 7 días laborables; De = 5.0. Técnica: Dato del programa.
- 265: Fase: Planificación. Responsable: Especialista de adquisiciones. PERT: O 16, M 20, P 24 días laborables; De = 20.0. Técnica: Juicio de expertos.
- 266: Fase: Planificación. Responsable: BID. PERT: O 3, M 5, P 7 días laborables; De = 5.0. Técnica: Dato del programa.
- 267: Fase: Monitoreo y control. Responsable: Especialista de adquisiciones. Nivel de esfuerzo: su duración se fijó para terminar con 3.4.1-06, 3.4.1-12, 3.4.1-18, 3.4.1-24, 3.4.2-06, 3.4.2-12, 3.4.2-18, 3.4.2-24, 3.4.3-08, 3.4.3-14, 3.4.3-19, 3.4.3-25, 3.4.3-30, 3.4.3-35, 3.4.3-40, 3.4.3-45, 3.4.3-50, 3.4.4-05, 3.4.4-10, 3.4.4-15, 3.4.4-20, 3.4.4-25, 3.4.4-30, 3.4.4-35, 3.4.4-40.

| ID | WBS | Task | Duration | Start | Finish | Predecessors | Constraint | OPS_TaskDurationUnit |
| --- | --- | --- | --- | --- | --- | --- | --- | --- |
| 268 | 3.3 | **Condiciones socioambientales y de seguridad operacional** | 839d | 2026-05-11 | 2029-07-26 |  |  | days |
| 269 | 3.3.1 | **Sistema de gestión ambiental y social y plan de acción vigentes** | 169d | 2026-05-11 | 2026-12-31 |  |  | days |
| 270 | 3.3.1-01 | Revisar el PAAS del 8 de octubre de 2025 y ajustar el SGAS a la organización de la UEP | 15d | 2026-05-11 | 2026-05-29 | 233 |  | days |
| 271 | 3.3.1-02 | Elaborar los procedimientos y formatos del SGAS: selección de obra, reporte de incidentes e informe de cumplimiento | 20d | 2026-06-01 | 2026-06-26 | 270 |  | days |
| 272 | 3.3.1-03 | Obtener la no objeción del BID al SGAS y al PAAS actualizados | 10d | 2026-06-29 | 2026-07-10 | 271 |  | days |
| 273 | 3.3.1-04 | Incorporar el SGAS y el PAAS como anexos del ROP aprobado | 5d | 2026-07-13 | 2026-07-17 | 239, 272 |  | days |
| 274 | 3.3.1-05 | Elaborar el Plan de Gestión del Riesgo de Desastres y Cambio Climático final con los diseños aprobados | 31d | 2026-11-11 | 2026-12-23 | 273, 8, 15, 21, 27 |  | days |
| 275 | 3.3.1-06 | Presentar al BID el Plan de Gestión del Riesgo de Desastres y Cambio Climático final | 6d | 2026-12-24 | 2026-12-31 | 274 |  | days |
| 276 | 3.3.2 | **Protocolo de seguridad operacional aprobado por la AAC** | 87d | 2026-11-11 | 2027-03-11 |  |  | days |
| 277 | 3.3.2-01 | Evaluar el riesgo operacional y definir las fases de trabajo del lado aire junto con la operación aeroportuaria | 20d | 2026-11-11 | 2026-12-08 | 15, 273 |  | days |
| 278 | 3.3.2-02 | Elaborar el protocolo de seguridad operacional para obras del lado aire, de uso de contratistas y supervisión | 30d | 2026-12-09 | 2027-01-19 | 277 |  | days |
| 279 | 3.3.2-03 | Presentar el protocolo a la AAC y atender sus observaciones | 15d | 2027-01-20 | 2027-02-09 | 278 |  | days |
| 280 | 3.3.2-04 | Aprobar el protocolo de seguridad operacional de las obras del lado aire | 22d | 2027-02-10 | 2027-03-11 | 279 |  | days |
| 281 | 3.3.3 | **Mecanismo de quejas y reclamos en operación** | 695d | 2026-07-20 | 2029-03-16 |  |  | days |
| 282 | 3.3.3-01 | Diseñar el procedimiento del mecanismo de quejas y reclamos: canales, plazos de respuesta y registro de casos | 15d | 2026-07-20 | 2026-08-07 | 273 |  | days |
| 283 | 3.3.3-02 | Instalar y difundir los canales del mecanismo entre trabajadores, usuarios, arrendatarios, aerolíneas y comunidades | 20d | 2026-08-10 | 2026-09-04 | 282 |  | days |
| 284 | 3.3.3-03 | Operar el mecanismo, registrar los casos y dar respuesta durante las obras | 660d | 2026-09-07 | 2029-03-16 | 283 |  | days |
| 285 | 3.3.4 | **Informes de cumplimiento socioambiental presentados** | 789d | 2026-07-20 | 2029-07-26 |  |  | days |
| 286 | 3.3.4-01 | Acordar con el BID el formato del informe de cumplimiento ambiental y social semestral | 10d | 2026-07-20 | 2026-07-31 | 273 |  | days |
| 287 | 3.3.4-02 | Presentar los informes semestrales de cumplimiento ambiental y social junto con el informe de progreso | 544d | 2027-02-16 | 2029-03-16 | 88SS, 286 |  | days |
| 288 | 3.3.4-03 | Presentar al BID el informe final ambiental y social del programa | 15d | 2029-07-06 | 2029-07-26 | 287, 142, 143, 144, 145 |  | days |
| 289 | 3.4 | **Contratos del programa firmados** | 908d | 2026-02-02 | 2029-07-25 |  |  | days |
| 290 | 3.4.1 | **Contratos de obras del Componente I firmados** | 283d | 2026-06-23 | 2027-07-22 |  |  | days |
| 291 | 3.4.1-01 | Preparar los documentos de licitación del estacionamiento y el sistema solar | 45d | 2026-06-23 | 2026-08-24 | 21FF, 232, 264 |  | days |
| 292 | 3.4.1-02 | Obtener la no objeción del BID a los documentos de licitación del estacionamiento y el sistema solar | 5d | 2026-08-25 | 2026-08-31 | 273, 291 |  | days |
| 293 | 3.4.1-03 | Publicar el aviso específico de adquisiciones del estacionamiento y el sistema solar y recibir ofertas hasta la apertura | 31d | 2026-09-04 | 2026-10-16 | 239, 292 | start no earlier than 2026-09-04 | days |
| 294 | 3.4.1-04 | Evaluar las ofertas del estacionamiento y el sistema solar y elaborar el informe de evaluación | 29d | 2026-10-19 | 2026-11-26 | 293 |  | days |
| 295 | 3.4.1-05 | Obtener la no objeción del BID a la evaluación y a la recomendación de adjudicación del estacionamiento y el sistema solar | 5d | 2026-11-27 | 2026-12-03 | 294 |  | days |
| 296 | 3.4.1-06 | Adjudicar y firmar el contrato de obra del estacionamiento y el sistema solar | 39d | 2026-12-04 | 2027-01-27 | 295 |  | days |
| 297 | 3.4.1-07 | Preparar los documentos de licitación de la terminal de pasajeros | 45d | 2026-07-28 | 2026-09-28 | 8FF, 232, 266 |  | days |
| 298 | 3.4.1-08 | Obtener la no objeción del BID a los documentos de licitación de la terminal de pasajeros | 5d | 2026-09-29 | 2026-10-05 | 273, 297 |  | days |
| 299 | 3.4.1-09 | Publicar el aviso específico de adquisiciones de la terminal de pasajeros y recibir ofertas hasta la apertura | 32d | 2026-10-08 | 2026-11-20 | 239, 298 | start no earlier than 2026-10-08 | days |
| 300 | 3.4.1-10 | Evaluar las ofertas de la terminal de pasajeros y elaborar el informe de evaluación | 44d | 2026-11-23 | 2027-01-21 | 299 |  | days |
| 301 | 3.4.1-11 | Obtener la no objeción del BID a la evaluación y a la recomendación de adjudicación de la terminal de pasajeros | 5d | 2027-01-22 | 2027-01-28 | 300 |  | days |
| 302 | 3.4.1-12 | Adjudicar y firmar el contrato de obra de la terminal de pasajeros | 61d | 2027-01-29 | 2027-04-23 | 301 |  | days |
| 303 | 3.4.1-13 | Preparar los documentos de licitación del SSEI | 45d | 2026-08-05 | 2026-10-06 | 27FF, 232, 266 |  | days |
| 304 | 3.4.1-14 | Obtener la no objeción del BID a los documentos de licitación del SSEI | 5d | 2026-10-07 | 2026-10-13 | 273, 303 |  | days |
| 305 | 3.4.1-15 | Publicar el aviso específico de adquisiciones del SSEI y recibir ofertas hasta la apertura | 31d | 2027-01-06 | 2027-02-17 | 239, 304 | start no earlier than 2027-01-06 | days |
| 306 | 3.4.1-16 | Evaluar las ofertas del SSEI y elaborar el informe de evaluación | 28d | 2027-02-18 | 2027-03-29 | 305 |  | days |
| 307 | 3.4.1-17 | Obtener la no objeción del BID a la evaluación y a la recomendación de adjudicación del SSEI | 5d | 2027-03-30 | 2027-04-05 | 306 |  | days |
| 308 | 3.4.1-18 | Adjudicar y firmar el contrato de obra del SSEI | 38d | 2027-04-06 | 2027-05-27 | 307 |  | days |
| 309 | 3.4.1-19 | Preparar los documentos de licitación de las plataformas y la calle Foxtrot | 45d | 2026-09-09 | 2026-11-10 | 15FF, 232, 266 |  | days |
| 310 | 3.4.1-20 | Obtener la no objeción del BID a los documentos de licitación de las plataformas y la calle Foxtrot | 5d | 2026-11-11 | 2026-11-17 | 273, 309 |  | days |
| 311 | 3.4.1-21 | Publicar el aviso específico de adquisiciones de las plataformas y la calle Foxtrot y recibir ofertas hasta la apertura | 31d | 2027-03-12 | 2027-04-23 | 239, 310 | start no earlier than 2027-03-12 | days |
| 312 | 3.4.1-22 | Evaluar las ofertas de las plataformas y la calle Foxtrot y elaborar el informe de evaluación | 25d | 2027-04-26 | 2027-05-28 | 311 |  | days |
| 313 | 3.4.1-23 | Obtener la no objeción del BID a la evaluación y a la recomendación de adjudicación de las plataformas y la calle Foxtrot | 5d | 2027-05-31 | 2027-06-04 | 312 |  | days |
| 314 | 3.4.1-24 | Adjudicar y firmar el contrato de obra de las plataformas y la calle Foxtrot | 34d | 2027-06-07 | 2027-07-22 | 313 |  | days |

Notes:
- 269: Ejecutado por el personal de la UEP, sin costo adicional en la línea base.
- 270: Fase: Planificación. Responsable: Especialista socioambiental. PERT: O 12, M 15, P 18 días laborables; De = 15.0. Técnica: Juicio de expertos.
- 271: Fase: Planificación. Responsable: Especialista socioambiental. PERT: O 16, M 20, P 24 días laborables; De = 20.0. Técnica: Juicio de expertos.
- 272: Fase: Planificación. Responsable: BID. PERT: O 5, M 10, P 15 días laborables; De = 10.0. Técnica: Juicio de expertos.
- 273: Fase: Planificación. Responsable: Especialista socioambiental. PERT: O 4, M 5, P 6 días laborables; De = 5.0. Técnica: Juicio de expertos.
- 274: Fase: Planificación. Responsable: Especialista socioambiental. PERT: O 20, M 30, P 45 días laborables; De = 30.8. Técnica: Juicio de expertos.
- 275: Fase: Planificación. Responsable: Coordinador del Programa. PERT: O 3, M 5, P 10 días laborables; De = 5.5. Técnica: Juicio de expertos.
- 276: Ejecutado por el personal de la UEP, sin costo adicional en la línea base.
- 277: Fase: Planificación. Responsable: Especialista técnico. PERT: O 16, M 20, P 24 días laborables; De = 20.0. Técnica: Juicio de expertos.
- 278: Fase: Planificación. Responsable: Coordinador general de obra. PERT: O 24, M 30, P 36 días laborables; De = 30.0. Técnica: Análoga.
- 279: Fase: Planificación. Responsable: Coordinador general de obra. PERT: O 12, M 15, P 18 días laborables; De = 15.0. Técnica: Juicio de expertos.
- 280: Fase: Planificación. Responsable: AAC. PERT: O 10, M 20, P 40 días laborables; De = 21.7. Técnica: Juicio de expertos.
- 281: Ejecutado por el personal de la UEP, sin costo adicional en la línea base.
- 282: Fase: Planificación. Responsable: Especialista socioambiental. PERT: O 12, M 15, P 18 días laborables; De = 15.0. Técnica: Juicio de expertos.
- 283: Fase: Ejecución. Responsable: Especialista socioambiental. PERT: O 16, M 20, P 24 días laborables; De = 20.0. Técnica: Juicio de expertos.
- 284: Fase: Monitoreo y control. Responsable: Especialista socioambiental. Nivel de esfuerzo: su duración se fijó para terminar con 1.2.4-06, 1.3.3-05, 1.4.2-04, 1.5.3-04, 1.6.2-04.
- 285: Ejecutado por el personal de la UEP, sin costo adicional en la línea base.
- 286: Fase: Planificación. Responsable: Especialista socioambiental. PERT: O 8, M 10, P 12 días laborables; De = 10.0. Técnica: Juicio de expertos.
- 287: Fase: Monitoreo y control. Responsable: Especialista socioambiental. Nivel de esfuerzo: su duración se fijó para terminar con 1.2.4-06, 1.3.3-05, 1.4.2-04, 1.5.3-04, 1.6.2-04.
- 288: Fase: Cierre. Responsable: Especialista socioambiental. PERT: O 12, M 15, P 18 días laborables; De = 15.0. Técnica: Juicio de expertos.
- 290: Ejecutado por el personal de la UEP, sin costo adicional en la línea base.
- 291: Fase: Planificación. Responsable: Especialista de adquisiciones. PERT: O 35, M 45, P 55 días laborables; De = 45.0. Técnica: Dato del programa.
- 292: Fase: Planificación. Responsable: BID. PERT: O 3, M 5, P 7 días laborables; De = 5.0. Técnica: Dato del programa.
- 293: Fase: Ejecución. Responsable: Especialista de adquisiciones. PERT: O 31, M 31, P 31 días laborables; De = 31.0. Técnica: Dato del programa.
- 294: Fase: Ejecución. Responsable: Especialista de adquisiciones. PERT: O 23, M 29, P 35 días laborables; De = 29.0. Técnica: Calibrada.
- 295: Fase: Ejecución. Responsable: BID. PERT: O 3, M 5, P 7 días laborables; De = 5.0. Técnica: Dato del programa.
- 296: Fase: Ejecución. Responsable: CEPA. PERT: O 31, M 39, P 47 días laborables; De = 39.0. Técnica: Calibrada.
- 297: Fase: Planificación. Responsable: Especialista de adquisiciones. PERT: O 35, M 45, P 55 días laborables; De = 45.0. Técnica: Dato del programa.
- 298: Fase: Planificación. Responsable: BID. PERT: O 3, M 5, P 7 días laborables; De = 5.0. Técnica: Dato del programa.
- 299: Fase: Ejecución. Responsable: Especialista de adquisiciones. PERT: O 32, M 32, P 32 días laborables; De = 32.0. Técnica: Dato del programa.
- 300: Fase: Ejecución. Responsable: Especialista de adquisiciones. PERT: O 35, M 44, P 53 días laborables; De = 44.0. Técnica: Calibrada.
- 301: Fase: Ejecución. Responsable: BID. PERT: O 3, M 5, P 7 días laborables; De = 5.0. Técnica: Dato del programa.
- 302: Fase: Ejecución. Responsable: CEPA. PERT: O 49, M 61, P 73 días laborables; De = 61.0. Técnica: Calibrada.
- 303: Fase: Planificación. Responsable: Especialista de adquisiciones. PERT: O 35, M 45, P 55 días laborables; De = 45.0. Técnica: Dato del programa.
- 304: Fase: Planificación. Responsable: BID. PERT: O 3, M 5, P 7 días laborables; De = 5.0. Técnica: Dato del programa.
- 305: Fase: Ejecución. Responsable: Especialista de adquisiciones. PERT: O 25, M 31, P 37 días laborables; De = 31.0. Técnica: Análoga.
- 306: Fase: Ejecución. Responsable: Especialista de adquisiciones. PERT: O 22, M 28, P 34 días laborables; De = 28.0. Técnica: Calibrada.
- 307: Fase: Ejecución. Responsable: BID. PERT: O 3, M 5, P 7 días laborables; De = 5.0. Técnica: Dato del programa.
- 308: Fase: Ejecución. Responsable: CEPA. PERT: O 30, M 38, P 46 días laborables; De = 38.0. Técnica: Calibrada.
- 309: Fase: Planificación. Responsable: Especialista de adquisiciones. PERT: O 35, M 45, P 55 días laborables; De = 45.0. Técnica: Dato del programa.
- 310: Fase: Planificación. Responsable: BID. PERT: O 3, M 5, P 7 días laborables; De = 5.0. Técnica: Dato del programa.
- 311: Fase: Ejecución. Responsable: Especialista de adquisiciones. PERT: O 25, M 31, P 37 días laborables; De = 31.0. Técnica: Análoga.
- 312: Fase: Ejecución. Responsable: Especialista de adquisiciones. PERT: O 20, M 25, P 30 días laborables; De = 25.0. Técnica: Calibrada.
- 313: Fase: Ejecución. Responsable: BID. PERT: O 3, M 5, P 7 días laborables; De = 5.0. Técnica: Dato del programa.
- 314: Fase: Ejecución. Responsable: CEPA. PERT: O 27, M 34, P 41 días laborables; De = 34.0. Técnica: Calibrada.

| ID | WBS | Task | Duration | Start | Finish | Predecessors | Constraint | OPS_TaskDurationUnit |
| --- | --- | --- | --- | --- | --- | --- | --- | --- |
| 315 | 3.4.2 | **Contrato de supervisión firmado** | 321d | 2026-05-06 | 2027-07-28 |  |  | days |
| 316 | 3.4.2-01 | Preparar los términos de referencia, la solicitud de expresiones de interés y la lista corta de la supervisión del estacionamiento y el sistema solar | 17d | 2026-05-06 | 2026-05-28 | 264 | start no earlier than 2026-05-06 | days |
| 317 | 3.4.2-02 | Obtener la no objeción del BID a los términos de referencia y a la lista corta de la supervisión del estacionamiento y el sistema solar | 5d | 2026-05-29 | 2026-06-04 | 316 |  | days |
| 318 | 3.4.2-03 | Invitar a las firmas de la lista corta y recibir las propuestas de la supervisión del estacionamiento y el sistema solar | 40d | 2026-06-05 | 2026-07-30 | 317 |  | days |
| 319 | 3.4.2-04 | Evaluar las propuestas técnicas y económicas y negociar el contrato de la supervisión del estacionamiento y el sistema solar | 124d | 2026-07-31 | 2027-01-20 | 318 |  | days |
| 320 | 3.4.2-05 | Obtener la no objeción del BID al informe de evaluación combinado y al contrato negociado de la supervisión del estacionamiento y el sistema solar | 5d | 2027-01-21 | 2027-01-27 | 319 |  | days |
| 321 | 3.4.2-06 | Firmar el contrato de supervisión del estacionamiento y el sistema solar | 5d | 2027-01-28 | 2027-02-03 | 320 |  | days |
| 322 | 3.4.2-07 | Preparar los términos de referencia, la solicitud de expresiones de interés y la lista corta de la supervisión de la terminal | 49d | 2026-10-13 | 2026-12-18 | 239, 266, 273 | start no earlier than 2026-10-13 | days |
| 323 | 3.4.2-08 | Obtener la no objeción del BID a los términos de referencia y a la lista corta de la supervisión de la terminal | 5d | 2026-12-21 | 2026-12-25 | 322 |  | days |
| 324 | 3.4.2-09 | Invitar a las firmas de la lista corta y recibir las propuestas de la supervisión de la terminal | 30d | 2026-12-28 | 2027-02-05 | 323 |  | days |
| 325 | 3.4.2-10 | Evaluar las propuestas técnicas y económicas y negociar el contrato de la supervisión de la terminal | 60d | 2027-02-08 | 2027-04-30 | 324 |  | days |
| 326 | 3.4.2-11 | Obtener la no objeción del BID al informe de evaluación combinado y al contrato negociado de la supervisión de la terminal | 5d | 2027-05-03 | 2027-05-07 | 325 |  | days |
| 327 | 3.4.2-12 | Firmar el contrato de supervisión de la terminal | 8d | 2027-05-10 | 2027-05-19 | 326 |  | days |
| 328 | 3.4.2-13 | Preparar los términos de referencia, la solicitud de expresiones de interés y la lista corta de la supervisión del SSEI | 47d | 2026-11-11 | 2027-01-14 | 239, 266, 273 | start no earlier than 2026-11-11 | days |
| 329 | 3.4.2-14 | Obtener la no objeción del BID a los términos de referencia y a la lista corta de la supervisión del SSEI | 5d | 2027-01-15 | 2027-01-21 | 328 |  | days |
| 330 | 3.4.2-15 | Invitar a las firmas de la lista corta y recibir las propuestas de la supervisión del SSEI | 30d | 2027-01-22 | 2027-03-04 | 329 |  | days |
| 331 | 3.4.2-16 | Evaluar las propuestas técnicas y económicas y negociar el contrato de la supervisión del SSEI | 57d | 2027-03-05 | 2027-05-24 | 330 |  | days |
| 332 | 3.4.2-17 | Obtener la no objeción del BID al informe de evaluación combinado y al contrato negociado de la supervisión del SSEI | 5d | 2027-05-25 | 2027-05-31 | 331 |  | days |
| 333 | 3.4.2-18 | Firmar el contrato de supervisión del SSEI | 8d | 2027-06-01 | 2027-06-10 | 332 |  | days |
| 334 | 3.4.2-19 | Preparar los términos de referencia, la solicitud de expresiones de interés y la lista corta de la supervisión de las plataformas y la calle Foxtrot | 40d | 2027-01-19 | 2027-03-15 | 239, 266, 273 | start no earlier than 2027-01-19 | days |
| 335 | 3.4.2-20 | Obtener la no objeción del BID a los términos de referencia y a la lista corta de la supervisión de las plataformas y la calle Foxtrot | 5d | 2027-03-16 | 2027-03-22 | 334 |  | days |
| 336 | 3.4.2-21 | Invitar a las firmas de la lista corta y recibir las propuestas de la supervisión de las plataformas y la calle Foxtrot | 30d | 2027-03-23 | 2027-05-03 | 335 |  | days |
| 337 | 3.4.2-22 | Evaluar las propuestas técnicas y económicas y negociar el contrato de la supervisión de las plataformas y la calle Foxtrot | 49d | 2027-05-04 | 2027-07-09 | 336 |  | days |
| 338 | 3.4.2-23 | Obtener la no objeción del BID al informe de evaluación combinado y al contrato negociado de la supervisión de las plataformas y la calle Foxtrot | 5d | 2027-07-12 | 2027-07-16 | 337 |  | days |
| 339 | 3.4.2-24 | Firmar el contrato de supervisión de las plataformas y la calle Foxtrot | 8d | 2027-07-19 | 2027-07-28 | 338 |  | days |

Notes:
- 315: Ejecutado por el personal de la UEP, sin costo adicional en la línea base.
- 316: Fase: Planificación. Responsable: Especialista de adquisiciones. PERT: O 14, M 17, P 20 días laborables; De = 17.0. Técnica: Dato del programa.
- 317: Fase: Planificación. Responsable: BID. PERT: O 3, M 5, P 7 días laborables; De = 5.0. Técnica: Dato del programa.
- 318: Fase: Ejecución. Responsable: Especialista de adquisiciones. PERT: O 30, M 40, P 50 días laborables; De = 40.0. Técnica: Juicio de expertos.
- 319: Fase: Ejecución. Responsable: Especialista de adquisiciones. PERT: O 99, M 124, P 149 días laborables; De = 124.0. Técnica: Calibrada.
- 320: Fase: Ejecución. Responsable: BID. PERT: O 3, M 5, P 7 días laborables; De = 5.0. Técnica: Dato del programa.
- 321: Fase: Ejecución. Responsable: CEPA. PERT: O 3, M 5, P 7 días laborables; De = 5.0. Técnica: Juicio de expertos.
- 322: Fase: Planificación. Responsable: Especialista de adquisiciones. PERT: O 39, M 49, P 59 días laborables; De = 49.0. Técnica: Calibrada.
- 323: Fase: Planificación. Responsable: BID. PERT: O 3, M 5, P 7 días laborables; De = 5.0. Técnica: Dato del programa.
- 324: Fase: Ejecución. Responsable: Especialista de adquisiciones. PERT: O 24, M 30, P 36 días laborables; De = 30.0. Técnica: Juicio de expertos.
- 325: Fase: Ejecución. Responsable: Especialista de adquisiciones. PERT: O 48, M 60, P 72 días laborables; De = 60.0. Técnica: Calibrada.
- 326: Fase: Ejecución. Responsable: BID. PERT: O 3, M 5, P 7 días laborables; De = 5.0. Técnica: Dato del programa.
- 327: Fase: Ejecución. Responsable: CEPA. PERT: O 6, M 8, P 10 días laborables; De = 8.0. Técnica: Juicio de expertos.
- 328: Fase: Planificación. Responsable: Especialista de adquisiciones. PERT: O 38, M 47, P 56 días laborables; De = 47.0. Técnica: Calibrada.
- 329: Fase: Planificación. Responsable: BID. PERT: O 3, M 5, P 7 días laborables; De = 5.0. Técnica: Dato del programa.
- 330: Fase: Ejecución. Responsable: Especialista de adquisiciones. PERT: O 24, M 30, P 36 días laborables; De = 30.0. Técnica: Juicio de expertos.
- 331: Fase: Ejecución. Responsable: Especialista de adquisiciones. PERT: O 46, M 57, P 68 días laborables; De = 57.0. Técnica: Calibrada.
- 332: Fase: Ejecución. Responsable: BID. PERT: O 3, M 5, P 7 días laborables; De = 5.0. Técnica: Dato del programa.
- 333: Fase: Ejecución. Responsable: CEPA. PERT: O 6, M 8, P 10 días laborables; De = 8.0. Técnica: Juicio de expertos.
- 334: Fase: Planificación. Responsable: Especialista de adquisiciones. PERT: O 32, M 40, P 48 días laborables; De = 40.0. Técnica: Calibrada.
- 335: Fase: Planificación. Responsable: BID. PERT: O 3, M 5, P 7 días laborables; De = 5.0. Técnica: Dato del programa.
- 336: Fase: Ejecución. Responsable: Especialista de adquisiciones. PERT: O 24, M 30, P 36 días laborables; De = 30.0. Técnica: Juicio de expertos.
- 337: Fase: Ejecución. Responsable: Especialista de adquisiciones. PERT: O 39, M 49, P 59 días laborables; De = 49.0. Técnica: Calibrada.
- 338: Fase: Ejecución. Responsable: BID. PERT: O 3, M 5, P 7 días laborables; De = 5.0. Técnica: Dato del programa.
- 339: Fase: Ejecución. Responsable: CEPA. PERT: O 6, M 8, P 10 días laborables; De = 8.0. Técnica: Juicio de expertos.

| ID | WBS | Task | Duration | Start | Finish | Predecessors | Constraint | OPS_TaskDurationUnit |
| --- | --- | --- | --- | --- | --- | --- | --- | --- |
| 340 | 3.4.3 | **Contratos de consultorías del Componente II firmados** | 147d | 2026-11-02 | 2027-05-25 |  |  | days |
| 341 | 3.4.3-01 | Incluir las consultorías del Componente II en el Plan de Adquisiciones | 15d | 2026-11-02 | 2026-11-20 | 266 | start no earlier than 2026-11-02 | days |
| 342 | 3.4.3-02 | Obtener la no objeción del BID a la actualización del PA con el Componente II | 5d | 2026-11-23 | 2026-11-27 | 341 |  | days |
| 343 | 3.4.3-03 | Preparar los términos de referencia, la solicitud de expresiones de interés y la lista corta para el plan estratégico del sistema aeronáutico (producto 2.1) | 40d | 2026-11-30 | 2027-01-22 | 239, 342 |  | days |
| 344 | 3.4.3-04 | Obtener la no objeción del BID a los términos de referencia y a la lista corta del plan estratégico del sistema aeronáutico (producto 2.1) | 5d | 2027-01-25 | 2027-01-29 | 343 |  | days |
| 345 | 3.4.3-05 | Invitar a las firmas de la lista corta y recibir las propuestas para el plan estratégico del sistema aeronáutico (producto 2.1) | 30d | 2027-02-01 | 2027-03-12 | 344 |  | days |
| 346 | 3.4.3-06 | Evaluar las propuestas y negociar el contrato para el plan estratégico del sistema aeronáutico (producto 2.1) | 35d | 2027-03-15 | 2027-04-30 | 345 |  | days |
| 347 | 3.4.3-07 | Obtener la no objeción del BID al informe de evaluación y al contrato negociado del plan estratégico del sistema aeronáutico (producto 2.1) | 7d | 2027-05-03 | 2027-05-11 | 346 |  | days |
| 348 | 3.4.3-08 | Firmar el contrato de consultoría para el plan estratégico del sistema aeronáutico (producto 2.1) | 10d | 2027-05-12 | 2027-05-25 | 347 |  | days |
| 349 | 3.4.3-09 | Preparar los términos de referencia, la solicitud de expresiones de interés y la lista corta para la actualización del Plan Maestro y la capacitación (productos 2.2.1 y 2.2.2) | 40d | 2026-11-30 | 2027-01-22 | 239, 342 |  | days |
| 350 | 3.4.3-10 | Obtener la no objeción del BID a los términos de referencia y a la lista corta de la actualización del Plan Maestro y la capacitación (productos 2.2.1 y 2.2.2) | 5d | 2027-01-25 | 2027-01-29 | 349 |  | days |
| 351 | 3.4.3-11 | Invitar a las firmas de la lista corta y recibir las propuestas para la actualización del Plan Maestro y la capacitación (productos 2.2.1 y 2.2.2) | 30d | 2027-02-01 | 2027-03-12 | 350 |  | days |
| 352 | 3.4.3-12 | Evaluar las propuestas y negociar el contrato para la actualización del Plan Maestro y la capacitación (productos 2.2.1 y 2.2.2) | 35d | 2027-03-15 | 2027-04-30 | 351 |  | days |
| 353 | 3.4.3-13 | Obtener la no objeción del BID al informe de evaluación y al contrato negociado de la actualización del Plan Maestro y la capacitación (productos 2.2.1 y 2.2.2) | 7d | 2027-05-03 | 2027-05-11 | 352 |  | days |
| 354 | 3.4.3-14 | Firmar el contrato de consultoría para la actualización del Plan Maestro y la capacitación (productos 2.2.1 y 2.2.2) | 10d | 2027-05-12 | 2027-05-25 | 353 |  | days |
| 355 | 3.4.3-15 | Preparar los términos de referencia y la solicitud de expresiones de interés para la estrategia y capacitación BIM (productos 2.3.1 y 2.3.2) | 20d | 2026-11-30 | 2026-12-25 | 239, 342 |  | days |
| 356 | 3.4.3-16 | Publicar la solicitud de expresiones de interés y conformar la lista corta nacional para la estrategia y capacitación BIM (productos 2.3.1 y 2.3.2) | 20d | 2026-12-28 | 2027-01-22 | 355 |  | days |
| 357 | 3.4.3-17 | Invitar a las firmas de la lista corta y recibir las propuestas para la estrategia y capacitación BIM (productos 2.3.1 y 2.3.2) | 20d | 2027-01-25 | 2027-02-19 | 356 |  | days |
| 358 | 3.4.3-18 | Evaluar las propuestas y negociar el contrato para la estrategia y capacitación BIM (productos 2.3.1 y 2.3.2) | 20d | 2027-02-22 | 2027-03-19 | 357 |  | days |
| 359 | 3.4.3-19 | Adjudicar y firmar el contrato de consultoría para la estrategia y capacitación BIM (productos 2.3.1 y 2.3.2) | 10d | 2027-03-22 | 2027-04-02 | 358 |  | days |
| 360 | 3.4.3-20 | Preparar los términos de referencia, la solicitud de expresiones de interés y la lista corta para el estudio de conectividad terrestre (producto 2.4) | 40d | 2026-11-30 | 2027-01-22 | 239, 342 |  | days |
| 361 | 3.4.3-21 | Obtener la no objeción del BID a los términos de referencia y a la lista corta del estudio de conectividad terrestre (producto 2.4) | 5d | 2027-01-25 | 2027-01-29 | 360 |  | days |
| 362 | 3.4.3-22 | Invitar a las firmas de la lista corta y recibir las propuestas para el estudio de conectividad terrestre (producto 2.4) | 30d | 2027-02-01 | 2027-03-12 | 361 |  | days |
| 363 | 3.4.3-23 | Evaluar las propuestas y negociar el contrato para el estudio de conectividad terrestre (producto 2.4) | 35d | 2027-03-15 | 2027-04-30 | 362 |  | days |
| 364 | 3.4.3-24 | Obtener la no objeción del BID al informe de evaluación y al contrato negociado del estudio de conectividad terrestre (producto 2.4) | 7d | 2027-05-03 | 2027-05-11 | 363 |  | days |
| 365 | 3.4.3-25 | Firmar el contrato de consultoría para el estudio de conectividad terrestre (producto 2.4) | 10d | 2027-05-12 | 2027-05-25 | 364 |  | days |
| 366 | 3.4.3-26 | Preparar los términos de referencia y la solicitud de expresiones de interés para el estudio de diversificación de destinos (producto 2.5) | 20d | 2026-11-30 | 2026-12-25 | 239, 342 |  | days |
| 367 | 3.4.3-27 | Publicar la solicitud de expresiones de interés y conformar la lista corta nacional para el estudio de diversificación de destinos (producto 2.5) | 20d | 2026-12-28 | 2027-01-22 | 366 |  | days |
| 368 | 3.4.3-28 | Invitar a las firmas de la lista corta y recibir las propuestas para el estudio de diversificación de destinos (producto 2.5) | 20d | 2027-01-25 | 2027-02-19 | 367 |  | days |
| 369 | 3.4.3-29 | Evaluar las propuestas y negociar el contrato para el estudio de diversificación de destinos (producto 2.5) | 20d | 2027-02-22 | 2027-03-19 | 368 |  | days |
| 370 | 3.4.3-30 | Adjudicar y firmar el contrato de consultoría para el estudio de diversificación de destinos (producto 2.5) | 10d | 2027-03-22 | 2027-04-02 | 369 |  | days |
| 371 | 3.4.3-31 | Preparar los términos de referencia y la solicitud de expresiones de interés para la auditoría y capacitación para la certificación EDGE (productos 2.6.1 y 2.6.2) | 20d | 2026-11-30 | 2026-12-25 | 239, 342 |  | days |
| 372 | 3.4.3-32 | Publicar la solicitud de expresiones de interés y conformar la lista corta nacional para la auditoría y capacitación para la certificación EDGE (productos 2.6.1 y 2.6.2) | 20d | 2026-12-28 | 2027-01-22 | 371 |  | days |
| 373 | 3.4.3-33 | Invitar a las firmas de la lista corta y recibir las propuestas para la auditoría y capacitación para la certificación EDGE (productos 2.6.1 y 2.6.2) | 20d | 2027-01-25 | 2027-02-19 | 372 |  | days |
| 374 | 3.4.3-34 | Evaluar las propuestas y negociar el contrato para la auditoría y capacitación para la certificación EDGE (productos 2.6.1 y 2.6.2) | 20d | 2027-02-22 | 2027-03-19 | 373 |  | days |
| 375 | 3.4.3-35 | Adjudicar y firmar el contrato de consultoría para la auditoría y capacitación para la certificación EDGE (productos 2.6.1 y 2.6.2) | 10d | 2027-03-22 | 2027-04-02 | 374 |  | days |
| 376 | 3.4.3-36 | Preparar los términos de referencia y la solicitud de expresiones de interés para el estudio de separación de flujos (producto 2.7) | 20d | 2026-11-30 | 2026-12-25 | 239, 342 |  | days |
| 377 | 3.4.3-37 | Publicar la solicitud de expresiones de interés y conformar la lista corta nacional para el estudio de separación de flujos (producto 2.7) | 20d | 2026-12-28 | 2027-01-22 | 376 |  | days |
| 378 | 3.4.3-38 | Invitar a las firmas de la lista corta y recibir las propuestas para el estudio de separación de flujos (producto 2.7) | 20d | 2027-01-25 | 2027-02-19 | 377 |  | days |
| 379 | 3.4.3-39 | Evaluar las propuestas y negociar el contrato para el estudio de separación de flujos (producto 2.7) | 20d | 2027-02-22 | 2027-03-19 | 378 |  | days |
| 380 | 3.4.3-40 | Adjudicar y firmar el contrato de consultoría para el estudio de separación de flujos (producto 2.7) | 10d | 2027-03-22 | 2027-04-02 | 379 |  | days |
| 381 | 3.4.3-41 | Preparar los términos de referencia y la solicitud de expresiones de interés para el estudio de movilidad interna (producto 2.8) | 20d | 2026-11-30 | 2026-12-25 | 239, 342 |  | days |
| 382 | 3.4.3-42 | Publicar la solicitud de expresiones de interés y conformar la lista corta nacional para el estudio de movilidad interna (producto 2.8) | 20d | 2026-12-28 | 2027-01-22 | 381 |  | days |
| 383 | 3.4.3-43 | Invitar a las firmas de la lista corta y recibir las propuestas para el estudio de movilidad interna (producto 2.8) | 20d | 2027-01-25 | 2027-02-19 | 382 |  | days |
| 384 | 3.4.3-44 | Evaluar las propuestas y negociar el contrato para el estudio de movilidad interna (producto 2.8) | 20d | 2027-02-22 | 2027-03-19 | 383 |  | days |
| 385 | 3.4.3-45 | Adjudicar y firmar el contrato de consultoría para el estudio de movilidad interna (producto 2.8) | 10d | 2027-03-22 | 2027-04-02 | 384 |  | days |
| 386 | 3.4.3-46 | Preparar los términos de referencia y la solicitud de expresiones de interés para el programa de igualdad e inclusión (producto 2.9) | 20d | 2026-11-30 | 2026-12-25 | 239, 342 |  | days |
| 387 | 3.4.3-47 | Publicar la solicitud de expresiones de interés y conformar la lista corta nacional para el programa de igualdad e inclusión (producto 2.9) | 20d | 2026-12-28 | 2027-01-22 | 386 |  | days |
| 388 | 3.4.3-48 | Invitar a las firmas de la lista corta y recibir las propuestas para el programa de igualdad e inclusión (producto 2.9) | 20d | 2027-01-25 | 2027-02-19 | 387 |  | days |
| 389 | 3.4.3-49 | Evaluar las propuestas y negociar el contrato para el programa de igualdad e inclusión (producto 2.9) | 20d | 2027-02-22 | 2027-03-19 | 388 |  | days |
| 390 | 3.4.3-50 | Adjudicar y firmar el contrato de consultoría para el programa de igualdad e inclusión (producto 2.9) | 10d | 2027-03-22 | 2027-04-02 | 389 |  | days |

Notes:
- 340: Ejecutado por el personal de la UEP, sin costo adicional en la línea base.
- 341: Fase: Planificación. Responsable: Especialista de adquisiciones. PERT: O 10, M 15, P 20 días laborables; De = 15.0. Técnica: Juicio de expertos.
- 342: Fase: Planificación. Responsable: BID. PERT: O 3, M 5, P 7 días laborables; De = 5.0. Técnica: Dato del programa.
- 343: Fase: Planificación. Responsable: Especialista de adquisiciones. PERT: O 32, M 40, P 48 días laborables; De = 40.0. Técnica: Juicio de expertos.
- 344: Fase: Planificación. Responsable: BID. PERT: O 3, M 5, P 7 días laborables; De = 5.0. Técnica: Dato del programa.
- 345: Fase: Ejecución. Responsable: Especialista de adquisiciones. PERT: O 24, M 30, P 36 días laborables; De = 30.0. Técnica: Juicio de expertos.
- 346: Fase: Ejecución. Responsable: Especialista de adquisiciones. PERT: O 28, M 35, P 42 días laborables; De = 35.0. Técnica: Juicio de expertos.
- 347: Fase: Ejecución. Responsable: BID. PERT: O 5, M 7, P 9 días laborables; De = 7.0. Técnica: Juicio de expertos.
- 348: Fase: Ejecución. Responsable: CEPA. PERT: O 8, M 10, P 12 días laborables; De = 10.0. Técnica: Juicio de expertos.
- 349: Fase: Planificación. Responsable: Especialista de adquisiciones. PERT: O 32, M 40, P 48 días laborables; De = 40.0. Técnica: Juicio de expertos.
- 350: Fase: Planificación. Responsable: BID. PERT: O 3, M 5, P 7 días laborables; De = 5.0. Técnica: Dato del programa.
- 351: Fase: Ejecución. Responsable: Especialista de adquisiciones. PERT: O 24, M 30, P 36 días laborables; De = 30.0. Técnica: Juicio de expertos.
- 352: Fase: Ejecución. Responsable: Especialista de adquisiciones. PERT: O 28, M 35, P 42 días laborables; De = 35.0. Técnica: Juicio de expertos.
- 353: Fase: Ejecución. Responsable: BID. PERT: O 5, M 7, P 9 días laborables; De = 7.0. Técnica: Juicio de expertos.
- 354: Fase: Ejecución. Responsable: CEPA. PERT: O 8, M 10, P 12 días laborables; De = 10.0. Técnica: Juicio de expertos.
- 355: Fase: Planificación. Responsable: Especialista de adquisiciones. PERT: O 16, M 20, P 24 días laborables; De = 20.0. Técnica: Juicio de expertos.
- 356: Fase: Ejecución. Responsable: Especialista de adquisiciones. PERT: O 16, M 20, P 24 días laborables; De = 20.0. Técnica: Juicio de expertos.
- 357: Fase: Ejecución. Responsable: Especialista de adquisiciones. PERT: O 16, M 20, P 24 días laborables; De = 20.0. Técnica: Juicio de expertos.
- 358: Fase: Ejecución. Responsable: Especialista de adquisiciones. PERT: O 16, M 20, P 24 días laborables; De = 20.0. Técnica: Juicio de expertos.
- 359: Fase: Ejecución. Responsable: CEPA. PERT: O 8, M 10, P 12 días laborables; De = 10.0. Técnica: Juicio de expertos.
- 360: Fase: Planificación. Responsable: Especialista de adquisiciones. PERT: O 32, M 40, P 48 días laborables; De = 40.0. Técnica: Juicio de expertos.
- 361: Fase: Planificación. Responsable: BID. PERT: O 3, M 5, P 7 días laborables; De = 5.0. Técnica: Dato del programa.
- 362: Fase: Ejecución. Responsable: Especialista de adquisiciones. PERT: O 24, M 30, P 36 días laborables; De = 30.0. Técnica: Juicio de expertos.
- 363: Fase: Ejecución. Responsable: Especialista de adquisiciones. PERT: O 28, M 35, P 42 días laborables; De = 35.0. Técnica: Juicio de expertos.
- 364: Fase: Ejecución. Responsable: BID. PERT: O 5, M 7, P 9 días laborables; De = 7.0. Técnica: Juicio de expertos.
- 365: Fase: Ejecución. Responsable: CEPA. PERT: O 8, M 10, P 12 días laborables; De = 10.0. Técnica: Juicio de expertos.
- 366: Fase: Planificación. Responsable: Especialista de adquisiciones. PERT: O 16, M 20, P 24 días laborables; De = 20.0. Técnica: Juicio de expertos.
- 367: Fase: Ejecución. Responsable: Especialista de adquisiciones. PERT: O 16, M 20, P 24 días laborables; De = 20.0. Técnica: Juicio de expertos.
- 368: Fase: Ejecución. Responsable: Especialista de adquisiciones. PERT: O 16, M 20, P 24 días laborables; De = 20.0. Técnica: Juicio de expertos.
- 369: Fase: Ejecución. Responsable: Especialista de adquisiciones. PERT: O 16, M 20, P 24 días laborables; De = 20.0. Técnica: Juicio de expertos.
- 370: Fase: Ejecución. Responsable: CEPA. PERT: O 8, M 10, P 12 días laborables; De = 10.0. Técnica: Juicio de expertos.
- 371: Fase: Planificación. Responsable: Especialista de adquisiciones. PERT: O 16, M 20, P 24 días laborables; De = 20.0. Técnica: Juicio de expertos.
- 372: Fase: Ejecución. Responsable: Especialista de adquisiciones. PERT: O 16, M 20, P 24 días laborables; De = 20.0. Técnica: Juicio de expertos.
- 373: Fase: Ejecución. Responsable: Especialista de adquisiciones. PERT: O 16, M 20, P 24 días laborables; De = 20.0. Técnica: Juicio de expertos.
- 374: Fase: Ejecución. Responsable: Especialista de adquisiciones. PERT: O 16, M 20, P 24 días laborables; De = 20.0. Técnica: Juicio de expertos.
- 375: Fase: Ejecución. Responsable: CEPA. PERT: O 8, M 10, P 12 días laborables; De = 10.0. Técnica: Juicio de expertos.
- 376: Fase: Planificación. Responsable: Especialista de adquisiciones. PERT: O 16, M 20, P 24 días laborables; De = 20.0. Técnica: Juicio de expertos.
- 377: Fase: Ejecución. Responsable: Especialista de adquisiciones. PERT: O 16, M 20, P 24 días laborables; De = 20.0. Técnica: Juicio de expertos.
- 378: Fase: Ejecución. Responsable: Especialista de adquisiciones. PERT: O 16, M 20, P 24 días laborables; De = 20.0. Técnica: Juicio de expertos.
- 379: Fase: Ejecución. Responsable: Especialista de adquisiciones. PERT: O 16, M 20, P 24 días laborables; De = 20.0. Técnica: Juicio de expertos.
- 380: Fase: Ejecución. Responsable: CEPA. PERT: O 8, M 10, P 12 días laborables; De = 10.0. Técnica: Juicio de expertos.
- 381: Fase: Planificación. Responsable: Especialista de adquisiciones. PERT: O 16, M 20, P 24 días laborables; De = 20.0. Técnica: Juicio de expertos.
- 382: Fase: Ejecución. Responsable: Especialista de adquisiciones. PERT: O 16, M 20, P 24 días laborables; De = 20.0. Técnica: Juicio de expertos.
- 383: Fase: Ejecución. Responsable: Especialista de adquisiciones. PERT: O 16, M 20, P 24 días laborables; De = 20.0. Técnica: Juicio de expertos.
- 384: Fase: Ejecución. Responsable: Especialista de adquisiciones. PERT: O 16, M 20, P 24 días laborables; De = 20.0. Técnica: Juicio de expertos.
- 385: Fase: Ejecución. Responsable: CEPA. PERT: O 8, M 10, P 12 días laborables; De = 10.0. Técnica: Juicio de expertos.
- 386: Fase: Planificación. Responsable: Especialista de adquisiciones. PERT: O 16, M 20, P 24 días laborables; De = 20.0. Técnica: Juicio de expertos.
- 387: Fase: Ejecución. Responsable: Especialista de adquisiciones. PERT: O 16, M 20, P 24 días laborables; De = 20.0. Técnica: Juicio de expertos.
- 388: Fase: Ejecución. Responsable: Especialista de adquisiciones. PERT: O 16, M 20, P 24 días laborables; De = 20.0. Técnica: Juicio de expertos.
- 389: Fase: Ejecución. Responsable: Especialista de adquisiciones. PERT: O 16, M 20, P 24 días laborables; De = 20.0. Técnica: Juicio de expertos.
- 390: Fase: Ejecución. Responsable: CEPA. PERT: O 8, M 10, P 12 días laborables; De = 10.0. Técnica: Juicio de expertos.

| ID | WBS | Task | Duration | Start | Finish | Predecessors | Constraint | OPS_TaskDurationUnit |
| --- | --- | --- | --- | --- | --- | --- | --- | --- |
| 391 | 3.4.4 | **Contratos de la unidad ejecutora, evaluación y auditoría firmados** | 908d | 2026-02-02 | 2029-07-25 |  |  | days |
| 392 | 3.4.4-01 | Preparar los términos de referencia y la convocatoria de los siete consultores clave de la UEP | 18d | 2026-02-02 | 2026-02-25 |  | start no earlier than 2026-02-02 | days |
| 393 | 3.4.4-02 | Obtener la no objeción del BID a los términos de referencia de los siete consultores clave | 5d | 2026-02-26 | 2026-03-04 | 392 |  | days |
| 394 | 3.4.4-03 | Recibir los currículos, evaluar y seleccionar a los siete consultores clave | 20d | 2026-03-05 | 2026-04-01 | 393 |  | days |
| 395 | 3.4.4-04 | Obtener la no objeción del BID a la selección de los siete consultores clave | 5d | 2026-04-02 | 2026-04-08 | 394 |  | days |
| 396 | 3.4.4-05 | Firmar los contratos de los siete consultores clave de la UEP | 5d | 2026-04-09 | 2026-04-15 | 395 |  | days |
| 397 | 3.4.4-06 | Preparar los términos de referencia y la convocatoria del técnico de apoyo administrativo | 10d | 2026-07-15 | 2026-07-28 | 232, 266 | start no earlier than 2026-07-14 | days |
| 398 | 3.4.4-07 | Obtener la no objeción del BID a los términos de referencia del técnico de apoyo | 5d | 2026-07-29 | 2026-08-04 | 397 |  | days |
| 399 | 3.4.4-08 | Recibir los currículos, evaluar y seleccionar al técnico de apoyo | 20d | 2026-08-05 | 2026-09-01 | 398 |  | days |
| 400 | 3.4.4-09 | Obtener la no objeción del BID a la selección del técnico de apoyo | 5d | 2026-09-02 | 2026-09-08 | 399 |  | days |
| 401 | 3.4.4-10 | Firmar el contrato del técnico de apoyo administrativo | 5d | 2026-09-09 | 2026-09-15 | 400 |  | days |
| 402 | 3.4.4-11 | Preparar los términos de referencia y la lista corta de la auditoría externa año 1 | 5d | 2027-04-01 | 2027-04-07 | 239, 264 | start no earlier than 2027-04-01 | days |
| 403 | 3.4.4-12 | Obtener la no objeción del BID a los términos de referencia de la auditoría año 1 | 5d | 2027-04-08 | 2027-04-14 | 402 |  | days |
| 404 | 3.4.4-13 | Invitar a las firmas, recibir y evaluar las propuestas de la auditoría año 1 por menor costo | 5d | 2027-04-15 | 2027-04-21 | 403 |  | days |
| 405 | 3.4.4-14 | Obtener la no objeción del BID a la recomendación de adjudicación de la auditoría año 1 | 5d | 2027-04-22 | 2027-04-28 | 404 |  | days |
| 406 | 3.4.4-15 | Firmar el contrato de la auditoría externa año 1 | 5d | 2027-04-29 | 2027-05-05 | 405 |  | days |
| 407 | 3.4.4-16 | Preparar los términos de referencia y la lista corta de la auditoría externa año 2 | 30d | 2027-09-13 | 2027-10-22 | 239, 266 | start no earlier than 2027-09-13 | days |
| 408 | 3.4.4-17 | Obtener la no objeción del BID a los términos de referencia de la auditoría año 2 | 5d | 2027-10-25 | 2027-10-29 | 407 |  | days |
| 409 | 3.4.4-18 | Invitar a las firmas, recibir y evaluar las propuestas de la auditoría año 2 por menor costo | 25d | 2027-11-01 | 2027-12-03 | 408 |  | days |
| 410 | 3.4.4-19 | Obtener la no objeción del BID a la recomendación de adjudicación de la auditoría año 2 | 5d | 2027-12-06 | 2027-12-10 | 409 |  | days |
| 411 | 3.4.4-20 | Firmar el contrato de la auditoría externa año 2 | 8d | 2027-12-13 | 2027-12-22 | 410 |  | days |
| 412 | 3.4.4-21 | Preparar los términos de referencia y la lista corta de la auditoría externa año 3 | 30d | 2028-09-12 | 2028-10-23 | 239, 266 | start no earlier than 2028-09-12 | days |
| 413 | 3.4.4-22 | Obtener la no objeción del BID a los términos de referencia de la auditoría año 3 | 5d | 2028-10-24 | 2028-10-30 | 412 |  | days |
| 414 | 3.4.4-23 | Invitar a las firmas, recibir y evaluar las propuestas de la auditoría año 3 por menor costo | 25d | 2028-10-31 | 2028-12-04 | 413 |  | days |
| 415 | 3.4.4-24 | Obtener la no objeción del BID a la recomendación de adjudicación de la auditoría año 3 | 5d | 2028-12-05 | 2028-12-11 | 414 |  | days |
| 416 | 3.4.4-25 | Firmar el contrato de la auditoría externa año 3 | 8d | 2028-12-12 | 2028-12-21 | 415 |  | days |
| 417 | 3.4.4-26 | Preparar los términos de referencia y la lista corta de la auditoría externa año 4 | 30d | 2029-04-16 | 2029-05-25 | 239, 266 | start no earlier than 2029-04-16 | days |
| 418 | 3.4.4-27 | Obtener la no objeción del BID a los términos de referencia de la auditoría año 4 | 5d | 2029-05-28 | 2029-06-01 | 417 |  | days |
| 419 | 3.4.4-28 | Invitar a las firmas, recibir y evaluar las propuestas de la auditoría año 4 por menor costo | 25d | 2029-06-04 | 2029-07-06 | 418 |  | days |
| 420 | 3.4.4-29 | Obtener la no objeción del BID a la recomendación de adjudicación de la auditoría año 4 | 5d | 2029-07-09 | 2029-07-13 | 419 |  | days |
| 421 | 3.4.4-30 | Firmar el contrato de la auditoría externa año 4 | 8d | 2029-07-16 | 2029-07-25 | 420 |  | days |
| 422 | 3.4.4-31 | Preparar los términos de referencia y la solicitud de expresiones de interés de la evaluación de medio término | 17d | 2027-11-08 | 2027-11-30 | 239, 266, 455 |  | days |
| 423 | 3.4.4-32 | Publicar la solicitud de expresiones de interés y conformar la lista corta nacional de la evaluación de medio término | 17d | 2027-12-01 | 2027-12-23 | 422 |  | days |
| 424 | 3.4.4-33 | Invitar a las firmas de la lista corta y recibir las propuestas de la evaluación de medio término | 20d | 2027-12-24 | 2028-01-20 | 423 |  | days |
| 425 | 3.4.4-34 | Evaluar las propuestas y negociar el contrato de la evaluación de medio término | 33d | 2028-01-21 | 2028-03-07 | 424 |  | days |
| 426 | 3.4.4-35 | Adjudicar y firmar el contrato de la evaluación de medio término | 10d | 2028-03-08 | 2028-03-21 | 425 |  | days |
| 427 | 3.4.4-36 | Preparar los términos de referencia y la solicitud de expresiones de interés de la evaluación final | 17d | 2028-12-25 | 2029-01-16 | 239, 266, 50FS-60d |  | days |
| 428 | 3.4.4-37 | Publicar la solicitud de expresiones de interés y conformar la lista corta nacional de la evaluación final | 17d | 2029-01-17 | 2029-02-08 | 427 |  | days |
| 429 | 3.4.4-38 | Invitar a las firmas de la lista corta y recibir las propuestas de la evaluación final | 20d | 2029-02-09 | 2029-03-08 | 428 |  | days |
| 430 | 3.4.4-39 | Evaluar las propuestas y negociar el contrato de la evaluación final | 34d | 2029-03-09 | 2029-04-25 | 429 |  | days |
| 431 | 3.4.4-40 | Adjudicar y firmar el contrato de la evaluación final | 10d | 2029-04-26 | 2029-05-09 | 430 |  | days |

Notes:
- 391: Ejecutado por el personal de la UEP, sin costo adicional en la línea base.
- 392: Fase: Inicio. Responsable: CEPA. PERT: O 14, M 18, P 22 días laborables; De = 18.0. Técnica: Dato del programa.
- 393: Fase: Inicio. Responsable: BID. PERT: O 3, M 5, P 7 días laborables; De = 5.0. Técnica: Dato del programa.
- 394: Fase: Inicio. Responsable: CEPA. PERT: O 16, M 20, P 24 días laborables; De = 20.0. Técnica: Dato del programa.
- 395: Fase: Inicio. Responsable: BID. PERT: O 3, M 5, P 7 días laborables; De = 5.0. Técnica: Dato del programa.
- 396: Fase: Inicio. Responsable: CEPA. PERT: O 3, M 5, P 7 días laborables; De = 5.0. Técnica: Dato del programa.
- 397: Fase: Planificación. Responsable: Especialista de adquisiciones. PERT: O 8, M 10, P 12 días laborables; De = 10.0. Técnica: Dato del programa.
- 398: Fase: Planificación. Responsable: BID. PERT: O 3, M 5, P 7 días laborables; De = 5.0. Técnica: Dato del programa.
- 399: Fase: Ejecución. Responsable: Especialista de adquisiciones. PERT: O 16, M 20, P 24 días laborables; De = 20.0. Técnica: Dato del programa.
- 400: Fase: Ejecución. Responsable: BID. PERT: O 3, M 5, P 7 días laborables; De = 5.0. Técnica: Dato del programa.
- 401: Fase: Ejecución. Responsable: CEPA. PERT: O 3, M 5, P 7 días laborables; De = 5.0. Técnica: Dato del programa.
- 402: Fase: Planificación. Responsable: Especialista de adquisiciones. PERT: O 3, M 5, P 7 días laborables; De = 5.0. Técnica: Dato del programa.
- 403: Fase: Planificación. Responsable: BID. PERT: O 3, M 5, P 7 días laborables; De = 5.0. Técnica: Dato del programa.
- 404: Fase: Ejecución. Responsable: Especialista de adquisiciones. PERT: O 3, M 5, P 7 días laborables; De = 5.0. Técnica: Dato del programa.
- 405: Fase: Ejecución. Responsable: BID. PERT: O 3, M 5, P 7 días laborables; De = 5.0. Técnica: Dato del programa.
- 406: Fase: Ejecución. Responsable: CEPA. PERT: O 3, M 5, P 7 días laborables; De = 5.0. Técnica: Dato del programa.
- 407: Fase: Planificación. Responsable: Especialista de adquisiciones. PERT: O 24, M 30, P 36 días laborables; De = 30.0. Técnica: Juicio de expertos.
- 408: Fase: Planificación. Responsable: BID. PERT: O 3, M 5, P 7 días laborables; De = 5.0. Técnica: Dato del programa.
- 409: Fase: Ejecución. Responsable: Especialista de adquisiciones. PERT: O 20, M 25, P 30 días laborables; De = 25.0. Técnica: Juicio de expertos.
- 410: Fase: Ejecución. Responsable: BID. PERT: O 3, M 5, P 7 días laborables; De = 5.0. Técnica: Dato del programa.
- 411: Fase: Ejecución. Responsable: CEPA. PERT: O 6, M 8, P 10 días laborables; De = 8.0. Técnica: Juicio de expertos.
- 412: Fase: Planificación. Responsable: Especialista de adquisiciones. PERT: O 24, M 30, P 36 días laborables; De = 30.0. Técnica: Juicio de expertos.
- 413: Fase: Planificación. Responsable: BID. PERT: O 3, M 5, P 7 días laborables; De = 5.0. Técnica: Dato del programa.
- 414: Fase: Ejecución. Responsable: Especialista de adquisiciones. PERT: O 20, M 25, P 30 días laborables; De = 25.0. Técnica: Juicio de expertos.
- 415: Fase: Ejecución. Responsable: BID. PERT: O 3, M 5, P 7 días laborables; De = 5.0. Técnica: Dato del programa.
- 416: Fase: Ejecución. Responsable: CEPA. PERT: O 6, M 8, P 10 días laborables; De = 8.0. Técnica: Juicio de expertos.
- 417: Fase: Planificación. Responsable: Especialista de adquisiciones. PERT: O 24, M 30, P 36 días laborables; De = 30.0. Técnica: Juicio de expertos.
- 418: Fase: Planificación. Responsable: BID. PERT: O 3, M 5, P 7 días laborables; De = 5.0. Técnica: Dato del programa.
- 419: Fase: Ejecución. Responsable: Especialista de adquisiciones. PERT: O 20, M 25, P 30 días laborables; De = 25.0. Técnica: Juicio de expertos.
- 420: Fase: Ejecución. Responsable: BID. PERT: O 3, M 5, P 7 días laborables; De = 5.0. Técnica: Dato del programa.
- 421: Fase: Ejecución. Responsable: CEPA. PERT: O 6, M 8, P 10 días laborables; De = 8.0. Técnica: Juicio de expertos.
- 422: Fase: Planificación. Responsable: Especialista de adquisiciones. PERT: O 14, M 17, P 20 días laborables; De = 17.0. Técnica: Dato del programa.
- 423: Fase: Ejecución. Responsable: Especialista de adquisiciones. PERT: O 14, M 17, P 20 días laborables; De = 17.0. Técnica: Calibrada.
- 424: Fase: Ejecución. Responsable: Especialista de adquisiciones. PERT: O 16, M 20, P 24 días laborables; De = 20.0. Técnica: Calibrada.
- 425: Fase: Ejecución. Responsable: Especialista de adquisiciones. PERT: O 26, M 33, P 40 días laborables; De = 33.0. Técnica: Calibrada.
- 426: Fase: Ejecución. Responsable: CEPA. PERT: O 8, M 10, P 12 días laborables; De = 10.0. Técnica: Calibrada.
- 427: Fase: Planificación. Responsable: Especialista de adquisiciones. PERT: O 14, M 17, P 20 días laborables; De = 17.0. Técnica: Dato del programa.
- 428: Fase: Ejecución. Responsable: Especialista de adquisiciones. PERT: O 14, M 17, P 20 días laborables; De = 17.0. Técnica: Calibrada.
- 429: Fase: Ejecución. Responsable: Especialista de adquisiciones. PERT: O 16, M 20, P 24 días laborables; De = 20.0. Técnica: Calibrada.
- 430: Fase: Ejecución. Responsable: Especialista de adquisiciones. PERT: O 27, M 34, P 41 días laborables; De = 34.0. Técnica: Calibrada.
- 431: Fase: Ejecución. Responsable: CEPA. PERT: O 8, M 10, P 12 días laborables; De = 10.0. Técnica: Calibrada.

| ID | WBS | Task | Duration | Start | Finish | Predecessors | Constraint | OPS_TaskDurationUnit |
| --- | --- | --- | --- | --- | --- | --- | --- | --- |
| 432 | 3.5 | **Control financiero, evaluación y cierre** | 966d | 2026-07-20 | 2030-04-01 |  |  | days |
| 433 | 3.5.1 | **Desembolsos justificados e informes financieros presentados** | 808d | 2026-07-20 | 2029-08-22 |  |  | days |
| 434 | 3.5.1-01 | Solicitar el primer desembolso por Anticipo de Fondos con las condiciones previas cumplidas | 10d | 2026-07-20 | 2026-07-31 | 235, 239, 243, 247, 273 |  | days |
| 435 | 3.5.1-02 | Elaborar y presentar al BID el informe semestral de progreso del semestre S2 de 2026 con la solicitud de desembolso | 19d | 2027-01-01 | 2027-01-27 | 434 | start no earlier than 2027-01-01 | days |
| 436 | 3.5.1-03 | Elaborar y presentar al BID el informe semestral de progreso del semestre S1 de 2027 con la solicitud de desembolso | 19d | 2027-07-01 | 2027-07-27 | 435 | start no earlier than 2027-07-01 | days |
| 437 | 3.5.1-04 | Elaborar y presentar al BID el informe semestral de progreso del semestre S2 de 2027 con la solicitud de desembolso | 19d | 2028-01-03 | 2028-01-27 | 436 | start no earlier than 2028-01-03 | days |
| 438 | 3.5.1-05 | Elaborar y presentar al BID el informe semestral de progreso del semestre S1 de 2028 con la solicitud de desembolso | 19d | 2028-07-03 | 2028-07-27 | 437 | start no earlier than 2028-07-03 | days |
| 439 | 3.5.1-06 | Elaborar y presentar al BID el informe semestral de progreso del semestre S2 de 2028 con la solicitud de desembolso | 19d | 2029-01-01 | 2029-01-25 | 438 | start no earlier than 2029-01-01 | days |
| 440 | 3.5.1-07 | Elaborar y presentar al BID el informe semestral de progreso del semestre S1 de 2029 con la solicitud de desembolso | 19d | 2029-07-02 | 2029-07-26 | 439 | start no earlier than 2029-07-02 | days |
| 441 | 3.5.1-08 | Justificar los gastos y tramitar las solicitudes de desembolso del año 2027 | 280d | 2027-01-01 | 2028-01-27 | 434 | start no earlier than 2027-01-01 | days |
| 442 | 3.5.1-09 | Justificar los gastos y tramitar las solicitudes de desembolso del año 2028 | 279d | 2028-01-03 | 2029-01-25 | 434 | start no earlier than 2028-01-03 | days |
| 443 | 3.5.1-10 | Justificar los gastos y tramitar las solicitudes de desembolso del año 2029 | 168d | 2029-01-01 | 2029-08-22 | 434 | start no earlier than 2029-01-01 | days |
| 444 | 3.5.2 | **Auditorías externas emitidas** | 576d | 2027-01-01 | 2029-03-16 |  |  | days |
| 445 | 3.5.2-01 | Preparar los estados financieros del programa del ejercicio 2026 | 20d | 2027-01-01 | 2027-01-28 | 247 | start no earlier than 2027-01-01 | days |
| 446 | 3.5.2-02 | Auditar los estados financieros del programa del ejercicio 2026 | 30d | 2027-05-06 | 2027-06-16 | 406, 445 |  | days |
| 447 | 3.5.2-03 | Presentar al BID los estados financieros auditados del ejercicio 2026 | 5d | 2027-06-17 | 2027-06-23 | 446 |  | days |
| 448 | 3.5.2-04 | Preparar los estados financieros del programa del ejercicio 2027 | 20d | 2028-01-03 | 2028-01-28 | 447 | start no earlier than 2028-01-03 | days |
| 449 | 3.5.2-05 | Auditar los estados financieros del programa del ejercicio 2027 | 30d | 2028-01-31 | 2028-03-10 | 411, 448 |  | days |
| 450 | 3.5.2-06 | Presentar al BID los estados financieros auditados del ejercicio 2027 | 5d | 2028-03-13 | 2028-03-17 | 449 |  | days |
| 451 | 3.5.2-07 | Preparar los estados financieros del programa del ejercicio 2028 | 20d | 2029-01-01 | 2029-01-26 | 450 | start no earlier than 2029-01-01 | days |
| 452 | 3.5.2-08 | Auditar los estados financieros del programa del ejercicio 2028 | 30d | 2029-01-29 | 2029-03-09 | 416, 451 |  | days |
| 453 | 3.5.2-09 | Presentar al BID los estados financieros auditados del ejercicio 2028 | 5d | 2029-03-12 | 2029-03-16 | 452 |  | days |
| 454 | 3.5.3 | **Evaluaciones de medio término y de cierre realizadas** | 534d | 2027-11-01 | 2029-11-15 |  |  | days |
| 455 | 3.5.3-01 | Proyectar en el POA 2028 la fecha del hito de medio término (50% desembolsado o 50% del plazo de desembolsos) | 5d | 2027-11-01 | 2027-11-05 | 256SS |  | days |
| 456 | 3.5.3-02 | Ejecutar la evaluación de medio término: avance físico y financiero y medición temprana de resultados | 85d | 2028-03-22 | 2028-07-18 | 426 |  | days |
| 457 | 3.5.3-03 | Revisar el informe de evaluación de medio término y presentarlo al BID | 10d | 2028-07-19 | 2028-08-01 | 456 |  | days |
| 458 | 3.5.3-04 | Ejecutar la evaluación final de efectividad sin atribución empírica | 126d | 2029-05-10 | 2029-11-01 | 431, 457 |  | days |
| 459 | 3.5.3-05 | Revisar el informe de evaluación final y presentarlo al BID | 10d | 2029-11-02 | 2029-11-15 | 458, 142, 143, 144, 145 |  | days |

Notes:
- 433: Ejecutado por el personal de la UEP, sin costo adicional en la línea base.
- 434: Fase: Ejecución. Responsable: Especialista financiero. PERT: O 8, M 10, P 12 días laborables; De = 10.0. Técnica: Juicio de expertos.
- 435: Fase: Monitoreo y control. Responsable: Especialista de planificación y monitoreo. PERT: O 15, M 20, P 21 días laborables; De = 19.3. Técnica: Dato del programa.
- 436: Fase: Monitoreo y control. Responsable: Especialista de planificación y monitoreo. PERT: O 15, M 20, P 21 días laborables; De = 19.3. Técnica: Dato del programa.
- 437: Fase: Monitoreo y control. Responsable: Especialista de planificación y monitoreo. PERT: O 15, M 20, P 21 días laborables; De = 19.3. Técnica: Dato del programa.
- 438: Fase: Monitoreo y control. Responsable: Especialista de planificación y monitoreo. PERT: O 15, M 20, P 21 días laborables; De = 19.3. Técnica: Dato del programa.
- 439: Fase: Monitoreo y control. Responsable: Especialista de planificación y monitoreo. PERT: O 15, M 20, P 21 días laborables; De = 19.3. Técnica: Dato del programa.
- 440: Fase: Monitoreo y control. Responsable: Especialista de planificación y monitoreo. PERT: O 15, M 20, P 21 días laborables; De = 19.3. Técnica: Dato del programa.
- 441: Fase: Monitoreo y control. Responsable: Especialista financiero. Nivel de esfuerzo: su duración se fijó para terminar con 3.5.1-04.
- 442: Fase: Monitoreo y control. Responsable: Especialista financiero. Nivel de esfuerzo: su duración se fijó para terminar con 3.5.1-06.
- 443: Fase: Monitoreo y control. Responsable: Especialista financiero. Nivel de esfuerzo: su duración se fijó para terminar con 3.5.4-01.
- 444: Costo en la línea base: US$ 0.177 millones, de los cuales US$ 0.013 millones son contingencia.
- 445: Fase: Monitoreo y control. Responsable: Especialista financiero. PERT: O 15, M 20, P 25 días laborables; De = 20.0. Técnica: Juicio de expertos.
- 446: Fase: Monitoreo y control. Responsable: Auditor externo. PERT: O 20, M 30, P 40 días laborables; De = 30.0. Técnica: Juicio de expertos.
- 447: Fase: Monitoreo y control. Responsable: Especialista financiero. PERT: O 3, M 5, P 7 días laborables; De = 5.0. Técnica: Dato del programa.
- 448: Fase: Monitoreo y control. Responsable: Especialista financiero. PERT: O 15, M 20, P 25 días laborables; De = 20.0. Técnica: Juicio de expertos.
- 449: Fase: Monitoreo y control. Responsable: Auditor externo. PERT: O 20, M 30, P 40 días laborables; De = 30.0. Técnica: Juicio de expertos.
- 450: Fase: Monitoreo y control. Responsable: Especialista financiero. PERT: O 3, M 5, P 7 días laborables; De = 5.0. Técnica: Dato del programa.
- 451: Fase: Monitoreo y control. Responsable: Especialista financiero. PERT: O 15, M 20, P 25 días laborables; De = 20.0. Técnica: Juicio de expertos.
- 452: Fase: Monitoreo y control. Responsable: Auditor externo. PERT: O 20, M 30, P 40 días laborables; De = 30.0. Técnica: Juicio de expertos.
- 453: Fase: Monitoreo y control. Responsable: Especialista financiero. PERT: O 3, M 5, P 7 días laborables; De = 5.0. Técnica: Dato del programa.
- 454: Costo en la línea base: US$ 0.160 millones, de los cuales US$ 0.008 millones son contingencia.
- 455: Fase: Planificación. Responsable: Especialista de planificación y monitoreo. PERT: O 3, M 5, P 7 días laborables; De = 5.0. Técnica: Juicio de expertos.
- 456: Fase: Monitoreo y control. Responsable: Firma consultora. PERT: O 65, M 86, P 100 días laborables; De = 84.8. Técnica: Dato del programa.
- 457: Fase: Monitoreo y control. Responsable: Especialista de planificación y monitoreo. PERT: O 8, M 10, P 12 días laborables; De = 10.0. Técnica: Juicio de expertos.
- 458: Fase: Cierre. Responsable: Firma consultora. PERT: O 100, M 129, P 140 días laborables; De = 126.0. Técnica: Dato del programa.
- 459: Fase: Cierre. Responsable: Especialista de planificación y monitoreo. PERT: O 8, M 10, P 12 días laborables; De = 10.0. Técnica: Juicio de expertos.

| ID | WBS | Task | Type | Duration | Start | Finish | Predecessors | OPS_TaskDurationUnit | OPS_MilestoneKind |
| --- | --- | --- | --- | --- | --- | --- | --- | --- | --- |
| 460 | 3.5.4 | **Informe de terminación y cierre administrativo del programa** |  | 178d | 2029-07-26 | 2030-04-01 |  | days |  |
| 461 | 3.5.4-01 | Liquidar los contratos de obra, supervisión y consultoría |  | 20d | 2029-07-26 | 2029-08-22 | 153, 161, 166, 174, 179, 186, 193, 201, 206, 213, 220, 227, 142, 143, 144, 145 | days |  |
| 462 | 3.5.4-02 | Justificar los anticipos pendientes y tramitar el último desembolso |  | 20d | 2029-11-16 | 2029-12-13 | 461, 459 | days |  |
| 463 | 3.5.4-03 | Auditar y presentar al BID los estados financieros finales del programa |  | 42d | 2029-12-14 | 2030-02-11 | 421, 462, 453 | days |  |
| 464 | 3.5.4-04 | Preparar y entregar al BID los insumos de la UEP para el informe de terminación del programa, con las lecciones aprendidas |  | 25d | 2030-02-12 | 2030-03-18 | 288, 459, 463, 440 | days |  |
| 465 | 3.5.4-05 | Devolver los saldos no justificados al BID y cerrar la cuenta especial |  | 15d | 2030-02-12 | 2030-03-04 | 463 | days |  |
| 466 | 3.5.4-06 | Cerrar el expediente administrativo del programa y archivar los documentos |  | 10d | 2030-03-19 | 2030-04-01 | 464, 465, 118, 120, 121, 122, 125, 127, 128, 129, 135, 136, 261, 267, 284, 401, 441, 442, 443 | days |  |
| 467 | Hitos | **Hitos del programa** |  | 1012d | 2026-05-15 | 2030-04-01 |  | days |  |
| 468 | H.1 | Unidad Ejecutora conformada | milestone | 0d | 2026-05-15 | 2026-05-15 | 235 | days | FINISH |
| 469 | H.2 | Condiciones previas al primer desembolso cumplidas (ROP, convenio, cuenta) | milestone | 0d | 2026-07-10 | 2026-07-10 | 239, 243, 247 | days | FINISH |
| 470 | H.3 | Contratos de obra y de supervisión firmados | milestone | 0d | 2027-07-28 | 2027-07-28 | 296, 302, 308, 314, 321, 327, 333, 339 | days | FINISH |
| 471 | H.4 | Protocolo de seguridad operacional aprobado por la AAC | milestone | 0d | 2027-03-11 | 2027-03-11 | 280 | days | FINISH |
| 472 | H.5 | SSEI reubicado y en funcionamiento | milestone | 0d | 2028-02-15 | 2028-02-15 | 114 | days | FINISH |
| 473 | H.6 | Plataforma de posiciones remotas concluida | milestone | 0d | 2028-08-22 | 2028-08-22 | 69 | days | FINISH |
| 474 | H.7 | Terminal ampliada concluida y equipada | milestone | 0d | 2029-03-16 | 2029-03-16 | 50, 55 | days | FINISH |
| 475 | H.8 | Estacionamiento con sistema solar concluido | milestone | 0d | 2028-05-31 | 2028-05-31 | 97, 102 | days | FINISH |
| 476 | H.9 | Obras recibidas (planos de obra ejecutada y actas aprobados) | milestone | 0d | 2029-07-05 | 2029-07-05 | 142, 143, 144, 145 | days | FINISH |
| 477 | H.10 | Cierre administrativo del programa | milestone | 0d | 2030-04-01 | 2030-04-01 | 466 | days | FINISH |

Notes:
- 460: Costo en la línea base: US$ 0.059 millones, de los cuales US$ 0.004 millones son contingencia.
- 461: Fase: Cierre. Responsable: Especialista de adquisiciones. PERT: O 16, M 20, P 24 días laborables; De = 20.0. Técnica: Juicio de expertos.
- 462: Fase: Cierre. Responsable: Especialista financiero. PERT: O 16, M 20, P 24 días laborables; De = 20.0. Técnica: Juicio de expertos.
- 463: Fase: Cierre. Responsable: Auditor externo. PERT: O 30, M 40, P 60 días laborables; De = 41.7. Técnica: Juicio de expertos.
- 464: Fase: Cierre. Responsable: Coordinador del Programa. PERT: O 20, M 25, P 30 días laborables; De = 25.0. Técnica: Juicio de expertos.
- 465: Fase: Cierre. Responsable: Especialista financiero. PERT: O 12, M 15, P 18 días laborables; De = 15.0. Técnica: Juicio de expertos.
- 466: Fase: Cierre. Responsable: Técnico de apoyo administrativo. PERT: O 8, M 10, P 12 días laborables; De = 10.0. Técnica: Juicio de expertos.
