code,name,package,phase,owner,dur,deps,start,finish,float,critical,budget,base,contingency,profile,cost_elements
1.1.1-01,"Revisar técnicamente el expediente de diseño de la terminal (planos, especificaciones y cantidades)",1.1.1,Planificación,Especialista en ingeniería aeroportuaria,31,3.1.1-05,2026-05-18,2026-06-29,41,,0.00000000,0.00000000,0.00000000,lineal,
1.1.1-02,"Ajustar los diseños y el presupuesto de la terminal con la firma diseñadora (FIDS, CUTE, puentes de abordaje y observaciones de la revisión)",1.1.1,Planificación,Firma consultora,32,1.1.1-01,2026-06-30,2026-08-12,41,,0.00000000,0.00000000,0.00000000,lineal,
1.1.1-03,Revisar la coordinación del modelo BIM de la terminal con los planos y las especificaciones,1.1.1,Planificación,Especialista en ingeniería aeroportuaria,16,"1.1.1-01:II+10,1.1.1-02:FF+0",2026-07-22,2026-08-12,57,,0.00000000,0.00000000,0.00000000,lineal,
1.1.1-04,Aprobar el expediente de diseño de la terminal,1.1.1,Planificación,CEPA,11,"1.1.1-02,1.1.1-03,1.2.5-01,1.2.5-02",2026-09-04,2026-09-18,41,,0.00000000,0.00000000,0.00000000,lineal,
1.1.1-05,Emitir la no objeción del BID a las especificaciones técnicas y los planos de la licitación de la terminal,1.1.1,Planificación,BID,6,1.1.1-04,2026-09-21,2026-09-28,41,,0.00000000,0.00000000,0.00000000,lineal,
1.1.1-06,Elaborar el diseño final de la fachada sur de la terminal (tres salas de espera y sus puentes de abordaje) en el modelo BIM,1.1.1,Ejecución,Contratista de obra,62,3.4.1-12:FI+10,2027-05-10,2027-08-03,124,,0.00000000,0.00000000,0.00000000,lineal,
1.1.1-07,Revisar con la supervisión el diseño de la fachada sur y validar su integración con el diseño de la fachada norte,1.1.1,Monitoreo y control,Firma de supervisión,16,"1.1.1-06,1.7.1-01",2027-08-04,2027-08-25,124,,0.00000000,0.00000000,0.00000000,lineal,
1.1.1-08,Aprobar el diseño de la fachada sur de la terminal,1.1.1,Planificación,CEPA,5,1.1.1-07,2027-08-26,2027-09-01,124,,0.00000000,0.00000000,0.00000000,lineal,
1.1.2-01,Realizar sondeos geotécnicos en las tres posiciones remotas y verificar el diseño de pavimentos,1.1.2,Planificación,Firma consultora,32,3.1.1-05,2026-05-18,2026-06-30,134,,0.00000000,0.00000000,0.00000000,lineal,
1.1.2-02,"Revisar técnicamente los diseños de plataformas, calle Foxtrot, drenaje y ayudas visuales",1.1.2,Planificación,Especialista en ingeniería aeroportuaria,31,"1.1.1-01,3.1.1-05",2026-06-30,2026-08-11,82,,0.00000000,0.00000000,0.00000000,lineal,
1.1.2-03,Revisar con la AAC la geometría del lado aire y el plan de fases de las obras,1.1.2,Planificación,AAC,22,1.1.2-02,2026-08-12,2026-09-10,82,,0.00000000,0.00000000,0.00000000,lineal,
1.1.2-04,Ajustar los diseños y el presupuesto de plataformas y calle Foxtrot con la firma diseñadora,1.1.2,Planificación,Firma consultora,26,"1.1.2-01,1.1.2-03",2026-09-11,2026-10-16,82,,0.00000000,0.00000000,0.00000000,lineal,
1.1.2-05,Aprobar los diseños de plataformas y calle Foxtrot,1.1.2,Planificación,CEPA,11,1.1.2-04,2026-10-19,2026-11-02,82,,0.00000000,0.00000000,0.00000000,lineal,
1.1.2-06,Emitir la no objeción del BID a las especificaciones técnicas y los planos de la licitación de plataformas y Foxtrot,1.1.2,Planificación,BID,6,1.1.2-05,2026-11-03,2026-11-10,82,,0.00000000,0.00000000,0.00000000,lineal,
1.1.3-01,"Revisar técnicamente el expediente de diseño del estacionamiento (estructura, circulaciones y accesibilidad universal)",1.1.3,Planificación,Especialista en ingeniería aeroportuaria,32,3.1.1-05,2026-05-18,2026-06-30,161,,0.00000000,0.00000000,0.00000000,lineal,
1.1.3-02,Revisar el diseño del sistema fotovoltaico y su conexión eléctrica,1.1.3,Planificación,Especialista en ingeniería aeroportuaria,13,1.1.3-01:II+10,2026-06-01,2026-06-17,201,,0.00000000,0.00000000,0.00000000,lineal,
1.1.3-03,Ajustar los diseños y el presupuesto del estacionamiento con la firma diseñadora,1.1.3,Planificación,Firma consultora,22,"1.1.3-01,1.1.3-02",2026-07-01,2026-07-30,192,,0.00000000,0.00000000,0.00000000,lineal,
1.1.3-04,Aprobar el expediente de diseño del estacionamiento,1.1.3,Planificación,CEPA,11,1.1.3-03,2026-07-31,2026-08-14,192,,0.00000000,0.00000000,0.00000000,lineal,
1.1.3-05,Emitir la no objeción del BID a las especificaciones técnicas y los planos de la licitación del estacionamiento,1.1.3,Planificación,BID,6,1.1.3-04,2026-08-17,2026-08-24,192,,0.00000000,0.00000000,0.00000000,lineal,
1.1.4-01,Revisar técnicamente el diseño del edificio del SSEI y de sus vías de acceso,1.1.4,Planificación,Especialista en ingeniería aeroportuaria,21,"1.1.3-01,3.1.1-05",2026-07-01,2026-07-29,161,,0.00000000,0.00000000,0.00000000,lineal,
1.1.4-02,"Validar con el SSEI y la AAC el emplazamiento, los tiempos de respuesta y la continuidad del servicio",1.1.4,Planificación,AAC,16,1.1.4-01,2026-07-30,2026-08-20,161,,0.00000000,0.00000000,0.00000000,lineal,
1.1.4-03,Ajustar el diseño del SSEI con la firma diseñadora,1.1.4,Planificación,Firma consultora,16,1.1.4-02,2026-08-21,2026-09-11,161,,0.00000000,0.00000000,0.00000000,lineal,
1.1.4-04,Aprobar el diseño del SSEI,1.1.4,Planificación,CEPA,11,1.1.4-03,2026-09-14,2026-09-28,161,,0.00000000,0.00000000,0.00000000,lineal,
1.1.4-05,Emitir la no objeción del BID a las especificaciones técnicas y los planos de la licitación del SSEI,1.1.4,Planificación,BID,6,1.1.4-04,2026-09-29,2026-10-06,161,,0.00000000,0.00000000,0.00000000,lineal,
1.2.1-01,"Movilizar al contratista e instalar cerramientos, accesos y obras provisionales con la terminal en operación",1.2.1,Ejecución,Contratista de obra,31,"1.1.1-05,1.7.1-01:II+5,1.7.3-02,3.3.2-04,3.4.1-12:FI+10,3.4.2-12,3.3.1-06",2027-05-27,2027-07-08,32,,0.63885423,0.59408878,0.04476545,lineal,T1 72%; T3 28%
1.2.1-02,"Ejecutar la demolición, el movimiento de tierra y la cimentación de la terminal",1.2.1,Ejecución,Contratista de obra,78,1.2.1-01,2027-07-09,2027-10-26,32,,6.59919148,6.13677650,0.46241498,lineal,T1 72%; T3 28%
1.2.1-03,Construir la estructura de concreto de los niveles 1 a 3 de la terminal,1.2.1,Ejecución,Contratista de obra,133,1.2.1-02:II+40,2027-09-03,2028-03-07,32,,11.25246753,10.46399070,0.78847683,lineal,T1 72%; T3 28%
1.2.1-04,Montar la estructura metálica y la cubierta de la terminal,1.2.1,Ejecución,Contratista de obra,77,1.2.1-03:II+95,2028-01-14,2028-05-01,32,,6.51458647,6.05809988,0.45648659,lineal,T1 72%; T3 28%
1.2.1-05,Instalar las fachadas de vidrio y los cerramientos exteriores de la terminal,1.2.1,Ejecución,Contratista de obra,82,"1.2.1-04:II+30,1.1.1-08",2028-02-25,2028-06-19,62,,6.93761156,6.45148299,0.48612857,lineal,T1 72%; T3 28%
1.2.2-01,"Construir las divisiones, la mampostería liviana y los cielos de los tres niveles",1.2.2,Ejecución,Contratista de obra,96,1.2.1-04:II+40,2028-03-10,2028-07-21,32,,3.62070262,3.41940178,0.20130084,lineal,T1 100%
1.2.2-02,"Aplicar los acabados de pisos y paredes de las seis salas de espera, los pasillos, los locales y el salón VIP",1.2.2,Ejecución,Contratista de obra,107,"1.2.1-05:II+30,1.2.2-01:II+50",2028-05-19,2028-10-16,32,,4.03557479,3.81120823,0.22436656,lineal,T1 100%
1.2.2-03,Integrar la ampliación con la terminal de la Etapa 1 y habilitar las circulaciones de pasajeros,1.2.2,Ejecución,Contratista de obra,46,1.2.2-02:FF+5,2028-08-21,2028-10-23,83,,1.73492000,1.63846335,0.09645665,lineal,T1 100%
1.2.3-01,"Instalar las redes eléctricas, de agua, de drenaje y los ductos de climatización por nivel",1.2.3,Ejecución,Contratista de obra,116,"1.2.1-03:II+60,1.2.2-01:FF+10",2028-02-25,2028-08-04,50,,9.29945165,8.78242841,0.51702324,lineal,T1 100%
1.2.3-02,"Instalar la subestación, los tableros, la planta de emergencia y los equipos de climatización",1.2.3,Ejecución,Contratista de obra,78,"1.2.1-04,1.2.3-01:II+40",2028-05-02,2028-08-17,47,,6.25307956,5.90542600,0.34765356,lineal,T1 100%
1.2.3-03,"Instalar la detección y supresión de incendios, la voz y datos y el control de acceso",1.2.3,Ejecución,Contratista de obra,72,"1.2.2-01:FF+20,1.2.3-01:II+50",2028-05-11,2028-08-18,46,,5.77207344,5.45116246,0.32091098,lineal,T1 100%
1.2.3-04,"Realizar las pruebas, el balanceo y la puesta en marcha de las instalaciones de la terminal",1.2.3,Ejecución,Contratista de obra,52,"1.2.2-02:II+80,1.2.3-02,1.2.3-03",2028-09-08,2028-11-20,32,,0.43519601,0.41100034,0.02419567,lineal,T1 100%
1.2.4-01,Elaborar y aprobar los planos de taller de los seis puentes de abordaje,1.2.4,Ejecución,Contratista de obra,42,"1.2.1-01:FI+30,1.1.1-08",2027-09-02,2027-10-29,124,,0.26938058,0.25130697,0.01807361,lineal,T2 100%
1.2.4-02,Fabricar y entregar en sitio los seis puentes de abordaje,1.2.4,Ejecución,Contratista de obra,132,1.2.4-01,2027-11-01,2028-05-02,124,,11.44867463,10.68054636,0.76812827,lineal,T2 100%
1.2.4-03,Instalar y conectar los seis puentes de abordaje a la terminal y a la plataforma,1.2.4,Ejecución,Contratista de obra,52,"1.2.1-05,1.2.4-02,1.3.1-05",2028-10-24,2029-01-03,0,si,1.48159319,1.38218835,0.09940483,lineal,T2 100%
1.2.4-04,"Instalar el mobiliario, los escáneres de seguridad y los sistemas de información de vuelo",1.2.4,Ejecución,Contratista de obra,37,1.2.2-02:FF+25,2028-09-29,2028-11-20,32,,6.54690407,5.84422177,0.70268230,lineal,T4 88%; T1 12%
1.2.4-05,"Probar los equipos, capacitar al personal de CEPA y entregar los manuales",1.2.4,Ejecución,Contratista de obra,31,"1.2.3-04,1.2.4-03,1.2.4-04",2029-01-04,2029-02-15,0,si,0.47186215,0.43205610,0.03980605,lineal,T2 58%; T4 37%; T1 5%
1.2.4-06,Realizar las pruebas integradas de operación de la terminal con las aerolíneas y las autoridades,1.2.4,Ejecución,CEPA,21,"1.2.2-03,1.2.4-05,1.2.5-03,1.2.5-04,1.3.1-06",2029-02-16,2029-03-16,0,si,0.00000000,0.00000000,0.00000000,lineal,
1.2.5-01,Verificar en los planos aprobados los recorridos de accesibilidad universal y de movilidad del cuidado,1.2.5,Planificación,Especialista socioambiental,16,1.1.1-02,2026-08-13,2026-09-03,41,,0.00000000,0.00000000,0.00000000,lineal,
1.2.5-02,"Verificar en el diseño aprobado las metas EDGE Advanced de energía, agua y carbono incorporado",1.2.5,Planificación,Especialista socioambiental,16,1.1.1-02,2026-08-13,2026-09-03,41,,0.00000000,0.00000000,0.00000000,lineal,
1.2.5-03,Verificar en obra la ejecución de los recorridos accesibles y de los espacios de movilidad del cuidado,1.2.5,Ejecución,Especialista socioambiental,21,"1.2.2-01:II+30,1.2.5-05:FF+5",2028-10-02,2028-10-30,78,,0.00000000,0.00000000,0.00000000,lineal,
1.2.5-04,Verificar en obra las medidas de eficiencia y reunir las evidencias para la auditoría EDGE,1.2.5,Ejecución,Especialista socioambiental,19,"1.2.3-04:FF+5,1.2.5-06",2028-11-01,2028-11-27,58,,0.00000000,0.00000000,0.00000000,lineal,
1.2.5-05,Instalar el transporte vertical accesible y la señalética de los recorridos accesibles y habilitar los espacios de movilidad del cuidado de la terminal,1.2.5,Ejecución,Contratista de obra,62,"1.2.5-01,1.2.2-01:II+30,1.2.2-02:FF+5",2028-07-28,2028-10-23,78,,0.16552532,0.15632258,0.00920274,lineal,T1 100%
1.2.5-06,"Instalar y poner en marcha las medidas de eficiencia EDGE de la terminal (iluminación, griferías y accesorios de bajo consumo, aislamiento y control solar)",1.2.5,Ejecución,Contratista de obra,46,"1.2.5-02,1.2.1-05,1.2.3-02:II+20",2028-06-20,2028-08-22,108,,0.12280911,0.11598127,0.00682784,lineal,T1 100%
1.3.1-01,Movilizar al contratista de plataformas y Foxtrot e instalar el cerramiento y los accesos del lado aire,1.3.1,Ejecución,Contratista de obra,31,"1.1.2-06,1.7.2-01:II+5,1.7.3-04,3.3.2-04,3.4.1-24:FI+10,3.4.2-24,3.3.1-06",2027-08-11,2027-09-22,0,si,0.14623477,0.13939021,0.00684456,lineal,A1 66%; A2 34%
1.3.1-02,"Construir la terracería, el drenaje y la base de la fase 1 de la plataforma de contacto",1.3.1,Ejecución,Contratista de obra,52,1.3.1-01,2027-09-23,2027-12-03,0,si,1.22567825,1.16831007,0.05736818,lineal,A1 66%; A2 34%
1.3.1-03,Colar el pavimento de concreto de la fase 1 de la plataforma de contacto y sellar las juntas,1.3.1,Ejecución,Contratista de obra,87,1.3.1-02,2027-12-06,2028-04-04,0,si,2.05065399,1.95467261,0.09598138,lineal,A1 66%; A2 34%
1.3.1-04,"Construir la terracería, el drenaje y la base de la fase 2 de la plataforma de contacto",1.3.1,Ejecución,Contratista de obra,52,1.3.1-03:FI+5,2028-04-12,2028-06-22,0,si,1.22567825,1.16831007,0.05736818,lineal,A1 66%; A2 34%
1.3.1-05,Colar el pavimento de concreto de la fase 2 de la plataforma de contacto y sellar las juntas,1.3.1,Ejecución,Contratista de obra,87,1.3.1-04,2028-06-23,2028-10-23,0,si,2.05065399,1.95467261,0.09598138,lineal,A1 66%; A2 34%
1.3.1-06,Instalar los ductos y los servicios de apoyo a aeronaves de la plataforma de contacto,1.3.1,Ejecución,Contratista de obra,26,1.3.1-05:FF+5,2028-09-25,2028-10-30,78,,0.61283912,0.58415503,0.02868409,lineal,A1 66%; A2 34%
1.3.2-01,Demoler el SSEI antiguo y despejar la huella de la plataforma remota,1.3.2,Ejecución,Contratista de obra,21,"1.3.1-01,1.6.2-04",2028-02-25,2028-03-24,180,,0.63177812,0.60348427,0.02829386,lineal,A1 100%
1.3.2-02,Ejecutar la terracería y la capa de suelo cemento de 30 cm de la plataforma remota,1.3.2,Ejecución,Contratista de obra,42,1.3.2-01,2028-03-27,2028-05-23,180,,1.26355625,1.20696854,0.05658771,lineal,A1 100%
1.3.2-03,Modificar los canales existentes y construir el drenaje y las obras de paso de la plataforma remota,1.3.2,Ejecución,Contratista de obra,31,1.3.2-02:II+20,2028-04-24,2028-06-05,180,,0.93262485,0.89085773,0.04176712,lineal,A1 100%
1.3.2-04,Colar el pavimento de concreto de 34 cm de la plataforma remota y sellar las juntas,1.3.2,Ejecución,Contratista de obra,58,"1.3.2-02,1.3.2-03",2028-06-06,2028-08-24,180,,1.74491101,1.66676607,0.07814494,lineal,A1 100%
1.3.2-05,Construir el pavimento asfáltico de los márgenes y las zonas de apoyo terrestre de la plataforma remota,1.3.2,Ejecución,Contratista de obra,26,1.3.2-04:FF+5,2028-07-27,2028-08-31,180,,0.45110511,0.42821328,0.02289183,lineal,A2 100%
1.3.3-01,"Instalar los ductos, las torres de iluminación y las luces de la plataforma de contacto",1.3.3,Ejecución,Contratista de obra,41,1.3.1-05:FF+20,2028-09-25,2028-11-20,136,,0.49737990,0.43034346,0.06703645,lineal,A4 100%
1.3.3-02,Instalar las luces de borde y las torres de iluminación de la plataforma remota,1.3.3,Ejecución,Contratista de obra,36,1.3.2-04:FF+10,2028-07-20,2028-09-07,188,,0.43672382,0.37786255,0.05886127,lineal,A4 100%
1.3.3-03,Pintar la señalización horizontal de las plataformas nuevas,1.3.3,Ejecución,Contratista de obra,13,"1.3.1-05:FI+25,1.3.2-05",2028-11-28,2028-12-14,118,,0.15770582,0.13645036,0.02125546,lineal,A4 100%
1.3.3-04,Probar las luces y la señalización de las plataformas nuevas,1.3.3,Ejecución,Contratista de obra,11,"1.3.3-01,1.3.3-02,1.3.3-03",2028-12-15,2028-12-29,118,,0.02228183,0.01927870,0.00300313,lineal,A4 100%
1.3.3-05,Autorizar la puesta en servicio de las plataformas nuevas,1.3.3,Ejecución,AAC,12,1.3.3-04,2029-01-01,2029-01-16,118,,0.00000000,0.00000000,0.00000000,lineal,
1.4.1-01,"Ejecutar la terracería, la base granular y el drenaje de la calle Foxtrot",1.4.1,Ejecución,Contratista de obra,52,"1.3.1-01,1.3.1-03",2028-04-05,2028-06-15,189,,1.42535482,1.35239232,0.07296251,lineal,A3 100%
1.4.1-02,Pavimentar con concreto asfáltico la calle Foxtrot y los hombros,1.4.1,Ejecución,Contratista de obra,31,1.4.1-01,2028-06-16,2028-07-28,189,,0.84973076,0.80623388,0.04349688,lineal,A3 100%
1.4.1-03,Construir la intersección de Foxtrot con la calle de rodaje Alfa en ventanas de cierre nocturnas,1.4.1,Ejecución,Contratista de obra,32,1.4.1-02:II+20,2028-07-14,2028-08-28,189,,0.87714143,0.83224142,0.04490000,lineal,A3 100%
1.4.2-01,"Instalar los ductos, el cableado y las luces de borde y de los puntos de espera de la calle Foxtrot",1.4.2,Ejecución,Contratista de obra,31,"1.4.1-02:II+10,1.4.1-03",2028-08-29,2028-10-10,189,,0.20811469,0.18006517,0.02804952,lineal,A4 100%
1.4.2-02,Pintar la señalización horizontal de la calle Foxtrot,1.4.2,Ejecución,Contratista de obra,10,1.4.1-03,2028-08-29,2028-09-11,210,,0.06713377,0.05808554,0.00904823,lineal,A4 100%
1.4.2-03,Probar el balizamiento y la iluminación de la calle Foxtrot,1.4.2,Ejecución,Contratista de obra,11,"1.4.2-01,1.4.2-02",2028-10-11,2028-10-25,189,,0.00561732,0.00486022,0.00075710,lineal,A4 100%
1.4.2-04,Autorizar la puesta en servicio de la calle Foxtrot,1.4.2,Ejecución,AAC,12,1.4.2-03,2028-10-26,2028-11-10,189,,0.00000000,0.00000000,0.00000000,lineal,
1.5.1-01,Movilizar al contratista e instalar los cerramientos y las obras provisionales del sitio del estacionamiento,1.5.1,Ejecución,Contratista de obra,31,"1.1.3-05,1.7.1-03:II+5,1.7.3-01,3.4.1-06:FI+10,3.4.2-06,3.3.1-06",2027-02-16,2027-03-30,221,,0.66822315,0.60784816,0.06037499,lineal,E1 100%
1.5.1-02,Construir la cimentación del edificio de estacionamiento,1.5.1,Ejecución,Contratista de obra,72,1.5.1-01,2027-03-31,2027-07-08,303,,4.88093431,4.43993441,0.44099990,lineal,E1 100%
1.5.1-03,Construir la estructura de los niveles 1 y 2 del estacionamiento,1.5.1,Ejecución,Contratista de obra,127,1.5.1-02:II+30,2027-05-12,2027-11-04,303,,8.60942580,7.83155097,0.77787483,lineal,E1 100%
1.5.1-04,"Construir la estructura del nivel superior, la cubierta y las rampas del estacionamiento",1.5.1,Ejecución,Contratista de obra,68,1.5.1-03:II+85,2027-09-08,2027-12-10,303,,4.60977129,4.19327139,0.41649991,lineal,E1 100%
1.5.1-05,"Instalar las redes eléctricas, de iluminación, de drenaje y de protección contra incendios del estacionamiento",1.5.1,Ejecución,Contratista de obra,111,"1.5.1-03:II+55,1.5.1-04:FF+15",2027-07-30,2027-12-31,355,,7.52477373,6.84489888,0.67987485,lineal,E1 100%
1.5.1-06,"Construir los acabados, los ascensores, las rutas accesibles y la señalización vial del estacionamiento",1.5.1,Ejecución,Contratista de obra,105,"1.5.1-04:II+45,1.5.1-05:FF+15",2027-11-10,2028-04-04,303,,7.11802920,6.47490434,0.64312486,lineal,E1 100%
1.5.2-01,"Instalar el control de acceso, las barreras, el cobro y la guía de plazas del estacionamiento",1.5.2,Ejecución,Contratista de obra,52,1.5.1-06:II+15,2027-12-01,2028-02-10,336,,2.17073265,1.97460363,0.19612903,lineal,E1 100%
1.5.2-02,Habilitar las áreas de alquiler de vehículos y la gestión del tráfico interno,1.5.2,Ejecución,Contratista de obra,41,1.5.1-06:II+10,2027-11-24,2028-01-19,352,,1.71153921,1.55689901,0.15464019,lineal,E1 100%
1.5.2-03,Probar los sistemas de acceso y tráfico y capacitar al personal de operación,1.5.2,Ejecución,Contratista de obra,20,"1.5.2-01,1.5.2-02",2028-02-11,2028-03-09,336,,0.07923004,0.07207148,0.00715856,lineal,E1 100%
1.5.3-01,Tramitar la autorización de interconexión del sistema solar con la red de distribución,1.5.3,Ejecución,CEPA,38,1.5.1-01:II+60,2027-05-11,2027-07-01,516,,0.00000000,0.00000000,0.00000000,lineal,
1.5.3-02,Instalar las estructuras de soporte y los paneles fotovoltaicos en la cubierta del estacionamiento,1.5.3,Ejecución,Contratista de obra,46,"1.5.1-04:II+50,1.5.1-06:FF+5",2028-02-08,2028-04-11,303,,1.75214663,1.65129171,0.10085492,lineal,E2 100%
1.5.3-03,"Instalar los inversores, el cableado, los tableros y los medidores del sistema solar",1.5.3,Ejecución,Contratista de obra,31,1.5.3-02:FF+10,2028-03-14,2028-04-25,303,,1.18079447,1.11282702,0.06796745,lineal,E2 100%
1.5.3-04,Probar y energizar el sistema solar y entregar el estacionamiento con sus manuales,1.5.3,Ejecución,Contratista de obra,26,"1.5.1-06,1.5.2-03,1.5.3-01,1.5.3-03",2028-04-26,2028-05-31,303,,0.05985594,0.05641059,0.00344535,lineal,E2 100%
1.6.1-01,Movilizar al contratista e instalar los cerramientos y los accesos del sitio del SSEI,1.6.1,Ejecución,Contratista de obra,20,"1.1.4-05,1.7.2-03:II+5,1.7.3-03,3.3.2-04,3.4.1-18:FI+10,3.4.2-18,3.3.1-06",2027-06-18,2027-07-15,180,,0.10677828,0.09243112,0.01434717,lineal,S1 100%
1.6.1-02,Construir la cimentación y la estructura del edificio del SSEI,1.6.1,Ejecución,Contratista de obra,51,1.6.1-01,2027-07-16,2027-09-24,180,,1.41184620,1.22214475,0.18970145,lineal,S1 100%
1.6.1-03,"Construir la cubierta, los cerramientos y las instalaciones del edificio del SSEI",1.6.1,Ejecución,Contratista de obra,56,1.6.1-02:II+30,2027-08-27,2027-11-12,180,,1.55026250,1.34196286,0.20829963,lineal,S1 100%
1.6.1-04,Construir las vías de acceso y de salida a la plataforma del SSEI,1.6.1,Ejecución,Contratista de obra,41,1.6.1-02:II+20,2027-08-13,2027-10-08,195,,1.13501361,0.98250853,0.15250509,lineal,S1 100%
1.6.1-05,"Instalar los acabados, los sistemas de alarma y comunicaciones y probar el edificio del SSEI",1.6.1,Ejecución,Contratista de obra,41,"1.6.1-03:FI-10,1.6.1-04",2027-11-01,2027-12-27,180,,1.13501361,0.98250853,0.15250509,lineal,S1 100%
1.6.2-01,Preparar el plan de traslado y de cobertura del servicio durante el traslado del SSEI,1.6.2,Planificación,CEPA,21,1.6.1-03:II+0,2027-08-27,2027-09-24,258,,0.00000000,0.00000000,0.00000000,lineal,
1.6.2-02,Dar la conformidad a la cobertura de protección contra incendios durante el traslado del SSEI,1.6.2,Ejecución,AAC,11,1.6.2-01,2027-09-27,2027-10-11,258,,0.00000000,0.00000000,0.00000000,lineal,
1.6.2-03,Trasladar al personal y los vehículos del SSEI al edificio nuevo ya equipado,1.6.2,Ejecución,CEPA,9,"1.6.2-02,1.7.4-04,1.6.2-06",2028-01-28,2028-02-09,180,,0.00000000,0.00000000,0.00000000,lineal,
1.6.2-04,Realizar las pruebas de tiempo de respuesta y declarar en operación el SSEI nuevo,1.6.2,Ejecución,CEPA,11,1.6.2-03,2028-02-10,2028-02-24,180,,0.00000000,0.00000000,0.00000000,lineal,
1.6.2-05,"Suministrar e instalar el equipamiento del edificio nuevo del SSEI (equipos de rescate y de comunicaciones, mobiliario y talleres)",1.6.2,Ejecución,Contratista de obra,31,1.6.1-05:II+20,2027-11-29,2028-01-10,180,,0.27537557,0.23837498,0.03700059,lineal,S1 100%
1.6.2-06,"Probar el equipamiento del SSEI, capacitar al personal en su uso y entregar los manuales",1.6.2,Ejecución,Contratista de obra,13,"1.6.2-05,1.6.1-05",2028-01-11,2028-01-27,180,,0.00561991,0.00486480,0.00075511,lineal,S1 100%
1.7.1-01,Movilizar a la firma de supervisión de la terminal,1.7.1,Ejecución,Firma de supervisión,11,3.4.2-12,2027-05-20,2027-06-03,32,,0.06977159,0.06332708,0.00644451,lineal,V1 78%; V2 22%
1.7.1-02,Supervisar la construcción de la terminal,1.7.1,Monitoreo y control,Firma de supervisión,487,1.7.1-01,2027-06-04,2029-04-16,240,,3.23521224,2.93836601,0.29684624,lineal,V1 79%; V2 21%
1.7.1-03,Movilizar a la firma de supervisión del estacionamiento,1.7.1,Ejecución,Firma de supervisión,11,3.4.2-06,2027-02-04,2027-02-18,224,,0.03579295,0.03235883,0.00343412,lineal,V1 72%; V2 28%
1.7.1-04,Supervisar la construcción del estacionamiento y del sistema solar,1.7.1,Monitoreo y control,Firma de supervisión,347,1.7.1-03,2027-02-19,2028-06-19,455,,1.52030615,1.38112943,0.13917672,lineal,V1 79%; V2 21%
1.7.1-05,Presentar el informe final de supervisión de la terminal,1.7.1,Cierre,Firma de supervisión,16,1.7.4-05,2029-07-06,2029-07-27,166,,0.13073269,0.11905279,0.01167990,lineal,V1 83%; V2 17%
1.7.1-06,Presentar el informe final de supervisión del estacionamiento,1.7.1,Cierre,Firma de supervisión,16,1.7.4-06,2028-08-17,2028-09-07,397,,0.06586958,0.05978581,0.00608376,lineal,V1 78%; V2 22%
1.7.2-01,Movilizar a la firma de supervisión de plataformas y calle Foxtrot,1.7.2,Ejecución,Firma de supervisión,11,3.4.2-24,2027-07-29,2027-08-12,4,,0.01509070,0.01366055,0.00143015,lineal,V1 74%; V2 26%
1.7.2-02,Supervisar la construcción de plataformas y de la calle Foxtrot,1.7.2,Monitoreo y control,Firma de supervisión,386,1.7.2-01,2027-08-13,2029-02-02,291,,0.66025695,0.59976548,0.06049147,lineal,V1 79%; V2 21%
1.7.2-03,Movilizar a la firma de supervisión del SSEI,1.7.2,Ejecución,Firma de supervisión,9,3.4.2-18,2027-06-11,2027-06-23,180,,0.00592856,0.00531024,0.00061832,lineal,V1 58%; V2 42%
1.7.2-04,Supervisar la construcción del edificio del SSEI,1.7.2,Monitoreo y control,Firma de supervisión,142,1.7.2-03,2027-06-24,2028-01-07,571,,0.19797061,0.17998063,0.01798998,lineal,V1 80%; V2 20%
1.7.2-05,Presentar el informe final de supervisión de plataformas y calle Foxtrot,1.7.2,Cierre,Firma de supervisión,16,1.7.4-07,2029-04-04,2029-04-25,233,,0.02793685,0.02538459,0.00255226,lineal,V1 80%; V2 20%
1.7.2-06,Presentar el informe final de supervisión del SSEI,1.7.2,Cierre,Firma de supervisión,13,1.7.4-08,2028-02-22,2028-03-09,527,,0.01042168,0.00938204,0.00103965,lineal,V1 66%; V2 34%
1.7.3-01,Revisar y aprobar el PGAS de construcción del contratista del estacionamiento,1.7.3,Monitoreo y control,Especialista socioambiental,13,"3.3.1-04,3.4.1-06",2027-01-28,2027-02-15,221,,0.00000000,0.00000000,0.00000000,lineal,
1.7.3-02,Revisar y aprobar el PGAS de construcción del contratista de la terminal,1.7.3,Monitoreo y control,Especialista socioambiental,16,"3.3.1-04,3.4.1-12",2027-04-26,2027-05-17,39,,0.00000000,0.00000000,0.00000000,lineal,
1.7.3-03,Revisar y aprobar el PGAS de construcción del contratista del SSEI,1.7.3,Monitoreo y control,Especialista socioambiental,9,"3.3.1-04,3.4.1-18",2027-05-28,2027-06-09,186,,0.00000000,0.00000000,0.00000000,lineal,
1.7.3-04,Revisar y aprobar el PGAS de construcción del contratista de plataformas y Foxtrot,1.7.3,Monitoreo y control,Especialista socioambiental,13,"3.3.1-04,3.4.1-24",2027-07-23,2027-08-10,0,si,0.00000000,0.00000000,0.00000000,lineal,
1.7.3-05,Dar seguimiento al cumplimiento del PGAS durante las obras,1.7.3,Monitoreo y control,Especialista socioambiental,565,1.7.3-01,2027-02-16,2029-04-16,240,,0.00000000,0.00000000,0.00000000,lineal,
1.7.3-06,Verificar el cierre de las instalaciones temporales y la restauración de los sitios de obra,1.7.3,Cierre,Especialista socioambiental,16,"1.7.4-01,1.7.4-02,1.7.4-03,1.7.4-04",2029-04-17,2029-05-08,224,,0.00000000,0.00000000,0.00000000,lineal,
1.7.4-01,Realizar la recepción provisional de la terminal y levantar la lista de pendientes,1.7.4,Cierre,Coordinador general de obra,21,"1.2.4-06,1.3.3-05",2029-03-19,2029-04-16,75,,0.00000000,0.00000000,0.00000000,lineal,
1.7.4-02,Realizar la recepción provisional del estacionamiento y del sistema solar y levantar la lista de pendientes,1.7.4,Cierre,Coordinador general de obra,13,1.5.3-04,2028-06-01,2028-06-19,306,,0.00000000,0.00000000,0.00000000,lineal,
1.7.4-03,Realizar la recepción provisional de las plataformas y de la calle Foxtrot y levantar la lista de pendientes,1.7.4,Cierre,Coordinador general de obra,13,"1.3.3-05,1.4.2-04",2029-01-17,2029-02-02,142,,0.00000000,0.00000000,0.00000000,lineal,
1.7.4-04,Realizar la recepción provisional del edificio del SSEI y levantar la lista de pendientes,1.7.4,Cierre,Coordinador general de obra,9,1.6.1-05,2027-12-28,2028-01-07,194,,0.00000000,0.00000000,0.00000000,lineal,
1.7.4-05,"Verificar la subsanación de pendientes, recibir los planos de obra ejecutada y firmar el acta de recepción definitiva de la terminal",1.7.4,Cierre,Coordinador general de obra,58,1.7.4-01,2029-04-17,2029-07-05,75,,0.00000000,0.00000000,0.00000000,lineal,
1.7.4-06,"Verificar la subsanación de pendientes, recibir los planos de obra ejecutada y firmar el acta de recepción definitiva del estacionamiento y el sistema solar",1.7.4,Cierre,Coordinador general de obra,42,1.7.4-02,2028-06-20,2028-08-16,306,,0.00000000,0.00000000,0.00000000,lineal,
1.7.4-07,"Verificar la subsanación de pendientes, recibir los planos de obra ejecutada y firmar el acta de recepción definitiva de las plataformas y la calle Foxtrot",1.7.4,Cierre,Coordinador general de obra,42,1.7.4-03,2029-02-05,2029-04-03,142,,0.00000000,0.00000000,0.00000000,lineal,
1.7.4-08,"Verificar la subsanación de pendientes, recibir los planos de obra ejecutada y firmar el acta de recepción definitiva del edificio del SSEI",1.7.4,Cierre,Coordinador general de obra,31,1.7.4-04,2028-01-10,2028-02-21,433,,0.00000000,0.00000000,0.00000000,lineal,
2.1-01,Elaborar el plan de trabajo y el informe inicial del plan estratégico,2.1,Planificación,Firma consultora,11,3.4.3-08,2027-05-26,2027-06-09,315,,0.09700434,0.07796410,0.01904024,lineal,C1 100%
2.1-02,"Elaborar el diagnóstico del sistema aeronáutico, su marco normativo y su infraestructura",2.1,Ejecución,Firma consultora,36,2.1-01,2027-06-10,2027-07-29,315,,0.31746874,0.25515523,0.06231352,lineal,C1 100%
2.1-03,"Formular la visión, los lineamientos y el plan de acción y redactar el borrador del plan estratégico",2.1,Ejecución,Firma consultora,41,2.1-02,2027-07-30,2027-09-24,315,,0.36156162,0.29059345,0.07096817,lineal,C1 100%
2.1-04,Revisar el borrador del plan estratégico y consolidar las observaciones de CEPA y del BID,2.1,Monitoreo y control,Especialista de planificación y monitoreo,13,2.1-03,2027-09-27,2027-10-13,441,,0.00000000,0.00000000,0.00000000,lineal,
2.1-05,Incorporar las observaciones y entregar la versión final del plan estratégico,2.1,Ejecución,Firma consultora,11,2.1-04,2027-10-14,2027-10-28,441,,0.09700434,0.07796410,0.01904024,lineal,C1 100%
2.1-06,Aprobar el plan estratégico final y remitirlo al BID,2.1,Cierre,CEPA,8,2.1-05,2027-10-29,2027-11-09,441,,0.00000000,0.00000000,0.00000000,lineal,
2.2.1-01,Elaborar el plan de trabajo y el informe inicial del Plan Maestro,2.2.1,Planificación,Firma consultora,15,3.4.3-14,2027-05-26,2027-06-15,311,,0.10170996,0.08711705,0.01459291,lineal,C2 100%
2.2.1-02,"Elaborar el inventario, el diagnóstico de instalaciones y el pronóstico de demanda",2.2.1,Ejecución,Firma consultora,77,2.2.1-01,2027-06-16,2027-09-30,311,,0.52211114,0.44720085,0.07491029,lineal,C2 100%
2.2.1-03,"Determinar los requerimientos, evaluar alternativas y redactar el borrador del Plan Maestro con su plan de implementación y financiero",2.2.1,Ejecución,Firma consultora,109,"2.1-03,2.2.1-02",2027-10-01,2028-03-01,311,,0.73909240,0.63305055,0.10604185,lineal,C2 100%
2.2.1-04,"Revisar el borrador del Plan Maestro y consolidar las observaciones de CEPA, la AAC y el BID",2.2.1,Monitoreo y control,Especialista de planificación y monitoreo,27,2.2.1-03,2028-03-02,2028-04-07,311,,0.00000000,0.00000000,0.00000000,lineal,
2.2.1-05,Incorporar las observaciones y las recomendaciones del estudio de conectividad y entregar la versión final del Plan Maestro,2.2.1,Ejecución,Firma consultora,21,"2.2.1-04,2.4-05",2028-04-10,2028-05-08,311,,0.14239395,0.12196387,0.02043008,lineal,C2 100%
2.2.1-06,Aprobar el Plan Maestro actualizado y entregarlo al BID,2.2.1,Cierre,CEPA,11,"2.1-06:FF+10,2.2.1-05",2028-05-09,2028-05-23,311,,0.00000000,0.00000000,0.00000000,lineal,
2.2.2-01,"Preparar el programa, los materiales y la lista de participantes de la capacitación en planificación, gestión y operación",2.2.2,Planificación,Firma consultora,21,2.2.1-03,2028-03-02,2028-03-30,349,,0.01017289,0.00889183,0.00128107,lineal,C3 100%
2.2.2-02,"Impartir los cursos de planificación, gestión y operación aeroportuaria al menos a 21 funcionarios",2.2.2,Ejecución,Firma consultora,42,"2.2.1-06,2.2.2-01",2028-05-24,2028-07-20,311,,0.02034579,0.01778365,0.00256213,lineal,C3 100%
2.2.2-03,Aplicar las evaluaciones y los talleres de cierre a los participantes,2.2.2,Monitoreo y control,Firma consultora,7,2.2.2-02,2028-07-21,2028-07-31,311,,0.00339096,0.00296394,0.00042702,lineal,C3 100%
2.2.2-04,Certificar a los funcionarios aprobados y registrar el indicador R2.1,2.2.2,Cierre,Especialista de planificación y monitoreo,7,2.2.2-03,2028-08-01,2028-08-09,311,,0.00000000,0.00000000,0.00000000,lineal,
2.3.1-01,Elaborar el plan de trabajo y el informe inicial de la estrategia BIM,2.3.1,Planificación,Firma consultora,11,3.4.3-19,2027-05-26,2027-06-09,481,,0.03226193,0.02852611,0.00373581,lineal,C4 100%
2.3.1-02,"Diagnosticar la madurez BIM de CEPA, sus procesos de diseño y sus herramientas",2.3.1,Ejecución,Firma consultora,21,2.3.1-01,2027-06-10,2027-07-08,481,,0.06159095,0.05445894,0.00713201,lineal,C4 100%
2.3.1-03,"Formular la estrategia BIM (usos, roles, entorno común de datos y requisitos de información) y redactar el borrador",2.3.1,Ejecución,Firma consultora,30,2.3.1-02,2027-07-09,2027-08-19,481,,0.08798707,0.07779849,0.01018858,lineal,C4 100%
2.3.1-04,Revisar el borrador de la estrategia BIM y consolidar las observaciones de CEPA,2.3.1,Monitoreo y control,Especialista en ingeniería aeroportuaria,11,2.3.1-03,2027-08-20,2027-09-03,481,,0.00000000,0.00000000,0.00000000,lineal,
2.3.1-05,Incorporar las observaciones y entregar la versión final de la estrategia BIM,2.3.1,Ejecución,Firma consultora,8,2.3.1-04,2027-09-06,2027-09-15,481,,0.02346322,0.02074626,0.00271696,lineal,C4 100%
2.3.1-06,Aprobar la estrategia BIM final,2.3.1,Cierre,CEPA,7,2.3.1-05,2027-09-16,2027-09-24,489,,0.00000000,0.00000000,0.00000000,lineal,
2.3.2-01,Preparar el programa y los materiales de la capacitación en BIM,2.3.2,Planificación,Firma consultora,15,2.3.1-05,2027-09-16,2027-10-06,481,,0.02275528,0.02012030,0.00263498,lineal,C4 100%
2.3.2-02,Impartir los cursos de BIM al personal de ingeniería de CEPA,2.3.2,Ejecución,Firma consultora,36,"2.3.1-06,2.3.2-01",2027-10-07,2027-11-25,481,,0.05461266,0.04828872,0.00632395,lineal,C4 100%
2.3.2-03,Evaluar a los participantes en BIM,2.3.2,Monitoreo y control,Firma consultora,7,2.3.2-02,2027-11-26,2027-12-06,481,,0.01061913,0.00938947,0.00122966,lineal,C4 100%
2.3.2-04,Entregar los materiales y el registro de la capacitación en BIM,2.3.2,Cierre,Especialista en ingeniería aeroportuaria,7,2.3.2-03,2027-12-07,2027-12-15,481,,0.00000000,0.00000000,0.00000000,lineal,
2.4-01,Elaborar el plan de trabajo y el informe inicial del estudio de conectividad terrestre,2.4,Planificación,Firma consultora,11,3.4.3-25,2027-05-26,2027-06-09,417,,0.02594400,0.02246688,0.00347712,lineal,C5 100%
2.4-02,"Diagnosticar el acceso terrestre al AIES con aforos, encuestas y análisis de los modos de transporte",2.4,Ejecución,Firma consultora,41,2.4-01,2027-06-10,2027-08-05,417,,0.09670037,0.08374020,0.01296017,lineal,C5 100%
2.4-03,Evaluar alternativas de acceso hacia San Salvador y los destinos turísticos y redactar el borrador del estudio,2.4,Ejecución,Firma consultora,46,2.4-02,2027-08-06,2027-10-08,417,,0.10849310,0.09395242,0.01454068,lineal,C5 100%
2.4-04,Revisar el borrador del estudio de conectividad y consolidar las observaciones de CEPA,2.4,Monitoreo y control,Especialista de planificación y monitoreo,13,2.4-03,2027-10-11,2027-10-27,417,,0.00000000,0.00000000,0.00000000,lineal,
2.4-05,Incorporar las observaciones y entregar el informe final del estudio de conectividad,2.4,Ejecución,Firma consultora,11,2.4-04,2027-10-28,2027-11-11,417,,0.02594400,0.02246688,0.00347712,lineal,C5 100%
2.4-06,Aprobar el informe final del estudio de conectividad,2.4,Cierre,CEPA,8,2.4-05,2027-11-12,2027-11-23,497,,0.00000000,0.00000000,0.00000000,lineal,
2.5-01,Elaborar el plan de trabajo y el informe inicial del estudio de diversificación de destinos,2.5,Planificación,Firma consultora,11,3.4.3-30,2027-04-21,2027-05-05,528,,0.02040029,0.01893845,0.00146184,lineal,C6 100%
2.5-02,"Diagnosticar el mercado actual del AIES (tráfico, aerolíneas, rutas y zona de influencia)",2.5,Ejecución,Firma consultora,35,2.5-01,2027-05-06,2027-06-23,528,,0.06491001,0.06025870,0.00465131,lineal,C6 100%
2.5-03,"Analizar los mercados de origen y destino y las aerolíneas potenciales, priorizarlos y redactar el borrador del estudio",2.5,Ejecución,Firma consultora,46,2.5-02,2027-06-24,2027-08-26,528,,0.08531030,0.07919715,0.00611316,lineal,C6 100%
2.5-04,Revisar el borrador del estudio de diversificación y consolidar las observaciones de CEPA,2.5,Monitoreo y control,Especialista de planificación y monitoreo,13,2.5-03,2027-08-27,2027-09-14,528,,0.00000000,0.00000000,0.00000000,lineal,
2.5-05,Incorporar las observaciones y entregar el informe final del estudio de diversificación,2.5,Ejecución,Firma consultora,11,2.5-04,2027-09-15,2027-09-29,528,,0.02040029,0.01893845,0.00146184,lineal,C6 100%
2.5-06,Aprobar el informe final del estudio de diversificación,2.5,Cierre,CEPA,8,2.5-05,2027-09-30,2027-10-11,528,,0.00000000,0.00000000,0.00000000,lineal,
2.6.1-01,Registrar los proyectos de terminal y estacionamiento en EDGE y elaborar la autoevaluación,2.6.1,Planificación,Firma consultora,21,"1.1.1-05,1.1.3-05,3.4.3-35",2027-04-21,2027-05-19,96,,0.00331240,0.00296875,0.00034365,lineal,C7 100%
2.6.1-02,Realizar la auditoría de diseño y obtener el certificado preliminar EDGE,2.6.1,Ejecución,Firma consultora,36,2.6.1-01,2027-05-20,2027-07-08,96,,0.00567839,0.00508928,0.00058911,lineal,C7 100%
2.6.1-03,Acompañar a CEPA y a los contratistas para conservar las medidas EDGE durante la construcción,2.6.1,Monitoreo y control,Firma consultora,441,2.6.1-02,2027-07-09,2029-03-16,96,,0.00303404,0.00271927,0.00031477,lineal,C7 100%
2.6.1-04,Realizar la auditoría en sitio de las medidas EDGE de la terminal y del estacionamiento terminados,2.6.1,Ejecución,Firma consultora,26,"1.2.4-06,1.5.3-04,2.6.1-03",2029-03-19,2029-04-23,96,,0.00410106,0.00367559,0.00042547,lineal,C7 100%
2.6.1-05,Atender las observaciones del proveedor de certificación y presentar el informe de auditoría,2.6.1,Ejecución,Firma consultora,26,2.6.1-04,2029-04-24,2029-05-29,96,,0.00410106,0.00367559,0.00042547,lineal,C7 100%
2.6.1-06,Recibir el certificado EDGE final y el informe de auditoría,2.6.1,Cierre,CEPA,6,2.6.1-05,2029-05-30,2029-06-06,96,,0.00000000,0.00000000,0.00000000,lineal,
2.6.2-01,Preparar el programa y los materiales de la capacitación en EDGE,2.6.2,Planificación,Firma consultora,11,2.6.1-02,2027-07-09,2027-07-23,555,,0.00115483,0.00103502,0.00011981,lineal,C7 100%
2.6.2-02,Impartir el curso de EDGE al personal previsto,2.6.2,Ejecución,Firma consultora,16,"2.6.1-04,2.6.2-01",2029-04-24,2029-05-15,99,,0.00167975,0.00150548,0.00017427,lineal,C7 100%
2.6.2-03,Evaluar y certificar a los participantes en EDGE,2.6.2,Monitoreo y control,Firma consultora,7,2.6.2-02,2029-05-16,2029-05-24,99,,0.00073489,0.00065865,0.00007624,lineal,C7 100%
2.6.2-04,Entregar el registro de la capacitación en EDGE,2.6.2,Cierre,Especialista en ingeniería aeroportuaria,6,2.6.2-03,2029-05-25,2029-06-01,99,,0.00000000,0.00000000,0.00000000,lineal,
2.7-01,Elaborar el plan de trabajo y el informe inicial del estudio de separación de flujos,2.7,Planificación,Firma consultora,11,3.4.3-40,2027-04-21,2027-05-05,564,,0.02906484,0.02514635,0.00391848,lineal,C8 100%
2.7-02,Diagnosticar los flujos de llegadas y salidas de la terminal antigua mediante levantamiento y observación,2.7,Ejecución,Firma consultora,21,2.7-01,2027-05-06,2027-06-03,564,,0.05548742,0.04800667,0.00748074,lineal,C8 100%
2.7-03,Identificar y priorizar las intervenciones de separación de flujos y redactar el borrador del estudio,2.7,Ejecución,Firma consultora,30,"1.1.1-05,2.7-02",2027-06-04,2027-07-15,564,,0.07926774,0.06858096,0.01068678,lineal,C8 100%
2.7-04,Revisar el borrador del estudio de separación de flujos y consolidar las observaciones de CEPA,2.7,Monitoreo y control,Especialista en ingeniería aeroportuaria,11,2.7-03,2027-07-16,2027-07-30,564,,0.00000000,0.00000000,0.00000000,lineal,
2.7-05,Incorporar las observaciones y entregar el informe final del estudio de separación de flujos,2.7,Ejecución,Firma consultora,8,2.7-04,2027-08-02,2027-08-11,564,,0.02113806,0.01828826,0.00284981,lineal,C8 100%
2.7-06,Aprobar el informe final del estudio de separación de flujos,2.7,Cierre,CEPA,7,2.7-05,2027-08-12,2027-08-20,564,,0.00000000,0.00000000,0.00000000,lineal,
2.8-01,Elaborar el plan de trabajo y el informe inicial del estudio de movilidad interna,2.8,Planificación,Firma consultora,11,3.4.3-45,2027-04-21,2027-05-05,549,,0.02395099,0.02072132,0.00322967,lineal,C9 100%
2.8-02,Diagnosticar el tráfico de las vías internas con aforos en horas pico y en el dejar y recoger pasajeros,2.8,Ejecución,Firma consultora,30,2.8-01,2027-05-06,2027-06-16,549,,0.06532089,0.05651270,0.00880820,lineal,C9 100%
2.8-03,"Analizar los puntos de conflicto, definir las medidas y redactar el borrador del estudio",2.8,Ejecución,Firma consultora,36,"1.1.3-05,2.8-02",2027-06-17,2027-08-05,549,,0.07838507,0.06781524,0.01056984,lineal,C9 100%
2.8-04,Revisar el borrador del estudio de movilidad interna y consolidar las observaciones de CEPA,2.8,Monitoreo y control,Especialista en ingeniería aeroportuaria,11,2.8-03,2027-08-06,2027-08-20,549,,0.00000000,0.00000000,0.00000000,lineal,
2.8-05,Incorporar las observaciones y entregar el informe final del estudio de movilidad interna,2.8,Ejecución,Firma consultora,8,2.8-04,2027-08-23,2027-09-01,549,,0.01741891,0.01507005,0.00234885,lineal,C9 100%
2.8-06,Aprobar el informe final del estudio de movilidad interna,2.8,Cierre,CEPA,7,2.8-05,2027-09-02,2027-09-10,549,,0.00000000,0.00000000,0.00000000,lineal,
2.9-01,"Elaborar el diagnóstico de necesidades, el programa y los materiales de capacitación en igualdad e inclusión",2.9,Planificación,Firma consultora,30,3.4.3-50,2027-04-21,2027-06-01,49,,0.00796153,0.00686430,0.00109724,lineal,C10 100%
2.9-02,Impartir la capacitación a la primera cohorte de 100 funcionarios y evaluarla,2.9,Ejecución,Firma consultora,35,2.9-01,2027-06-02,2027-07-20,49,,0.00928846,0.00800835,0.00128011,lineal,C10 100%
2.9-03,Impartir la capacitación a la segunda cohorte de 100 funcionarios y evaluarla,2.9,Ejecución,Firma consultora,35,2.9-02:II+260,2028-05-31,2028-07-18,49,,0.00928846,0.00800835,0.00128011,lineal,C10 100%
2.9-04,Impartir la capacitación a la tercera cohorte de 100 funcionarios y evaluarla,2.9,Ejecución,Firma consultora,35,2.9-03:II+260,2029-05-30,2029-07-17,49,,0.00928846,0.00800835,0.00128011,lineal,C10 100%
2.9-05,Emitir las constancias de los 300 funcionarios aprobados y entregar el informe final del programa,2.9,Cierre,Firma consultora,11,2.9-04,2029-07-18,2029-08-01,49,,0.00291923,0.00251691,0.00040232,lineal,C10 100%
2.9-06,Aprobar el informe final y registrar el indicador T2 en el informe semestral,2.9,Cierre,Especialista socioambiental,7,2.9-05,2029-08-02,2029-08-10,49,,0.00000000,0.00000000,0.00000000,lineal,
3.1.1-01,"Incorporar al Coordinador del Programa, al Coordinador general de obra y al Especialista de planificación y monitoreo",3.1.1,Inicio,CEPA,5,3.4.4-05,2026-04-16,2026-04-22,10,,0.00000000,0.00000000,0.00000000,lineal,
3.1.1-02,Incorporar al Especialista de adquisiciones,3.1.1,Inicio,CEPA,5,3.4.4-05,2026-04-23,2026-04-29,48,,0.00000000,0.00000000,0.00000000,lineal,
3.1.1-03,"Incorporar al Especialista en ingeniería aeroportuaria, al Especialista financiero y al Especialista socioambiental",3.1.1,Inicio,CEPA,5,3.4.4-05,2026-05-04,2026-05-08,41,,0.00000000,0.00000000,0.00000000,lineal,
3.1.1-04,Registrar las firmas autorizadas del programa ante el BID,3.1.1,Inicio,Especialista financiero,5,3.1.1-01,2026-04-23,2026-04-29,48,,0.00000000,0.00000000,0.00000000,lineal,
3.1.1-05,Documentar ante el BID la conformación de la UEP con dedicación exclusiva,3.1.1,Inicio,Coordinador del Programa,5,"3.1.1-01,3.1.1-02,3.1.1-03,3.1.1-04",2026-05-11,2026-05-15,41,,0.00000000,0.00000000,0.00000000,lineal,
3.1.1-06,Administrar el programa desde la Unidad Ejecutora,3.1.1,Monitoreo y control,Coordinador del Programa,1023,3.1.1-01:II+0,2026-04-16,2030-03-18,10,,3.85975926,3.70370163,0.15605764,escalonado por puestos,U1 51%; U3 43%; U2 5%
3.1.2-01,Ajustar el borrador del ROP acordado con el BID a la estructura de la UEP y a las cifras del PA,3.1.2,Inicio,Coordinador del Programa,15,"3.1.1-01,3.3.1-01",2026-06-01,2026-06-19,78,,0.00000000,0.00000000,0.00000000,lineal,
3.1.2-02,Obtener la no objeción del BID al ROP ajustado,3.1.2,Inicio,BID,10,3.1.2-01,2026-06-22,2026-07-03,78,,0.00000000,0.00000000,0.00000000,lineal,
3.1.2-03,Aprobar el ROP en CEPA mediante resolución de la autoridad superior,3.1.2,Inicio,CEPA,5,3.1.2-02,2026-07-06,2026-07-10,78,,0.00000000,0.00000000,0.00000000,lineal,
3.1.3-01,Redactar el convenio de transferencia de recursos entre la República y CEPA,3.1.3,Inicio,Coordinador del Programa,20,3.1.1-05,2026-05-18,2026-06-12,676,,0.00000000,0.00000000,0.00000000,lineal,
3.1.3-02,Obtener la no objeción del BID al texto del convenio,3.1.3,Inicio,BID,5,3.1.3-01,2026-06-15,2026-06-19,676,,0.00000000,0.00000000,0.00000000,lineal,
3.1.3-03,Suscribir el convenio y ponerlo en vigencia,3.1.3,Inicio,CEPA,10,3.1.3-02,2026-06-22,2026-07-03,676,,0.00000000,0.00000000,0.00000000,lineal,
3.1.4-01,Solicitar a la Dirección General de Tesorería la apertura de la cuenta especial en el BCR,3.1.4,Inicio,Especialista financiero,10,3.1.1-04,2026-04-30,2026-05-13,698,,0.00000000,0.00000000,0.00000000,lineal,
3.1.4-02,Abrir y habilitar la cuenta especial para recibir desembolsos,3.1.4,Inicio,CEPA,10,3.1.4-01,2026-05-14,2026-05-27,698,,0.00000000,0.00000000,0.00000000,lineal,
3.1.4-03,Registrar la cuenta especial ante el BID,3.1.4,Inicio,Especialista financiero,5,3.1.4-02,2026-05-28,2026-06-03,698,,0.00000000,0.00000000,0.00000000,lineal,
3.2.1-01,"Actualizar la EDT, el cronograma y el presupuesto del PEP de noviembre de 2025 con las fechas reales del préstamo",3.2.1,Planificación,Especialista de planificación y monitoreo,20,3.1.1-01,2026-04-23,2026-05-20,883,,0.00000000,0.00000000,0.00000000,lineal,
3.2.1-02,"Integrar al PEP el calendario de adquisiciones, hitos y desembolsos por componente",3.2.1,Planificación,Especialista de planificación y monitoreo,10,"3.2.1-01,3.2.3-02",2026-05-21,2026-06-03,883,,0.00000000,0.00000000,0.00000000,lineal,
3.2.1-03,Aprobar el PEP en CEPA y presentarlo al BID,3.2.1,Planificación,Coordinador del Programa,5,3.2.1-02,2026-06-04,2026-06-10,883,,0.00000000,0.00000000,0.00000000,lineal,
3.2.2-01,"Elaborar el POA 2027 con metas, cronograma físico y financiero y presupuesto por producto",3.2.2,Planificación,Especialista de planificación y monitoreo,20,3.2.1-03,2026-11-02,2026-11-27,781,,0.00000000,0.00000000,0.00000000,lineal,
3.2.2-02,Aprobar el POA 2027 en CEPA y presentarlo al BID antes del inicio del año,3.2.2,Planificación,Coordinador del Programa,5,3.2.2-01,2026-11-30,2026-12-04,781,,0.00000000,0.00000000,0.00000000,lineal,
3.2.2-03,"Elaborar el POA 2028 con metas, cronograma físico y financiero y presupuesto por producto",3.2.2,Planificación,Especialista de planificación y monitoreo,20,3.2.2-02,2027-11-01,2027-11-26,546,,0.00000000,0.00000000,0.00000000,lineal,
3.2.2-04,Aprobar el POA 2028 en CEPA y presentarlo al BID antes del inicio del año,3.2.2,Planificación,Coordinador del Programa,5,3.2.2-03,2027-11-29,2027-12-03,546,,0.00000000,0.00000000,0.00000000,lineal,
3.2.2-05,"Elaborar el POA 2029 con metas, cronograma físico y financiero y presupuesto por producto",3.2.2,Planificación,Especialista de planificación y monitoreo,20,3.2.2-04,2028-11-01,2028-11-28,309,,0.00000000,0.00000000,0.00000000,lineal,
3.2.2-06,Aprobar el POA 2029 en CEPA y presentarlo al BID antes del inicio del año,3.2.2,Planificación,Coordinador del Programa,5,3.2.2-05,2028-11-29,2028-12-05,309,,0.00000000,0.00000000,0.00000000,lineal,
3.2.2-07,"Elaborar el POA 2030 con metas, cronograma físico y financiero y presupuesto por producto",3.2.2,Planificación,Especialista de planificación y monitoreo,20,3.2.2-06,2029-11-01,2029-11-28,73,,0.00000000,0.00000000,0.00000000,lineal,
3.2.2-08,Aprobar el POA 2030 en CEPA y presentarlo al BID antes del inicio del año,3.2.2,Planificación,Coordinador del Programa,5,3.2.2-07,2029-11-29,2029-12-05,73,,0.00000000,0.00000000,0.00000000,lineal,
3.2.3-01,"Elaborar el Plan de Adquisiciones inicial 2026-1 con estacionamiento, su supervisión, la UEP y la auditoría del año 1",3.2.3,Planificación,CEPA,30,,2026-02-02,2026-03-13,107,,0.00000000,0.00000000,0.00000000,lineal,
3.2.3-02,Obtener la no objeción del BID al Plan de Adquisiciones 2026-1,3.2.3,Planificación,BID,5,3.2.3-01,2026-04-07,2026-04-13,91,,0.00000000,0.00000000,0.00000000,lineal,
3.2.3-03,"Actualizar el Plan de Adquisiciones a la versión 2026-2 con terminal, SSEI, plataformas y las tres supervisiones restantes",3.2.3,Planificación,Especialista de adquisiciones,20,3.2.3-02,2026-04-14,2026-05-11,91,,0.00000000,0.00000000,0.00000000,lineal,
3.2.3-04,Obtener la no objeción del BID al Plan de Adquisiciones 2026-2,3.2.3,Planificación,BID,5,3.2.3-03,2026-07-08,2026-07-14,50,,0.00000000,0.00000000,0.00000000,lineal,
3.2.3-05,Mantener el Plan de Adquisiciones actualizado en el sistema del BID cada vez que cambie un proceso,3.2.3,Monitoreo y control,Especialista de adquisiciones,791,3.2.3-04,2026-07-15,2029-07-25,168,,0.00000000,0.00000000,0.00000000,lineal,
3.2.3-06,Publicar el Aviso General de Adquisiciones del programa en el portal del BID,3.2.3,Ejecución,Especialista de adquisiciones,5,3.2.3-02,2026-04-29,2026-05-05,131,,0.00000000,0.00000000,0.00000000,lineal,
3.3.1-01,Revisar el PAAS del 8 de octubre de 2025 y ajustar el SGAS a la organización de la UEP,3.3.1,Planificación,Especialista socioambiental,15,3.1.1-03,2026-05-11,2026-05-29,78,,0.00000000,0.00000000,0.00000000,lineal,
3.3.1-02,"Elaborar los procedimientos y formatos del SGAS: selección de obra, reporte de incidentes e informe de cumplimiento",3.3.1,Planificación,Especialista socioambiental,20,3.3.1-01,2026-06-01,2026-06-26,78,,0.00000000,0.00000000,0.00000000,lineal,
3.3.1-03,Obtener la no objeción del BID al SGAS y al PAAS actualizados,3.3.1,Planificación,BID,10,3.3.1-02,2026-06-29,2026-07-10,78,,0.00000000,0.00000000,0.00000000,lineal,
3.3.1-04,Incorporar el SGAS y el PAAS como anexos del ROP aprobado,3.3.1,Planificación,Especialista socioambiental,5,"3.1.2-03,3.3.1-03",2026-07-13,2026-07-17,78,,0.00000000,0.00000000,0.00000000,lineal,
3.3.1-05,Elaborar el Plan de Gestión del Riesgo de Desastres y Cambio Climático final con los diseños aprobados,3.3.1,Planificación,Especialista socioambiental,31,"3.3.1-04,1.1.1-05,1.1.2-06,1.1.3-05,1.1.4-05",2026-11-11,2026-12-23,136,,0.00000000,0.00000000,0.00000000,lineal,
3.3.1-06,Presentar al BID el Plan de Gestión del Riesgo de Desastres y Cambio Climático final,3.3.1,Planificación,Coordinador del Programa,6,3.3.1-05,2026-12-24,2026-12-31,136,,0.00000000,0.00000000,0.00000000,lineal,
3.3.2-01,Evaluar el riesgo operacional y definir las fases de trabajo del lado aire junto con la operación aeroportuaria,3.3.2,Planificación,Especialista en ingeniería aeroportuaria,20,"1.1.2-06,3.3.1-04",2026-11-11,2026-12-08,86,,0.00000000,0.00000000,0.00000000,lineal,
3.3.2-02,"Elaborar el protocolo de seguridad operacional para obras del lado aire, de uso de contratistas y supervisión",3.3.2,Planificación,Coordinador general de obra,30,3.3.2-01,2026-12-09,2027-01-19,86,,0.00000000,0.00000000,0.00000000,lineal,
3.3.2-03,Presentar el protocolo a la AAC y atender sus observaciones,3.3.2,Planificación,Coordinador general de obra,15,3.3.2-02,2027-01-20,2027-02-09,86,,0.00000000,0.00000000,0.00000000,lineal,
3.3.2-04,Aprobar el protocolo de seguridad operacional de las obras del lado aire,3.3.2,Planificación,AAC,22,3.3.2-03,2027-02-10,2027-03-11,86,,0.00000000,0.00000000,0.00000000,lineal,
3.3.3-01,"Diseñar el procedimiento del mecanismo de quejas y reclamos: canales, plazos de respuesta y registro de casos",3.3.3,Planificación,Especialista socioambiental,15,3.3.1-04,2026-07-20,2026-08-07,261,,0.00000000,0.00000000,0.00000000,lineal,
3.3.3-02,"Instalar y difundir los canales del mecanismo entre trabajadores, usuarios, arrendatarios, aerolíneas y comunidades",3.3.3,Ejecución,Especialista socioambiental,20,3.3.3-01,2026-08-10,2026-09-04,261,,0.00000000,0.00000000,0.00000000,lineal,
3.3.3-03,"Operar el mecanismo, registrar los casos y dar respuesta durante las obras",3.3.3,Monitoreo y control,Especialista socioambiental,660,3.3.3-02,2026-09-07,2029-03-16,261,,0.00000000,0.00000000,0.00000000,lineal,
3.3.4-01,Acordar con el BID el formato del informe de cumplimiento ambiental y social semestral,3.3.4,Planificación,Especialista socioambiental,10,3.3.1-04,2026-07-20,2026-07-31,362,,0.00000000,0.00000000,0.00000000,lineal,
3.3.4-02,Presentar los informes semestrales de cumplimiento ambiental y social junto con el informe de progreso,3.3.4,Monitoreo y control,Especialista socioambiental,544,"1.5.1-01:II+0,3.3.4-01",2027-02-16,2029-03-16,221,,0.00000000,0.00000000,0.00000000,lineal,
3.3.4-03,Presentar al BID el informe final ambiental y social del programa,3.3.4,Cierre,Especialista socioambiental,15,"3.3.4-02,1.7.4-05,1.7.4-06,1.7.4-07,1.7.4-08",2029-07-06,2029-07-26,142,,0.00000000,0.00000000,0.00000000,lineal,
3.4.1-01,Preparar los documentos de licitación del estacionamiento y el sistema solar,3.4.1,Planificación,Especialista de adquisiciones,45,"1.1.3-05:FF+0,3.1.1-02,3.2.3-02",2026-06-23,2026-08-24,224,,0.00000000,0.00000000,0.00000000,lineal,
3.4.1-02,Obtener la no objeción del BID a los documentos de licitación del estacionamiento y el sistema solar,3.4.1,Planificación,BID,5,"3.3.1-04,3.4.1-01",2026-08-25,2026-08-31,224,,0.00000000,0.00000000,0.00000000,lineal,
3.4.1-03,Publicar el aviso específico de adquisiciones del estacionamiento y el sistema solar y recibir ofertas hasta la apertura,3.4.1,Ejecución,Especialista de adquisiciones,31,"3.1.2-03,3.4.1-02,3.2.3-06",2026-09-04,2026-10-16,221,,0.00000000,0.00000000,0.00000000,lineal,
3.4.1-04,Evaluar las ofertas del estacionamiento y el sistema solar y elaborar el informe de evaluación,3.4.1,Ejecución,Especialista de adquisiciones,29,3.4.1-03,2026-10-19,2026-11-26,221,,0.00000000,0.00000000,0.00000000,lineal,
3.4.1-05,Obtener la no objeción del BID a la evaluación y a la recomendación de adjudicación del estacionamiento y el sistema solar,3.4.1,Ejecución,BID,5,3.4.1-04,2026-11-27,2026-12-03,221,,0.00000000,0.00000000,0.00000000,lineal,
3.4.1-06,Adjudicar y firmar el contrato de obra del estacionamiento y el sistema solar,3.4.1,Ejecución,CEPA,39,3.4.1-05,2026-12-04,2027-01-27,221,,0.00000000,0.00000000,0.00000000,lineal,
3.4.1-07,Preparar los documentos de licitación de la terminal de pasajeros,3.4.1,Planificación,Especialista de adquisiciones,45,"1.1.1-05:FF+0,3.1.1-02,3.2.3-04",2026-07-28,2026-09-28,41,,0.00000000,0.00000000,0.00000000,lineal,
3.4.1-08,Obtener la no objeción del BID a los documentos de licitación de la terminal de pasajeros,3.4.1,Planificación,BID,5,"3.3.1-04,3.4.1-07",2026-09-29,2026-10-05,41,,0.00000000,0.00000000,0.00000000,lineal,
3.4.1-09,Publicar el aviso específico de adquisiciones de la terminal de pasajeros y recibir ofertas hasta la apertura,3.4.1,Ejecución,Especialista de adquisiciones,32,"3.1.2-03,3.4.1-08,3.2.3-06",2026-10-08,2026-11-20,39,,0.00000000,0.00000000,0.00000000,lineal,
3.4.1-10,Evaluar las ofertas de la terminal de pasajeros y elaborar el informe de evaluación,3.4.1,Ejecución,Especialista de adquisiciones,44,3.4.1-09,2026-11-23,2027-01-21,39,,0.00000000,0.00000000,0.00000000,lineal,
3.4.1-11,Obtener la no objeción del BID a la evaluación y a la recomendación de adjudicación de la terminal de pasajeros,3.4.1,Ejecución,BID,5,3.4.1-10,2027-01-22,2027-01-28,39,,0.00000000,0.00000000,0.00000000,lineal,
3.4.1-12,Adjudicar y firmar el contrato de obra de la terminal de pasajeros,3.4.1,Ejecución,CEPA,61,3.4.1-11,2027-01-29,2027-04-23,39,,0.00000000,0.00000000,0.00000000,lineal,
3.4.1-13,Preparar los documentos de licitación del SSEI,3.4.1,Planificación,Especialista de adquisiciones,45,"1.1.4-05:FF+0,3.1.1-02,3.2.3-04",2026-08-05,2026-10-06,245,,0.00000000,0.00000000,0.00000000,lineal,
3.4.1-14,Obtener la no objeción del BID a los documentos de licitación del SSEI,3.4.1,Planificación,BID,5,"3.3.1-04,3.4.1-13",2026-10-07,2026-10-13,245,,0.00000000,0.00000000,0.00000000,lineal,
3.4.1-15,Publicar el aviso específico de adquisiciones del SSEI y recibir ofertas hasta la apertura,3.4.1,Ejecución,Especialista de adquisiciones,31,"3.1.2-03,3.4.1-14,3.2.3-06",2027-01-06,2027-02-17,185,,0.00000000,0.00000000,0.00000000,lineal,
3.4.1-16,Evaluar las ofertas del SSEI y elaborar el informe de evaluación,3.4.1,Ejecución,Especialista de adquisiciones,28,3.4.1-15,2027-02-18,2027-03-29,185,,0.00000000,0.00000000,0.00000000,lineal,
3.4.1-17,Obtener la no objeción del BID a la evaluación y a la recomendación de adjudicación del SSEI,3.4.1,Ejecución,BID,5,3.4.1-16,2027-03-30,2027-04-05,185,,0.00000000,0.00000000,0.00000000,lineal,
3.4.1-18,Adjudicar y firmar el contrato de obra del SSEI,3.4.1,Ejecución,CEPA,38,3.4.1-17,2027-04-06,2027-05-27,185,,0.00000000,0.00000000,0.00000000,lineal,
3.4.1-19,Preparar los documentos de licitación de las plataformas y la calle Foxtrot,3.4.1,Planificación,Especialista de adquisiciones,45,"1.1.2-06:FF+0,3.1.1-02,3.2.3-04",2026-09-09,2026-11-10,82,,0.00000000,0.00000000,0.00000000,lineal,
3.4.1-20,Obtener la no objeción del BID a los documentos de licitación de las plataformas y la calle Foxtrot,3.4.1,Planificación,BID,5,"3.3.1-04,3.4.1-19",2026-11-11,2026-11-17,82,,0.00000000,0.00000000,0.00000000,lineal,
3.4.1-21,Publicar el aviso específico de adquisiciones de las plataformas y la calle Foxtrot y recibir ofertas hasta la apertura,3.4.1,Ejecución,Especialista de adquisiciones,31,"3.1.2-03,3.4.1-20,3.2.3-06",2027-03-12,2027-04-23,0,si,0.00000000,0.00000000,0.00000000,lineal,
3.4.1-22,Evaluar las ofertas de las plataformas y la calle Foxtrot y elaborar el informe de evaluación,3.4.1,Ejecución,Especialista de adquisiciones,25,3.4.1-21,2027-04-26,2027-05-28,0,si,0.00000000,0.00000000,0.00000000,lineal,
3.4.1-23,Obtener la no objeción del BID a la evaluación y a la recomendación de adjudicación de las plataformas y la calle Foxtrot,3.4.1,Ejecución,BID,5,3.4.1-22,2027-05-31,2027-06-04,0,si,0.00000000,0.00000000,0.00000000,lineal,
3.4.1-24,Adjudicar y firmar el contrato de obra de las plataformas y la calle Foxtrot,3.4.1,Ejecución,CEPA,34,3.4.1-23,2027-06-07,2027-07-22,0,si,0.00000000,0.00000000,0.00000000,lineal,
3.4.2-01,"Preparar los términos de referencia, la solicitud de expresiones de interés y la lista corta de la supervisión del estacionamiento y el sistema solar",3.4.2,Planificación,Especialista de adquisiciones,17,"3.2.3-02,3.2.3-06",2026-05-06,2026-05-28,224,,0.00000000,0.00000000,0.00000000,lineal,
3.4.2-02,Obtener la no objeción del BID a los términos de referencia y a la lista corta de la supervisión del estacionamiento y el sistema solar,3.4.2,Planificación,BID,5,3.4.2-01,2026-05-29,2026-06-04,224,,0.00000000,0.00000000,0.00000000,lineal,
3.4.2-03,Invitar a las firmas de la lista corta y recibir las propuestas de la supervisión del estacionamiento y el sistema solar,3.4.2,Ejecución,Especialista de adquisiciones,40,3.4.2-02,2026-06-05,2026-07-30,224,,0.00000000,0.00000000,0.00000000,lineal,
3.4.2-04,Evaluar las propuestas técnicas y económicas y negociar el contrato de la supervisión del estacionamiento y el sistema solar,3.4.2,Ejecución,Especialista de adquisiciones,124,3.4.2-03,2026-07-31,2027-01-20,224,,0.00000000,0.00000000,0.00000000,lineal,
3.4.2-05,Obtener la no objeción del BID al informe de evaluación combinado y al contrato negociado de la supervisión del estacionamiento y el sistema solar,3.4.2,Ejecución,BID,5,3.4.2-04,2027-01-21,2027-01-27,224,,0.00000000,0.00000000,0.00000000,lineal,
3.4.2-06,Firmar el contrato de supervisión del estacionamiento y el sistema solar,3.4.2,Ejecución,CEPA,5,3.4.2-05,2027-01-28,2027-02-03,224,,0.00000000,0.00000000,0.00000000,lineal,
3.4.2-07,Publicar la solicitud de expresiones de interés de la supervisión de la terminal y conformar la lista corta,3.4.2,Ejecución,Especialista de adquisiciones,20,"3.1.2-03,3.2.3-04,3.3.1-04,3.2.3-06",2026-09-22,2026-10-19,32,,0.00000000,0.00000000,0.00000000,lineal,
3.4.2-08,Obtener la no objeción del BID a los términos de referencia y a la lista corta de la supervisión de la terminal,3.4.2,Planificación,BID,5,3.4.2-07,2026-10-20,2026-10-26,32,,0.00000000,0.00000000,0.00000000,lineal,
3.4.2-09,Invitar a las firmas de la lista corta y recibir las propuestas de la supervisión de la terminal,3.4.2,Ejecución,Especialista de adquisiciones,30,3.4.2-08,2026-10-27,2026-12-07,32,,0.00000000,0.00000000,0.00000000,lineal,
3.4.2-10,Evaluar las propuestas técnicas y económicas y negociar el contrato de la supervisión de la terminal,3.4.2,Ejecución,Especialista de adquisiciones,104,3.4.2-09,2026-12-08,2027-04-30,32,,0.00000000,0.00000000,0.00000000,lineal,
3.4.2-11,Obtener la no objeción del BID al informe de evaluación combinado y al contrato negociado de la supervisión de la terminal,3.4.2,Ejecución,BID,5,3.4.2-10,2027-05-03,2027-05-07,32,,0.00000000,0.00000000,0.00000000,lineal,
3.4.2-12,Firmar el contrato de supervisión de la terminal,3.4.2,Ejecución,CEPA,8,3.4.2-11,2027-05-10,2027-05-19,32,,0.00000000,0.00000000,0.00000000,lineal,
3.4.2-13,"Preparar los términos de referencia, la solicitud de expresiones de interés y la lista corta de la supervisión del SSEI",3.4.2,Planificación,Especialista de adquisiciones,47,"3.1.2-03,3.2.3-04,3.3.1-04,3.2.3-06",2026-11-11,2027-01-14,180,,0.00000000,0.00000000,0.00000000,lineal,
3.4.2-14,Obtener la no objeción del BID a los términos de referencia y a la lista corta de la supervisión del SSEI,3.4.2,Planificación,BID,5,3.4.2-13,2027-01-15,2027-01-21,180,,0.00000000,0.00000000,0.00000000,lineal,
3.4.2-15,Invitar a las firmas de la lista corta y recibir las propuestas de la supervisión del SSEI,3.4.2,Ejecución,Especialista de adquisiciones,30,3.4.2-14,2027-01-22,2027-03-04,180,,0.00000000,0.00000000,0.00000000,lineal,
3.4.2-16,Evaluar las propuestas técnicas y económicas y negociar el contrato de la supervisión del SSEI,3.4.2,Ejecución,Especialista de adquisiciones,57,3.4.2-15,2027-03-05,2027-05-24,180,,0.00000000,0.00000000,0.00000000,lineal,
3.4.2-17,Obtener la no objeción del BID al informe de evaluación combinado y al contrato negociado de la supervisión del SSEI,3.4.2,Ejecución,BID,5,3.4.2-16,2027-05-25,2027-05-31,180,,0.00000000,0.00000000,0.00000000,lineal,
3.4.2-18,Firmar el contrato de supervisión del SSEI,3.4.2,Ejecución,CEPA,8,3.4.2-17,2027-06-01,2027-06-10,180,,0.00000000,0.00000000,0.00000000,lineal,
3.4.2-19,"Preparar los términos de referencia, la solicitud de expresiones de interés y la lista corta de la supervisión de las plataformas y la calle Foxtrot",3.4.2,Planificación,Especialista de adquisiciones,40,"3.1.2-03,3.2.3-04,3.3.1-04,3.2.3-06",2027-01-19,2027-03-15,4,,0.00000000,0.00000000,0.00000000,lineal,
3.4.2-20,Obtener la no objeción del BID a los términos de referencia y a la lista corta de la supervisión de las plataformas y la calle Foxtrot,3.4.2,Planificación,BID,5,3.4.2-19,2027-03-16,2027-03-22,4,,0.00000000,0.00000000,0.00000000,lineal,
3.4.2-21,Invitar a las firmas de la lista corta y recibir las propuestas de la supervisión de las plataformas y la calle Foxtrot,3.4.2,Ejecución,Especialista de adquisiciones,30,3.4.2-20,2027-03-23,2027-05-03,4,,0.00000000,0.00000000,0.00000000,lineal,
3.4.2-22,Evaluar las propuestas técnicas y económicas y negociar el contrato de la supervisión de las plataformas y la calle Foxtrot,3.4.2,Ejecución,Especialista de adquisiciones,49,3.4.2-21,2027-05-04,2027-07-09,4,,0.00000000,0.00000000,0.00000000,lineal,
3.4.2-23,Obtener la no objeción del BID al informe de evaluación combinado y al contrato negociado de la supervisión de las plataformas y la calle Foxtrot,3.4.2,Ejecución,BID,5,3.4.2-22,2027-07-12,2027-07-16,4,,0.00000000,0.00000000,0.00000000,lineal,
3.4.2-24,Firmar el contrato de supervisión de las plataformas y la calle Foxtrot,3.4.2,Ejecución,CEPA,8,3.4.2-23,2027-07-19,2027-07-28,4,,0.00000000,0.00000000,0.00000000,lineal,
3.4.3-01,Incluir las consultorías del Componente II en el Plan de Adquisiciones,3.4.3,Planificación,Especialista de adquisiciones,15,3.2.3-04,2026-11-02,2026-11-20,49,,0.00000000,0.00000000,0.00000000,lineal,
3.4.3-02,Obtener la no objeción del BID a la actualización del PA con el Componente II,3.4.3,Planificación,BID,5,3.4.3-01,2026-11-23,2026-11-27,49,,0.00000000,0.00000000,0.00000000,lineal,
3.4.3-03,"Preparar los términos de referencia, la solicitud de expresiones de interés y la lista corta para el plan estratégico del sistema aeronáutico (producto 2.1)",3.4.3,Planificación,Especialista de adquisiciones,40,"3.1.2-03,3.4.3-02",2026-11-30,2027-01-22,315,,0.00000000,0.00000000,0.00000000,lineal,
3.4.3-04,Obtener la no objeción del BID a los términos de referencia y a la lista corta del plan estratégico del sistema aeronáutico (producto 2.1),3.4.3,Planificación,BID,5,3.4.3-03,2027-01-25,2027-01-29,315,,0.00000000,0.00000000,0.00000000,lineal,
3.4.3-05,Invitar a las firmas de la lista corta y recibir las propuestas para el plan estratégico del sistema aeronáutico (producto 2.1),3.4.3,Ejecución,Especialista de adquisiciones,30,3.4.3-04,2027-02-01,2027-03-12,315,,0.00000000,0.00000000,0.00000000,lineal,
3.4.3-06,Evaluar las propuestas y negociar el contrato para el plan estratégico del sistema aeronáutico (producto 2.1),3.4.3,Ejecución,Especialista de adquisiciones,35,3.4.3-05,2027-03-15,2027-04-30,315,,0.00000000,0.00000000,0.00000000,lineal,
3.4.3-07,Obtener la no objeción del BID al informe de evaluación y al contrato negociado del plan estratégico del sistema aeronáutico (producto 2.1),3.4.3,Ejecución,BID,7,3.4.3-06,2027-05-03,2027-05-11,315,,0.00000000,0.00000000,0.00000000,lineal,
3.4.3-08,Firmar el contrato de consultoría para el plan estratégico del sistema aeronáutico (producto 2.1),3.4.3,Ejecución,CEPA,10,3.4.3-07,2027-05-12,2027-05-25,315,,0.00000000,0.00000000,0.00000000,lineal,
3.4.3-09,"Preparar los términos de referencia, la solicitud de expresiones de interés y la lista corta para la actualización del Plan Maestro y la capacitación (productos 2.2.1 y 2.2.2)",3.4.3,Planificación,Especialista de adquisiciones,40,"3.1.2-03,3.4.3-02",2026-11-30,2027-01-22,311,,0.00000000,0.00000000,0.00000000,lineal,
3.4.3-10,Obtener la no objeción del BID a los términos de referencia y a la lista corta de la actualización del Plan Maestro y la capacitación (productos 2.2.1 y 2.2.2),3.4.3,Planificación,BID,5,3.4.3-09,2027-01-25,2027-01-29,311,,0.00000000,0.00000000,0.00000000,lineal,
3.4.3-11,Invitar a las firmas de la lista corta y recibir las propuestas para la actualización del Plan Maestro y la capacitación (productos 2.2.1 y 2.2.2),3.4.3,Ejecución,Especialista de adquisiciones,30,3.4.3-10,2027-02-01,2027-03-12,311,,0.00000000,0.00000000,0.00000000,lineal,
3.4.3-12,Evaluar las propuestas y negociar el contrato para la actualización del Plan Maestro y la capacitación (productos 2.2.1 y 2.2.2),3.4.3,Ejecución,Especialista de adquisiciones,35,3.4.3-11,2027-03-15,2027-04-30,311,,0.00000000,0.00000000,0.00000000,lineal,
3.4.3-13,Obtener la no objeción del BID al informe de evaluación y al contrato negociado de la actualización del Plan Maestro y la capacitación (productos 2.2.1 y 2.2.2),3.4.3,Ejecución,BID,7,3.4.3-12,2027-05-03,2027-05-11,311,,0.00000000,0.00000000,0.00000000,lineal,
3.4.3-14,Firmar el contrato de consultoría para la actualización del Plan Maestro y la capacitación (productos 2.2.1 y 2.2.2),3.4.3,Ejecución,CEPA,10,3.4.3-13,2027-05-12,2027-05-25,311,,0.00000000,0.00000000,0.00000000,lineal,
3.4.3-15,Preparar los términos de referencia y la solicitud de expresiones de interés para la estrategia y capacitación BIM (productos 2.3.1 y 2.3.2),3.4.3,Planificación,Especialista de adquisiciones,20,"3.1.2-03,3.4.3-02",2026-11-30,2026-12-25,481,,0.00000000,0.00000000,0.00000000,lineal,
3.4.3-16,Publicar la solicitud de expresiones de interés y conformar la lista corta internacional para la estrategia y capacitación BIM (productos 2.3.1 y 2.3.2),3.4.3,Ejecución,Especialista de adquisiciones,20,"3.4.3-15,3.2.3-06",2026-12-28,2027-01-22,481,,0.00000000,0.00000000,0.00000000,lineal,
3.4.3-17,Invitar a las firmas de la lista corta y recibir las propuestas para la estrategia y capacitación BIM (productos 2.3.1 y 2.3.2),3.4.3,Ejecución,Especialista de adquisiciones,30,3.4.3-51,2027-02-01,2027-03-12,481,,0.00000000,0.00000000,0.00000000,lineal,
3.4.3-18,Evaluar las propuestas y negociar el contrato para la estrategia y capacitación BIM (productos 2.3.1 y 2.3.2),3.4.3,Ejecución,Especialista de adquisiciones,35,3.4.3-17,2027-03-15,2027-04-30,481,,0.00000000,0.00000000,0.00000000,lineal,
3.4.3-19,Adjudicar y firmar el contrato de consultoría para la estrategia y capacitación BIM (productos 2.3.1 y 2.3.2),3.4.3,Ejecución,CEPA,10,3.4.3-52,2027-05-12,2027-05-25,481,,0.00000000,0.00000000,0.00000000,lineal,
3.4.3-20,"Preparar los términos de referencia, la solicitud de expresiones de interés y la lista corta para el estudio de conectividad terrestre (producto 2.4)",3.4.3,Planificación,Especialista de adquisiciones,40,"3.1.2-03,3.4.3-02",2026-11-30,2027-01-22,417,,0.00000000,0.00000000,0.00000000,lineal,
3.4.3-21,Obtener la no objeción del BID a los términos de referencia y a la lista corta del estudio de conectividad terrestre (producto 2.4),3.4.3,Planificación,BID,5,3.4.3-20,2027-01-25,2027-01-29,417,,0.00000000,0.00000000,0.00000000,lineal,
3.4.3-22,Invitar a las firmas de la lista corta y recibir las propuestas para el estudio de conectividad terrestre (producto 2.4),3.4.3,Ejecución,Especialista de adquisiciones,30,3.4.3-21,2027-02-01,2027-03-12,417,,0.00000000,0.00000000,0.00000000,lineal,
3.4.3-23,Evaluar las propuestas y negociar el contrato para el estudio de conectividad terrestre (producto 2.4),3.4.3,Ejecución,Especialista de adquisiciones,35,3.4.3-22,2027-03-15,2027-04-30,417,,0.00000000,0.00000000,0.00000000,lineal,
3.4.3-24,Obtener la no objeción del BID al informe de evaluación y al contrato negociado del estudio de conectividad terrestre (producto 2.4),3.4.3,Ejecución,BID,7,3.4.3-23,2027-05-03,2027-05-11,417,,0.00000000,0.00000000,0.00000000,lineal,
3.4.3-25,Firmar el contrato de consultoría para el estudio de conectividad terrestre (producto 2.4),3.4.3,Ejecución,CEPA,10,3.4.3-24,2027-05-12,2027-05-25,417,,0.00000000,0.00000000,0.00000000,lineal,
3.4.3-26,Preparar los términos de referencia y la solicitud de expresiones de interés para el estudio de diversificación de destinos (producto 2.5),3.4.3,Planificación,Especialista de adquisiciones,20,"3.1.2-03,3.4.3-02",2026-11-30,2026-12-25,528,,0.00000000,0.00000000,0.00000000,lineal,
3.4.3-27,Publicar la solicitud de expresiones de interés y conformar la lista corta nacional para el estudio de diversificación de destinos (producto 2.5),3.4.3,Ejecución,Especialista de adquisiciones,20,"3.4.3-26,3.2.3-06",2026-12-28,2027-01-22,528,,0.00000000,0.00000000,0.00000000,lineal,
3.4.3-28,Invitar a las firmas de la lista corta y recibir las propuestas para el estudio de diversificación de destinos (producto 2.5),3.4.3,Ejecución,Especialista de adquisiciones,20,3.4.3-53,2027-02-01,2027-02-26,528,,0.00000000,0.00000000,0.00000000,lineal,
3.4.3-29,Evaluar las propuestas y negociar el contrato para el estudio de diversificación de destinos (producto 2.5),3.4.3,Ejecución,Especialista de adquisiciones,20,3.4.3-28,2027-03-01,2027-03-26,528,,0.00000000,0.00000000,0.00000000,lineal,
3.4.3-30,Adjudicar y firmar el contrato de consultoría para el estudio de diversificación de destinos (producto 2.5),3.4.3,Ejecución,CEPA,10,3.4.3-54,2027-04-07,2027-04-20,528,,0.00000000,0.00000000,0.00000000,lineal,
3.4.3-31,Preparar los términos de referencia y la solicitud de expresiones de interés para la auditoría y capacitación para la certificación EDGE (productos 2.6.1 y 2.6.2),3.4.3,Planificación,Especialista de adquisiciones,20,"3.1.2-03,3.4.3-02",2026-11-30,2026-12-25,96,,0.00000000,0.00000000,0.00000000,lineal,
3.4.3-32,Publicar la solicitud de expresiones de interés y conformar la lista corta nacional para la auditoría y capacitación para la certificación EDGE (productos 2.6.1 y 2.6.2),3.4.3,Ejecución,Especialista de adquisiciones,20,"3.4.3-31,3.2.3-06",2026-12-28,2027-01-22,96,,0.00000000,0.00000000,0.00000000,lineal,
3.4.3-33,Invitar a las firmas de la lista corta y recibir las propuestas para la auditoría y capacitación para la certificación EDGE (productos 2.6.1 y 2.6.2),3.4.3,Ejecución,Especialista de adquisiciones,20,3.4.3-55,2027-02-01,2027-02-26,96,,0.00000000,0.00000000,0.00000000,lineal,
3.4.3-34,Evaluar las propuestas y negociar el contrato para la auditoría y capacitación para la certificación EDGE (productos 2.6.1 y 2.6.2),3.4.3,Ejecución,Especialista de adquisiciones,20,3.4.3-33,2027-03-01,2027-03-26,96,,0.00000000,0.00000000,0.00000000,lineal,
3.4.3-35,Adjudicar y firmar el contrato de consultoría para la auditoría y capacitación para la certificación EDGE (productos 2.6.1 y 2.6.2),3.4.3,Ejecución,CEPA,10,3.4.3-56,2027-04-07,2027-04-20,96,,0.00000000,0.00000000,0.00000000,lineal,
3.4.3-36,Preparar los términos de referencia y la solicitud de expresiones de interés para el estudio de separación de flujos (producto 2.7),3.4.3,Planificación,Especialista de adquisiciones,20,"3.1.2-03,3.4.3-02",2026-11-30,2026-12-25,564,,0.00000000,0.00000000,0.00000000,lineal,
3.4.3-37,Publicar la solicitud de expresiones de interés y conformar la lista corta nacional para el estudio de separación de flujos (producto 2.7),3.4.3,Ejecución,Especialista de adquisiciones,20,"3.4.3-36,3.2.3-06",2026-12-28,2027-01-22,564,,0.00000000,0.00000000,0.00000000,lineal,
3.4.3-38,Invitar a las firmas de la lista corta y recibir las propuestas para el estudio de separación de flujos (producto 2.7),3.4.3,Ejecución,Especialista de adquisiciones,20,3.4.3-57,2027-02-01,2027-02-26,564,,0.00000000,0.00000000,0.00000000,lineal,
3.4.3-39,Evaluar las propuestas y negociar el contrato para el estudio de separación de flujos (producto 2.7),3.4.3,Ejecución,Especialista de adquisiciones,20,3.4.3-38,2027-03-01,2027-03-26,564,,0.00000000,0.00000000,0.00000000,lineal,
3.4.3-40,Adjudicar y firmar el contrato de consultoría para el estudio de separación de flujos (producto 2.7),3.4.3,Ejecución,CEPA,10,3.4.3-58,2027-04-07,2027-04-20,564,,0.00000000,0.00000000,0.00000000,lineal,
3.4.3-41,Preparar los términos de referencia y la solicitud de expresiones de interés para el estudio de movilidad interna (producto 2.8),3.4.3,Planificación,Especialista de adquisiciones,20,"3.1.2-03,3.4.3-02",2026-11-30,2026-12-25,549,,0.00000000,0.00000000,0.00000000,lineal,
3.4.3-42,Publicar la solicitud de expresiones de interés y conformar la lista corta nacional para el estudio de movilidad interna (producto 2.8),3.4.3,Ejecución,Especialista de adquisiciones,20,"3.4.3-41,3.2.3-06",2026-12-28,2027-01-22,549,,0.00000000,0.00000000,0.00000000,lineal,
3.4.3-43,Invitar a las firmas de la lista corta y recibir las propuestas para el estudio de movilidad interna (producto 2.8),3.4.3,Ejecución,Especialista de adquisiciones,20,3.4.3-59,2027-02-01,2027-02-26,549,,0.00000000,0.00000000,0.00000000,lineal,
3.4.3-44,Evaluar las propuestas y negociar el contrato para el estudio de movilidad interna (producto 2.8),3.4.3,Ejecución,Especialista de adquisiciones,20,3.4.3-43,2027-03-01,2027-03-26,549,,0.00000000,0.00000000,0.00000000,lineal,
3.4.3-45,Adjudicar y firmar el contrato de consultoría para el estudio de movilidad interna (producto 2.8),3.4.3,Ejecución,CEPA,10,3.4.3-60,2027-04-07,2027-04-20,549,,0.00000000,0.00000000,0.00000000,lineal,
3.4.3-46,Preparar los términos de referencia y la solicitud de expresiones de interés para el programa de igualdad e inclusión (producto 2.9),3.4.3,Planificación,Especialista de adquisiciones,20,"3.1.2-03,3.4.3-02",2026-11-30,2026-12-25,49,,0.00000000,0.00000000,0.00000000,lineal,
3.4.3-47,Publicar la solicitud de expresiones de interés y conformar la lista corta nacional para el programa de igualdad e inclusión (producto 2.9),3.4.3,Ejecución,Especialista de adquisiciones,20,"3.4.3-46,3.2.3-06",2026-12-28,2027-01-22,49,,0.00000000,0.00000000,0.00000000,lineal,
3.4.3-48,Invitar a las firmas de la lista corta y recibir las propuestas para el programa de igualdad e inclusión (producto 2.9),3.4.3,Ejecución,Especialista de adquisiciones,20,3.4.3-61,2027-02-01,2027-02-26,49,,0.00000000,0.00000000,0.00000000,lineal,
3.4.3-49,Evaluar las propuestas y negociar el contrato para el programa de igualdad e inclusión (producto 2.9),3.4.3,Ejecución,Especialista de adquisiciones,20,3.4.3-48,2027-03-01,2027-03-26,49,,0.00000000,0.00000000,0.00000000,lineal,
3.4.3-50,Adjudicar y firmar el contrato de consultoría para el programa de igualdad e inclusión (producto 2.9),3.4.3,Ejecución,CEPA,10,3.4.3-62,2027-04-07,2027-04-20,49,,0.00000000,0.00000000,0.00000000,lineal,
3.4.3-51,Obtener la no objeción del BID a los términos de referencia y a la lista corta para la estrategia y capacitación BIM (productos 2.3.1 y 2.3.2),3.4.3,Planificación,BID,5,3.4.3-16,2027-01-25,2027-01-29,481,,0.00000000,0.00000000,0.00000000,lineal,
3.4.3-52,Obtener la no objeción del BID al informe de evaluación y al contrato negociado para la estrategia y capacitación BIM (productos 2.3.1 y 2.3.2),3.4.3,Ejecución,BID,7,3.4.3-18,2027-05-03,2027-05-11,481,,0.00000000,0.00000000,0.00000000,lineal,
3.4.3-53,Obtener la no objeción del BID a los términos de referencia y a la lista corta para el estudio de diversificación de destinos (producto 2.5),3.4.3,Planificación,BID,5,3.4.3-27,2027-01-25,2027-01-29,528,,0.00000000,0.00000000,0.00000000,lineal,
3.4.3-54,Obtener la no objeción del BID al informe de evaluación y al contrato negociado para el estudio de diversificación de destinos (producto 2.5),3.4.3,Ejecución,BID,7,3.4.3-29,2027-03-29,2027-04-06,528,,0.00000000,0.00000000,0.00000000,lineal,
3.4.3-55,Obtener la no objeción del BID a los términos de referencia y a la lista corta para la auditoría y capacitación para la certificación EDGE (productos 2.6.1 y 2.6.2),3.4.3,Planificación,BID,5,3.4.3-32,2027-01-25,2027-01-29,96,,0.00000000,0.00000000,0.00000000,lineal,
3.4.3-56,Obtener la no objeción del BID al informe de evaluación y al contrato negociado para la auditoría y capacitación para la certificación EDGE (productos 2.6.1 y 2.6.2),3.4.3,Ejecución,BID,7,3.4.3-34,2027-03-29,2027-04-06,96,,0.00000000,0.00000000,0.00000000,lineal,
3.4.3-57,Obtener la no objeción del BID a los términos de referencia y a la lista corta para el estudio de separación de flujos (producto 2.7),3.4.3,Planificación,BID,5,3.4.3-37,2027-01-25,2027-01-29,564,,0.00000000,0.00000000,0.00000000,lineal,
3.4.3-58,Obtener la no objeción del BID al informe de evaluación y al contrato negociado para el estudio de separación de flujos (producto 2.7),3.4.3,Ejecución,BID,7,3.4.3-39,2027-03-29,2027-04-06,564,,0.00000000,0.00000000,0.00000000,lineal,
3.4.3-59,Obtener la no objeción del BID a los términos de referencia y a la lista corta para el estudio de movilidad interna (producto 2.8),3.4.3,Planificación,BID,5,3.4.3-42,2027-01-25,2027-01-29,549,,0.00000000,0.00000000,0.00000000,lineal,
3.4.3-60,Obtener la no objeción del BID al informe de evaluación y al contrato negociado para el estudio de movilidad interna (producto 2.8),3.4.3,Ejecución,BID,7,3.4.3-44,2027-03-29,2027-04-06,549,,0.00000000,0.00000000,0.00000000,lineal,
3.4.3-61,Obtener la no objeción del BID a los términos de referencia y a la lista corta para el programa de igualdad e inclusión (producto 2.9),3.4.3,Planificación,BID,5,3.4.3-47,2027-01-25,2027-01-29,49,,0.00000000,0.00000000,0.00000000,lineal,
3.4.3-62,Obtener la no objeción del BID al informe de evaluación y al contrato negociado para el programa de igualdad e inclusión (producto 2.9),3.4.3,Ejecución,BID,7,3.4.3-49,2027-03-29,2027-04-06,49,,0.00000000,0.00000000,0.00000000,lineal,
3.4.4-01,Preparar los términos de referencia y la convocatoria de los siete consultores clave de la UEP,3.4.4,Inicio,CEPA,18,,2026-02-02,2026-02-25,10,,0.00000000,0.00000000,0.00000000,lineal,
3.4.4-02,Obtener la no objeción del BID a los términos de referencia de los siete consultores clave,3.4.4,Inicio,BID,5,3.4.4-01,2026-02-26,2026-03-04,10,,0.00000000,0.00000000,0.00000000,lineal,
3.4.4-03,"Recibir los currículos, evaluar y seleccionar a los siete consultores clave",3.4.4,Inicio,CEPA,20,3.4.4-02,2026-03-05,2026-04-01,10,,0.00000000,0.00000000,0.00000000,lineal,
3.4.4-04,Obtener la no objeción del BID a la selección de los siete consultores clave,3.4.4,Inicio,BID,5,3.4.4-03,2026-04-02,2026-04-08,10,,0.00000000,0.00000000,0.00000000,lineal,
3.4.4-05,Firmar los contratos de los siete consultores clave de la UEP,3.4.4,Inicio,CEPA,5,3.4.4-04,2026-04-09,2026-04-15,10,,0.00000000,0.00000000,0.00000000,lineal,
3.4.4-06,Preparar los términos de referencia y la convocatoria del técnico de apoyo administrativo,3.4.4,Planificación,Especialista de adquisiciones,10,"3.1.1-02,3.2.3-04",2026-07-15,2026-07-28,914,,0.00000000,0.00000000,0.00000000,lineal,
3.4.4-07,Obtener la no objeción del BID a los términos de referencia del técnico de apoyo,3.4.4,Planificación,BID,5,3.4.4-06,2026-07-29,2026-08-04,914,,0.00000000,0.00000000,0.00000000,lineal,
3.4.4-08,"Recibir los currículos, evaluar y seleccionar al técnico de apoyo",3.4.4,Ejecución,Especialista de adquisiciones,20,3.4.4-07,2026-08-05,2026-09-01,914,,0.00000000,0.00000000,0.00000000,lineal,
3.4.4-09,Obtener la no objeción del BID a la selección del técnico de apoyo,3.4.4,Ejecución,BID,5,3.4.4-08,2026-09-02,2026-09-08,914,,0.00000000,0.00000000,0.00000000,lineal,
3.4.4-10,Firmar el contrato del técnico de apoyo administrativo,3.4.4,Ejecución,CEPA,5,3.4.4-09,2026-09-09,2026-09-15,914,,0.00000000,0.00000000,0.00000000,lineal,
3.4.4-11,Preparar los términos de referencia y la lista corta de la auditoría externa año 1,3.4.4,Planificación,Especialista de adquisiciones,5,"3.1.2-03,3.2.3-02",2027-04-01,2027-04-07,536,,0.00000000,0.00000000,0.00000000,lineal,
3.4.4-12,Obtener la no objeción del BID a los términos de referencia de la auditoría año 1,3.4.4,Planificación,BID,5,3.4.4-11,2027-04-08,2027-04-14,536,,0.00000000,0.00000000,0.00000000,lineal,
3.4.4-13,"Invitar a las firmas, recibir y evaluar las propuestas de la auditoría año 1 por menor costo",3.4.4,Ejecución,Especialista de adquisiciones,5,3.4.4-12,2027-04-15,2027-04-21,536,,0.00000000,0.00000000,0.00000000,lineal,
3.4.4-14,Obtener la no objeción del BID a la recomendación de adjudicación de la auditoría año 1,3.4.4,Ejecución,BID,5,3.4.4-13,2027-04-22,2027-04-28,536,,0.00000000,0.00000000,0.00000000,lineal,
3.4.4-15,Firmar el contrato de la auditoría externa año 1,3.4.4,Ejecución,CEPA,5,3.4.4-14,2027-04-29,2027-05-05,536,,0.00000000,0.00000000,0.00000000,lineal,
3.4.4-16,Preparar los términos de referencia y la lista corta de la auditoría externa año 2,3.4.4,Planificación,Especialista de adquisiciones,30,"3.1.2-03,3.2.3-04",2027-09-13,2027-10-22,426,,0.00000000,0.00000000,0.00000000,lineal,
3.4.4-17,Obtener la no objeción del BID a los términos de referencia de la auditoría año 2,3.4.4,Planificación,BID,5,3.4.4-16,2027-10-25,2027-10-29,426,,0.00000000,0.00000000,0.00000000,lineal,
3.4.4-18,"Invitar a las firmas, recibir y evaluar las propuestas de la auditoría año 2 por menor costo",3.4.4,Ejecución,Especialista de adquisiciones,25,3.4.4-17,2027-11-01,2027-12-03,426,,0.00000000,0.00000000,0.00000000,lineal,
3.4.4-19,Obtener la no objeción del BID a la recomendación de adjudicación de la auditoría año 2,3.4.4,Ejecución,BID,5,3.4.4-18,2027-12-06,2027-12-10,426,,0.00000000,0.00000000,0.00000000,lineal,
3.4.4-20,Firmar el contrato de la auditoría externa año 2,3.4.4,Ejecución,CEPA,8,3.4.4-19,2027-12-13,2027-12-22,426,,0.00000000,0.00000000,0.00000000,lineal,
3.4.4-21,Preparar los términos de referencia y la lista corta de la auditoría externa año 3,3.4.4,Planificación,Especialista de adquisiciones,30,"3.1.2-03,3.2.3-04",2028-09-12,2028-10-23,220,,0.00000000,0.00000000,0.00000000,lineal,
3.4.4-22,Obtener la no objeción del BID a los términos de referencia de la auditoría año 3,3.4.4,Planificación,BID,5,3.4.4-21,2028-10-24,2028-10-30,220,,0.00000000,0.00000000,0.00000000,lineal,
3.4.4-23,"Invitar a las firmas, recibir y evaluar las propuestas de la auditoría año 3 por menor costo",3.4.4,Ejecución,Especialista de adquisiciones,25,3.4.4-22,2028-10-31,2028-12-04,220,,0.00000000,0.00000000,0.00000000,lineal,
3.4.4-24,Obtener la no objeción del BID a la recomendación de adjudicación de la auditoría año 3,3.4.4,Ejecución,BID,5,3.4.4-23,2028-12-05,2028-12-11,220,,0.00000000,0.00000000,0.00000000,lineal,
3.4.4-25,Firmar el contrato de la auditoría externa año 3,3.4.4,Ejecución,CEPA,8,3.4.4-24,2028-12-12,2028-12-21,220,,0.00000000,0.00000000,0.00000000,lineal,
3.4.4-26,Preparar los términos de referencia y la lista corta de la auditoría externa año 4,3.4.4,Planificación,Especialista de adquisiciones,30,"3.1.2-03,3.2.3-04",2029-04-16,2029-05-25,101,,0.00000000,0.00000000,0.00000000,lineal,
3.4.4-27,Obtener la no objeción del BID a los términos de referencia de la auditoría año 4,3.4.4,Planificación,BID,5,3.4.4-26,2029-05-28,2029-06-01,101,,0.00000000,0.00000000,0.00000000,lineal,
3.4.4-28,"Invitar a las firmas, recibir y evaluar las propuestas de la auditoría año 4 por menor costo",3.4.4,Ejecución,Especialista de adquisiciones,25,3.4.4-27,2029-06-04,2029-07-06,101,,0.00000000,0.00000000,0.00000000,lineal,
3.4.4-29,Obtener la no objeción del BID a la recomendación de adjudicación de la auditoría año 4,3.4.4,Ejecución,BID,5,3.4.4-28,2029-07-09,2029-07-13,101,,0.00000000,0.00000000,0.00000000,lineal,
3.4.4-30,Firmar el contrato de la auditoría externa año 4,3.4.4,Ejecución,CEPA,8,3.4.4-29,2029-07-16,2029-07-25,101,,0.00000000,0.00000000,0.00000000,lineal,
3.4.4-31,Preparar los términos de referencia y la solicitud de expresiones de interés de la evaluación de medio término,3.4.4,Planificación,Especialista de adquisiciones,15,"3.1.2-03,3.2.3-04,3.5.3-01",2027-06-18,2027-07-08,302,,0.00000000,0.00000000,0.00000000,lineal,
3.4.4-32,Publicar la solicitud de expresiones de interés y conformar la lista corta nacional de la evaluación de medio término,3.4.4,Ejecución,Especialista de adquisiciones,15,"3.4.4-31,3.2.3-06",2027-07-09,2027-07-29,302,,0.00000000,0.00000000,0.00000000,lineal,
3.4.4-33,Invitar a las firmas de la lista corta y recibir las propuestas de la evaluación de medio término,3.4.4,Ejecución,Especialista de adquisiciones,17,3.4.4-41,2027-08-06,2027-08-30,302,,0.00000000,0.00000000,0.00000000,lineal,
3.4.4-34,Evaluar las propuestas y negociar el contrato de la evaluación de medio término,3.4.4,Ejecución,Especialista de adquisiciones,28,3.4.4-33,2027-08-31,2027-10-07,302,,0.00000000,0.00000000,0.00000000,lineal,
3.4.4-35,Adjudicar y firmar el contrato de la evaluación de medio término,3.4.4,Ejecución,CEPA,10,3.4.4-42,2027-10-19,2027-11-01,302,,0.00000000,0.00000000,0.00000000,lineal,
3.4.4-36,Preparar los términos de referencia y la solicitud de expresiones de interés de la evaluación final,3.4.4,Planificación,Especialista de adquisiciones,15,"3.1.2-03,3.2.3-04,1.2.4-06:FI-60",2028-12-25,2029-01-12,0,si,0.00000000,0.00000000,0.00000000,lineal,
3.4.4-37,Publicar la solicitud de expresiones de interés y conformar la lista corta nacional de la evaluación final,3.4.4,Ejecución,Especialista de adquisiciones,15,"3.4.4-36,3.2.3-06",2029-01-15,2029-02-02,0,si,0.00000000,0.00000000,0.00000000,lineal,
3.4.4-38,Invitar a las firmas de la lista corta y recibir las propuestas de la evaluación final,3.4.4,Ejecución,Especialista de adquisiciones,17,3.4.4-43,2029-02-12,2029-03-06,0,si,0.00000000,0.00000000,0.00000000,lineal,
3.4.4-39,Evaluar las propuestas y negociar el contrato de la evaluación final,3.4.4,Ejecución,Especialista de adquisiciones,29,3.4.4-38,2029-03-07,2029-04-16,0,si,0.00000000,0.00000000,0.00000000,lineal,
3.4.4-40,Adjudicar y firmar el contrato de la evaluación final,3.4.4,Ejecución,CEPA,10,3.4.4-44,2029-04-26,2029-05-09,0,si,0.00000000,0.00000000,0.00000000,lineal,
3.4.4-41,Obtener la no objeción del BID a los términos de referencia y a la lista corta de la evaluación de medio término,3.4.4,Planificación,BID,5,3.4.4-32,2027-07-30,2027-08-05,302,,0.00000000,0.00000000,0.00000000,lineal,
3.4.4-42,Obtener la no objeción del BID al informe de evaluación y al contrato negociado de la evaluación de medio término,3.4.4,Ejecución,BID,7,3.4.4-34,2027-10-08,2027-10-18,302,,0.00000000,0.00000000,0.00000000,lineal,
3.4.4-43,Obtener la no objeción del BID a los términos de referencia y a la lista corta de la evaluación final,3.4.4,Planificación,BID,5,3.4.4-37,2029-02-05,2029-02-09,0,si,0.00000000,0.00000000,0.00000000,lineal,
3.4.4-44,Obtener la no objeción del BID al informe de evaluación y al contrato negociado de la evaluación final,3.4.4,Ejecución,BID,7,3.4.4-39,2029-04-17,2029-04-25,0,si,0.00000000,0.00000000,0.00000000,lineal,
3.4.4-45,"Preparar los términos de referencia y la convocatoria de los consultores individuales del lote 1 de la plantilla ampliada de la UEP (diez puestos, agosto de 2026)",3.4.4,Planificación,Especialista de adquisiciones,10,"3.1.1-02,3.2.3-04",2026-08-14,2026-08-27,892,,0.00000000,0.00000000,0.00000000,lineal,
3.4.4-46,"Obtener la no objeción del BID a los términos de referencia del lote 1 de la plantilla ampliada de la UEP (diez puestos, agosto de 2026)",3.4.4,Planificación,BID,5,3.4.4-45,2026-08-28,2026-09-03,892,,0.00000000,0.00000000,0.00000000,lineal,
3.4.4-47,"Recibir los currículos, comparar las calificaciones y seleccionar a los consultores del lote 1 de la plantilla ampliada de la UEP (diez puestos, agosto de 2026)",3.4.4,Ejecución,Especialista de adquisiciones,20,3.4.4-46,2026-09-04,2026-10-01,892,,0.00000000,0.00000000,0.00000000,lineal,
3.4.4-48,"Obtener la no objeción del BID a la selección de los consultores del lote 1 de la plantilla ampliada de la UEP (diez puestos, agosto de 2026)",3.4.4,Ejecución,BID,5,3.4.4-47,2026-10-02,2026-10-08,892,,0.00000000,0.00000000,0.00000000,lineal,
3.4.4-49,"Firmar los contratos de los consultores individuales del lote 1 de la plantilla ampliada de la UEP (diez puestos, agosto de 2026)",3.4.4,Ejecución,CEPA,5,3.4.4-48,2026-10-09,2026-10-15,892,,0.00000000,0.00000000,0.00000000,lineal,
3.4.4-50,"Preparar los términos de referencia y la convocatoria de los consultores individuales del lote 2 de la plantilla ampliada de la UEP (pavimentos aeroportuarios, septiembre de 2026)",3.4.4,Planificación,Especialista de adquisiciones,10,"3.1.1-02,3.2.3-04",2026-09-04,2026-09-17,877,,0.00000000,0.00000000,0.00000000,lineal,
3.4.4-51,"Obtener la no objeción del BID a los términos de referencia del lote 2 de la plantilla ampliada de la UEP (pavimentos aeroportuarios, septiembre de 2026)",3.4.4,Planificación,BID,5,3.4.4-50,2026-09-18,2026-09-24,877,,0.00000000,0.00000000,0.00000000,lineal,
3.4.4-52,"Recibir los currículos, comparar las calificaciones y seleccionar a los consultores del lote 2 de la plantilla ampliada de la UEP (pavimentos aeroportuarios, septiembre de 2026)",3.4.4,Ejecución,Especialista de adquisiciones,20,3.4.4-51,2026-09-25,2026-10-22,877,,0.00000000,0.00000000,0.00000000,lineal,
3.4.4-53,"Obtener la no objeción del BID a la selección de los consultores del lote 2 de la plantilla ampliada de la UEP (pavimentos aeroportuarios, septiembre de 2026)",3.4.4,Ejecución,BID,5,3.4.4-52,2026-10-23,2026-10-29,877,,0.00000000,0.00000000,0.00000000,lineal,
3.4.4-54,"Firmar los contratos de los consultores individuales del lote 2 de la plantilla ampliada de la UEP (pavimentos aeroportuarios, septiembre de 2026)",3.4.4,Ejecución,CEPA,5,3.4.4-53,2026-10-30,2026-11-05,877,,0.00000000,0.00000000,0.00000000,lineal,
3.4.4-55,"Preparar los términos de referencia y la convocatoria de los consultores individuales del lote 3 de la plantilla ampliada de la UEP (analista social, septiembre de 2026)",3.4.4,Planificación,Especialista de adquisiciones,10,"3.1.1-02,3.2.3-04",2026-09-16,2026-09-29,869,,0.00000000,0.00000000,0.00000000,lineal,
3.4.4-56,"Obtener la no objeción del BID a los términos de referencia del lote 3 de la plantilla ampliada de la UEP (analista social, septiembre de 2026)",3.4.4,Planificación,BID,5,3.4.4-55,2026-09-30,2026-10-06,869,,0.00000000,0.00000000,0.00000000,lineal,
3.4.4-57,"Recibir los currículos, comparar las calificaciones y seleccionar a los consultores del lote 3 de la plantilla ampliada de la UEP (analista social, septiembre de 2026)",3.4.4,Ejecución,Especialista de adquisiciones,20,3.4.4-56,2026-10-07,2026-11-03,869,,0.00000000,0.00000000,0.00000000,lineal,
3.4.4-58,"Obtener la no objeción del BID a la selección de los consultores del lote 3 de la plantilla ampliada de la UEP (analista social, septiembre de 2026)",3.4.4,Ejecución,BID,5,3.4.4-57,2026-11-04,2026-11-10,869,,0.00000000,0.00000000,0.00000000,lineal,
3.4.4-59,"Firmar los contratos de los consultores individuales del lote 3 de la plantilla ampliada de la UEP (analista social, septiembre de 2026)",3.4.4,Ejecución,CEPA,5,3.4.4-58,2026-11-11,2026-11-17,869,,0.00000000,0.00000000,0.00000000,lineal,
3.4.4-60,"Preparar los términos de referencia y la convocatoria de los consultores individuales del lote 4 de la plantilla ampliada de la UEP (tres puestos, enero de 2027)",3.4.4,Planificación,Especialista de adquisiciones,10,"3.1.1-02,3.2.3-04",2027-01-14,2027-01-27,783,,0.00000000,0.00000000,0.00000000,lineal,
3.4.4-61,"Obtener la no objeción del BID a los términos de referencia del lote 4 de la plantilla ampliada de la UEP (tres puestos, enero de 2027)",3.4.4,Planificación,BID,5,3.4.4-60,2027-01-28,2027-02-03,783,,0.00000000,0.00000000,0.00000000,lineal,
3.4.4-62,"Recibir los currículos, comparar las calificaciones y seleccionar a los consultores del lote 4 de la plantilla ampliada de la UEP (tres puestos, enero de 2027)",3.4.4,Ejecución,Especialista de adquisiciones,20,3.4.4-61,2027-02-04,2027-03-03,783,,0.00000000,0.00000000,0.00000000,lineal,
3.4.4-63,"Obtener la no objeción del BID a la selección de los consultores del lote 4 de la plantilla ampliada de la UEP (tres puestos, enero de 2027)",3.4.4,Ejecución,BID,5,3.4.4-62,2027-03-04,2027-03-10,783,,0.00000000,0.00000000,0.00000000,lineal,
3.4.4-64,"Firmar los contratos de los consultores individuales del lote 4 de la plantilla ampliada de la UEP (tres puestos, enero de 2027)",3.4.4,Ejecución,CEPA,5,3.4.4-63,2027-03-11,2027-03-17,783,,0.00000000,0.00000000,0.00000000,lineal,
3.4.4-65,"Preparar los términos de referencia y la convocatoria de los consultores individuales del lote 5 de la plantilla ampliada de la UEP (cinco puestos, marzo de 2027)",3.4.4,Planificación,Especialista de adquisiciones,10,"3.1.1-02,3.2.3-04",2027-03-23,2027-04-05,735,,0.00000000,0.00000000,0.00000000,lineal,
3.4.4-66,"Obtener la no objeción del BID a los términos de referencia del lote 5 de la plantilla ampliada de la UEP (cinco puestos, marzo de 2027)",3.4.4,Planificación,BID,5,3.4.4-65,2027-04-06,2027-04-12,735,,0.00000000,0.00000000,0.00000000,lineal,
3.4.4-67,"Recibir los currículos, comparar las calificaciones y seleccionar a los consultores del lote 5 de la plantilla ampliada de la UEP (cinco puestos, marzo de 2027)",3.4.4,Ejecución,Especialista de adquisiciones,20,3.4.4-66,2027-04-13,2027-05-10,735,,0.00000000,0.00000000,0.00000000,lineal,
3.4.4-68,"Obtener la no objeción del BID a la selección de los consultores del lote 5 de la plantilla ampliada de la UEP (cinco puestos, marzo de 2027)",3.4.4,Ejecución,BID,5,3.4.4-67,2027-05-11,2027-05-17,735,,0.00000000,0.00000000,0.00000000,lineal,
3.4.4-69,"Firmar los contratos de los consultores individuales del lote 5 de la plantilla ampliada de la UEP (cinco puestos, marzo de 2027)",3.4.4,Ejecución,CEPA,5,3.4.4-68,2027-05-18,2027-05-24,735,,0.00000000,0.00000000,0.00000000,lineal,
3.4.4-70,"Preparar los términos de referencia y la convocatoria de los consultores individuales del lote 6 de la plantilla ampliada de la UEP (Administrador 4 de Proyectos, agosto de 2027)",3.4.4,Planificación,Especialista de adquisiciones,10,"3.1.1-02,3.2.3-04",2027-08-30,2027-09-10,621,,0.00000000,0.00000000,0.00000000,lineal,
3.4.4-71,"Obtener la no objeción del BID a los términos de referencia del lote 6 de la plantilla ampliada de la UEP (Administrador 4 de Proyectos, agosto de 2027)",3.4.4,Planificación,BID,5,3.4.4-70,2027-09-13,2027-09-17,621,,0.00000000,0.00000000,0.00000000,lineal,
3.4.4-72,"Recibir los currículos, comparar las calificaciones y seleccionar a los consultores del lote 6 de la plantilla ampliada de la UEP (Administrador 4 de Proyectos, agosto de 2027)",3.4.4,Ejecución,Especialista de adquisiciones,20,3.4.4-71,2027-09-20,2027-10-15,621,,0.00000000,0.00000000,0.00000000,lineal,
3.4.4-73,"Obtener la no objeción del BID a la selección de los consultores del lote 6 de la plantilla ampliada de la UEP (Administrador 4 de Proyectos, agosto de 2027)",3.4.4,Ejecución,BID,5,3.4.4-72,2027-10-18,2027-10-22,621,,0.00000000,0.00000000,0.00000000,lineal,
3.4.4-74,"Firmar los contratos de los consultores individuales del lote 6 de la plantilla ampliada de la UEP (Administrador 4 de Proyectos, agosto de 2027)",3.4.4,Ejecución,CEPA,5,3.4.4-73,2027-10-25,2027-10-29,621,,0.00000000,0.00000000,0.00000000,lineal,
3.5.1-01,Solicitar el primer desembolso por Anticipo de Fondos con las condiciones previas cumplidas,3.5.1,Ejecución,Especialista financiero,10,"3.1.1-05,3.1.2-03,3.1.3-03,3.1.4-03,3.3.1-04",2026-07-20,2026-07-31,666,,0.00000000,0.00000000,0.00000000,lineal,
3.5.1-02,Elaborar y presentar al BID el informe semestral de progreso del semestre S2 de 2026 con la solicitud de desembolso,3.5.1,Monitoreo y control,Especialista de planificación y monitoreo,19,3.5.1-01,2027-01-01,2027-01-27,698,,0.00000000,0.00000000,0.00000000,lineal,
3.5.1-03,Elaborar y presentar al BID el informe semestral de progreso del semestre S1 de 2027 con la solicitud de desembolso,3.5.1,Monitoreo y control,Especialista de planificación y monitoreo,19,3.5.1-02,2027-07-01,2027-07-27,588,,0.00000000,0.00000000,0.00000000,lineal,
3.5.1-04,Elaborar y presentar al BID el informe semestral de progreso del semestre S2 de 2027 con la solicitud de desembolso,3.5.1,Monitoreo y control,Especialista de planificación y monitoreo,19,3.5.1-03,2028-01-03,2028-01-27,475,,0.00000000,0.00000000,0.00000000,lineal,
3.5.1-05,Elaborar y presentar al BID el informe semestral de progreso del semestre S1 de 2028 con la solicitud de desembolso,3.5.1,Monitoreo y control,Especialista de planificación y monitoreo,19,3.5.1-04,2028-07-03,2028-07-27,364,,0.00000000,0.00000000,0.00000000,lineal,
3.5.1-06,Elaborar y presentar al BID el informe semestral de progreso del semestre S2 de 2028 con la solicitud de desembolso,3.5.1,Monitoreo y control,Especialista de planificación y monitoreo,19,3.5.1-05,2029-01-01,2029-01-25,253,,0.00000000,0.00000000,0.00000000,lineal,
3.5.1-07,Elaborar y presentar al BID el informe semestral de progreso del semestre S1 de 2029 con la solicitud de desembolso,3.5.1,Monitoreo y control,Especialista de planificación y monitoreo,19,3.5.1-06,2029-07-02,2029-07-26,142,,0.00000000,0.00000000,0.00000000,lineal,
3.5.1-08,Justificar los gastos y tramitar las solicitudes de desembolso del año 2027,3.5.1,Monitoreo y control,Especialista financiero,280,3.5.1-01,2027-01-01,2028-01-27,557,,0.00000000,0.00000000,0.00000000,lineal,
3.5.1-09,Justificar los gastos y tramitar las solicitudes de desembolso del año 2028,3.5.1,Monitoreo y control,Especialista financiero,279,3.5.1-01,2028-01-03,2029-01-25,297,,0.00000000,0.00000000,0.00000000,lineal,
3.5.1-10,Justificar los gastos y tramitar las solicitudes de desembolso del año 2029,3.5.1,Monitoreo y control,Especialista financiero,180,3.5.1-01,2029-01-01,2029-09-07,136,,0.00000000,0.00000000,0.00000000,lineal,
3.5.2-01,Preparar los estados financieros del programa del ejercicio 2026,3.5.2,Monitoreo y control,Especialista financiero,20,3.1.4-03,2027-01-01,2027-01-28,605,,0.00000000,0.00000000,0.00000000,lineal,
3.5.2-02,Auditar los estados financieros del programa del ejercicio 2026,3.5.2,Monitoreo y control,Auditor externo,30,"3.4.4-15,3.5.2-01",2027-05-06,2027-06-16,536,,0.05930032,0.05488375,0.00441657,lineal,U4 100%
3.5.2-03,Presentar al BID los estados financieros auditados del ejercicio 2026,3.5.2,Monitoreo y control,Especialista financiero,5,3.5.2-02,2027-06-17,2027-06-23,536,,0.00000000,0.00000000,0.00000000,lineal,
3.5.2-04,Preparar los estados financieros del programa del ejercicio 2027,3.5.2,Monitoreo y control,Especialista financiero,20,3.5.2-03,2028-01-03,2028-01-28,399,,0.00000000,0.00000000,0.00000000,lineal,
3.5.2-05,Auditar los estados financieros del programa del ejercicio 2027,3.5.2,Monitoreo y control,Auditor externo,30,"3.4.4-20,3.5.2-04",2028-01-31,2028-03-10,399,,0.05930032,0.05488375,0.00441657,lineal,U4 100%
3.5.2-06,Presentar al BID los estados financieros auditados del ejercicio 2027,3.5.2,Monitoreo y control,Especialista financiero,5,3.5.2-05,2028-03-13,2028-03-17,399,,0.00000000,0.00000000,0.00000000,lineal,
3.5.2-07,Preparar los estados financieros del programa del ejercicio 2028,3.5.2,Monitoreo y control,Especialista financiero,20,3.5.2-06,2029-01-01,2029-01-26,194,,0.00000000,0.00000000,0.00000000,lineal,
3.5.2-08,Auditar los estados financieros del programa del ejercicio 2028,3.5.2,Monitoreo y control,Auditor externo,30,"3.4.4-25,3.5.2-07",2029-01-29,2029-03-09,194,,0.05930032,0.05488375,0.00441657,lineal,U4 100%
3.5.2-09,Presentar al BID los estados financieros auditados del ejercicio 2028,3.5.2,Monitoreo y control,Especialista financiero,5,3.5.2-08,2029-03-12,2029-03-16,194,,0.00000000,0.00000000,0.00000000,lineal,
3.5.3-01,"Proyectar con los contratos de obra firmados la fecha del hito de medio término (50% del tiempo de ejecución planificado o 50% de los recursos desembolsados, lo que ocurra primero)",3.5.3,Planificación,Especialista de planificación y monitoreo,5,"3.4.1-18,3.4.2-18",2027-06-11,2027-06-17,302,,0.00000000,0.00000000,0.00000000,lineal,
3.5.3-02,Ejecutar la evaluación de medio término: avance físico y financiero y medición temprana de resultados,3.5.3,Monitoreo y control,Firma consultora,85,3.4.4-35,2027-11-02,2028-02-28,302,,0.05451960,0.05161516,0.00290444,lineal,U5 100%
3.5.3-03,Revisar el informe de evaluación de medio término y presentarlo al BID,3.5.3,Monitoreo y control,Especialista de planificación y monitoreo,10,3.5.3-02,2028-02-29,2028-03-13,302,,0.00000000,0.00000000,0.00000000,lineal,
3.5.3-04,Ejecutar la evaluación final de efectividad sin atribución empírica,3.5.3,Cierre,Firma consultora,126,"3.4.4-40,3.5.3-03",2029-05-10,2029-11-01,0,si,0.10903920,0.10323031,0.00580888,lineal,U5 100%
3.5.3-05,Revisar el informe de evaluación final y presentarlo al BID,3.5.3,Cierre,Especialista de planificación y monitoreo,10,"3.5.3-04,1.7.4-05,1.7.4-06,1.7.4-07,1.7.4-08",2029-11-02,2029-11-15,0,si,0.00000000,0.00000000,0.00000000,lineal,
3.5.4-01,"Liquidar los contratos de obra, supervisión y consultoría",3.5.4,Cierre,Especialista de adquisiciones,20,"2.1-06,2.2.1-06,2.2.2-04,2.3.1-06,2.3.2-04,2.4-06,2.5-06,2.6.1-06,2.6.2-04,2.7-06,2.8-06,2.9-06,1.7.4-05,1.7.4-06,1.7.4-07,1.7.4-08",2029-08-13,2029-09-07,49,,0.00000000,0.00000000,0.00000000,lineal,
3.5.4-02,Justificar los anticipos pendientes y tramitar el último desembolso,3.5.4,Cierre,Especialista financiero,20,"3.5.4-01,3.5.3-05",2029-11-16,2029-12-13,0,si,0.00000000,0.00000000,0.00000000,lineal,
3.5.4-03,Auditar y presentar al BID los estados financieros finales del programa,3.5.4,Cierre,Auditor externo,42,"3.4.4-30,3.5.4-02,3.5.2-09",2029-12-14,2030-02-11,0,si,0.05930032,0.05488375,0.00441657,lineal,U4 100%
3.5.4-04,"Preparar y entregar al BID los insumos de la UEP para el informe de terminación del programa, con las lecciones aprendidas",3.5.4,Cierre,Coordinador del Programa,25,"3.3.4-03,3.5.3-05,3.5.4-03,3.5.1-07",2030-02-12,2030-03-18,0,si,0.00000000,0.00000000,0.00000000,lineal,
3.5.4-05,Devolver los saldos no justificados al BID y cerrar la cuenta especial,3.5.4,Cierre,Especialista financiero,15,3.5.4-03,2030-02-12,2030-03-04,10,,0.00000000,0.00000000,0.00000000,lineal,
3.5.4-06,Cerrar el expediente administrativo del programa y archivar los documentos,3.5.4,Cierre,Técnico de apoyo administrativo,10,"3.5.4-04,3.5.4-05,1.7.1-02,1.7.1-04,1.7.1-05,1.7.1-06,1.7.2-02,1.7.2-04,1.7.2-05,1.7.2-06,1.7.3-05,1.7.3-06,3.2.2-08,3.2.3-05,3.3.3-03,3.4.4-10,3.5.1-08,3.5.1-09,3.5.1-10,3.4.4-49,3.4.4-54,3.4.4-59,3.4.4-64,3.4.4-69,3.4.4-74",2030-03-19,2030-04-01,0,si,0.00000000,0.00000000,0.00000000,lineal,
