code,name,activities,dur,deps,start,finish,float,critical,budget,base,contingency,profile
1.1.1,Diseños de la terminal revisados y aprobados,8,338,"1.2.5,1.7.1,3.1.1,3.4.1",2026-05-18,2027-09-01,41,,0.00000000,0.00000000,0.00000000,lineal
1.1.2,Diseños de plataformas y calle Foxtrot revisados y aprobados,6,127,"1.1.1,3.1.1",2026-05-18,2026-11-10,82,,0.00000000,0.00000000,0.00000000,lineal
1.1.3,Diseños del estacionamiento y del sistema solar revisados y aprobados,5,71,3.1.1,2026-05-18,2026-08-24,161,,0.00000000,0.00000000,0.00000000,lineal
1.1.4,Diseños del SSEI revisados y aprobados,5,70,"1.1.3,3.1.1",2026-07-01,2026-10-06,161,,0.00000000,0.00000000,0.00000000,lineal
1.2.1,Estructura y envolvente de la terminal construidas,5,278,"1.1.1,1.7.1,1.7.3,3.3.1,3.3.2,3.4.1,3.4.2",2027-05-27,2028-06-19,32,,31.94271127,29.70443885,2.23827242,lineal
1.2.2,"Salas de espera, circulación y áreas de apoyo terminadas",3,162,1.2.1,2028-03-10,2028-10-23,32,,9.39119741,8.86907337,0.52212405,lineal
1.2.3,"Instalaciones eléctricas, hidráulicas, climatización y contra incendio recibidas",4,192,"1.2.1,1.2.2",2028-02-25,2028-11-20,32,,21.75980065,20.55001721,1.20978345,lineal
1.2.4,"Puentes de abordaje, mobiliario y equipos instalados",6,402,"1.1.1,1.2.1,1.2.2,1.2.3,1.2.5,1.3.1",2027-09-02,2029-03-16,0,si,20.21841461,18.59031956,1.62809505,lineal
1.2.5,"Accesibilidad universal, movilidad del cuidado y criterios de sostenibilidad incorporados",6,598,"1.1.1,1.2.1,1.2.2,1.2.3",2026-08-13,2028-11-27,41,,0.28833442,0.27230384,0.01603058,lineal
1.3.1,Plataforma de posiciones de contacto construida,6,319,"1.1.2,1.7.2,1.7.3,3.3.1,3.3.2,3.4.1,3.4.2",2027-08-11,2028-10-30,0,si,7.31173837,6.96951060,0.34222778,lineal
1.3.2,Plataforma de posiciones remotas construida,5,135,"1.3.1,1.6.2",2028-02-25,2028-08-31,180,,5.02397534,4.79628989,0.22768545,lineal
1.3.3,"Señalización, luces y torres de iluminación de plataforma instaladas",5,129,"1.3.1,1.3.2",2028-07-20,2029-01-16,118,,1.11409137,0.96393507,0.15015630,lineal
1.4.1,Pavimento y hombros de la calle Foxtrot construidos,3,104,1.3.1,2028-04-05,2028-08-28,189,,3.15222701,2.99086762,0.16135939,lineal
1.4.2,Señalización y balizamiento de la calle Foxtrot instalados,4,54,1.4.1,2028-08-29,2028-11-10,189,,0.28086577,0.24301092,0.03785485,lineal
1.5.1,Edificio de estacionamiento construido,6,296,"1.1.3,1.7.1,1.7.3,3.3.1,3.4.1,3.4.2",2027-02-16,2028-04-04,221,,33.41115749,30.39240815,3.01874934,lineal
1.5.2,"Sistemas de acceso, tráfico y áreas de alquiler instalados",3,77,1.5.1,2027-11-24,2028-03-09,336,,3.96150189,3.60357412,0.35792777,lineal
1.5.3,Sistema de generación solar instalado,4,277,"1.5.1,1.5.2",2027-05-11,2028-05-31,303,,2.99279704,2.82052932,0.17226772,lineal
1.6.1,Edificio del SSEI y vías de acceso construidos,5,137,"1.1.4,1.7.2,1.7.3,3.3.1,3.3.2,3.4.1,3.4.2",2027-06-18,2027-12-27,180,,5.33891421,4.62155578,0.71735842,lineal
1.6.2,SSEI en funcionamiento en la nueva ubicación,6,130,"1.6.1,1.7.4",2027-08-27,2028-02-24,180,,0.28099548,0.24323978,0.03775571,lineal
1.7.1,Supervisión de la terminal y del estacionamiento ejecutada,6,647,"1.7.4,3.4.2",2027-02-04,2029-07-27,32,,5.05768520,4.59401995,0.46366524,lineal
1.7.2,"Supervisión de plataformas, calle Foxtrot y SSEI ejecutada",6,489,"1.7.4,3.4.2",2027-06-11,2029-04-25,4,,0.91760535,0.83348353,0.08412183,lineal
1.7.3,PGAS de construcción implementado,6,594,"1.7.4,3.3.1,3.4.1",2027-01-28,2029-05-08,0,si,0.00000000,0.00000000,0.00000000,lineal
1.7.4,Planos de obra ejecutada y actas de recepción aprobados,8,398,"1.2.4,1.3.3,1.4.2,1.5.3,1.6.1",2027-12-28,2029-07-05,75,,0.00000000,0.00000000,0.00000000,lineal
2.1,Plan estratégico del sistema aeronáutico aprobado,6,120,3.4.3,2027-05-26,2027-11-09,315,,0.87303904,0.70167687,0.17136217,lineal
2.2.1,Plan Maestro Aeroportuario actualizado y aprobado,6,260,"2.1,2.4,3.4.3",2027-05-26,2028-05-23,311,,1.50530745,1.28933231,0.21597514,lineal
2.2.2,"Funcionarios capacitados en planificación, gestión y operación",4,115,2.2.1,2028-03-02,2028-08-09,311,,0.03390964,0.02963942,0.00427022,lineal
2.3.1,Estrategia BIM aprobada,6,88,3.4.3,2027-05-26,2027-09-24,481,,0.20530316,0.18152980,0.02377336,lineal
2.3.2,Personal de ingeniería capacitado en BIM,4,65,2.3.1,2027-09-16,2027-12-15,481,,0.08798707,0.07779849,0.01018858,lineal
2.4,Estudio de conectividad terrestre entregado,6,130,3.4.3,2027-05-26,2027-11-23,417,,0.25708148,0.22262639,0.03445509,lineal
2.5,Estudio de diversificación de destinos entregado,6,124,3.4.3,2027-04-21,2027-10-11,528,,0.19102090,0.17733275,0.01368815,lineal
2.6.1,Auditoría para la certificación EDGE realizada,6,556,"1.1.1,1.1.3,1.2.4,1.5.3,3.4.3",2027-04-21,2029-06-06,96,,0.02022695,0.01812848,0.00209847,lineal
2.6.2,Personal capacitado en certificación EDGE,4,496,2.6.1,2027-07-09,2029-06-01,99,,0.00356946,0.00319914,0.00037032,lineal
2.7,Estudio de separación de flujos entregado,6,88,"1.1.1,3.4.3",2027-04-21,2027-08-20,564,,0.18495806,0.16002225,0.02493581,lineal
2.8,Estudio de movilidad interna entregado,6,103,"1.1.3,3.4.3",2027-04-21,2027-09-10,549,,0.18507587,0.16011931,0.02495656,lineal
2.9,Programa de igualdad e inclusión ejecutado,6,603,3.4.3,2027-04-21,2029-08-10,49,,0.03874613,0.03340625,0.00533988,lineal
3.1.1,Unidad ejecutora conformada y en funciones,6,1023,3.4.4,2026-04-16,2030-03-18,10,,3.85975926,3.70370163,0.15605764,escalonado por puestos
3.1.2,Reglamento operativo vigente,3,30,"3.1.1,3.3.1",2026-06-01,2026-07-10,78,,0.00000000,0.00000000,0.00000000,lineal
3.1.3,Convenio de transferencia de recursos vigente,3,35,3.1.1,2026-05-18,2026-07-03,676,,0.00000000,0.00000000,0.00000000,lineal
3.1.4,Cuenta especial aperturada,3,25,3.1.1,2026-04-30,2026-06-03,698,,0.00000000,0.00000000,0.00000000,lineal
3.2.1,Plan de ejecución plurianual aprobado,3,35,"3.1.1,3.2.3",2026-04-23,2026-06-10,883,,0.00000000,0.00000000,0.00000000,lineal
3.2.2,Planes operativos anuales aprobados,8,808,3.2.1,2026-11-02,2029-12-05,73,,0.00000000,0.00000000,0.00000000,lineal
3.2.3,Plan de adquisiciones aprobado,6,908,,2026-02-02,2029-07-25,50,,0.00000000,0.00000000,0.00000000,lineal
3.3.1,Sistema de gestión ambiental y social y plan de acción vigentes,6,169,"1.1.1,1.1.2,1.1.3,1.1.4,3.1.1,3.1.2",2026-05-11,2026-12-31,78,,0.00000000,0.00000000,0.00000000,lineal
3.3.2,Protocolo de seguridad operacional aprobado por la AAC,4,87,"1.1.2,3.3.1",2026-11-11,2027-03-11,86,,0.00000000,0.00000000,0.00000000,lineal
3.3.3,Mecanismo de quejas y reclamos en operación,3,695,3.3.1,2026-07-20,2029-03-16,261,,0.00000000,0.00000000,0.00000000,lineal
3.3.4,Informes de cumplimiento socioambiental presentados,3,789,"1.5.1,1.7.4,3.3.1",2026-07-20,2029-07-26,142,,0.00000000,0.00000000,0.00000000,lineal
3.4.1,Contratos de obras del Componente I firmados,24,283,"1.1.1,1.1.2,1.1.3,1.1.4,3.1.1,3.1.2,3.2.3,3.3.1",2026-06-23,2027-07-22,0,si,0.00000000,0.00000000,0.00000000,lineal
3.4.2,Contrato de supervisión firmado,24,321,"3.1.2,3.2.3,3.3.1",2026-05-06,2027-07-28,4,,0.00000000,0.00000000,0.00000000,lineal
3.4.3,Contratos de consultorías del Componente II firmados,62,147,"3.1.2,3.2.3",2026-11-02,2027-05-25,49,,0.00000000,0.00000000,0.00000000,lineal
3.4.4,"Contratos de la unidad ejecutora, evaluación y auditoría firmados",74,908,"1.2.4,3.1.1,3.1.2,3.2.3,3.5.3",2026-02-02,2029-07-25,0,si,0.00000000,0.00000000,0.00000000,lineal
3.5.1,Desembolsos justificados e informes financieros presentados,10,820,"3.1.1,3.1.2,3.1.3,3.1.4,3.3.1",2026-07-20,2029-09-07,136,,0.00000000,0.00000000,0.00000000,lineal
3.5.2,Auditorías externas emitidas,9,576,"3.1.4,3.4.4",2027-01-01,2029-03-16,194,,0.17790097,0.16465126,0.01324971,lineal
3.5.3,Evaluaciones de medio término y de cierre realizadas,5,635,"1.7.4,3.4.1,3.4.2,3.4.4",2027-06-11,2029-11-15,0,si,0.16355879,0.15484547,0.00871332,lineal
3.5.4,Informe de terminación y cierre administrativo del programa,6,166,"1.7.1,1.7.2,1.7.3,1.7.4,2.1,2.2.1,2.2.2,2.3.1,2.3.2,2.4,2.5,2.6.1,2.6.2,2.7,2.8,2.9,3.2.2,3.2.3,3.3.3,3.3.4,3.4.4,3.5.1,3.5.2,3.5.3",2029-08-13,2030-04-01,0,si,0.05930032,0.05488375,0.00441657,lineal
